Schedule from MS Project, 2019-06-03 to 2019-09-30, A marks actual dates.
Microsoft

## Calendars

- 标准: Mon-Fri 08:00-12:00, 13:00-17:00; Sat-Sun off.

## Resources

| Resource |
| --- |
| 高祥云 |
| 罗加云 |
| 杜振兴 |
| 陈子瑶 |
| 李龙 |
| JAVA团队 |
| 王晓旭 |

## Schedule

| ID | WBS | Task | Type | Duration | Start | Finish | Complete | Remaining | Total slack | Resources | Work | Actual work | 交付物 | 进度 | 交付时间 | Text5 |
| --- | --- | --- | --- | --- | --- | --- | --- | --- | --- | --- | --- | --- | --- | --- | --- | --- |
| 1 | 1 | **YJTXT_BI_V2.0R** |  | 85.88d | 2019-06-03 A | 2019-09-30 | 2% | 84.44d | 0d |  | 2304h | 32h |  |  |  |  |
| 2 | 1.1 | **总裁驾驶舱DEMO上线** |  | 8.88d | 2019-06-03 | 2019-06-13 |  |  | 0d |  | 224h |  |  |  |  |  |
| 3 | 1.1.1 | 用户需求/需求分析 | manual | 1d | 2019-06-03 | 2019-06-03 |  |  |  | 杜振兴; 高祥云 | 16h |  | 需求分析文档,bi详细设计,概要设计文档 | 100% | 2019年6月5日 |  |
| 4 | 1.1.2 | 方案设计/Demo展示 | manual | 1d | 2019-06-04 | 2019-06-04 |  |  |  | 杜振兴; 高祥云 | 16h |  |  | 100% |  |  |
| 5 | 1.1.3 | 功能开发 | manual | 1d | 2019-06-05 | 2019-06-05 |  |  |  | 杜振兴; 高祥云 | 16h |  |  | 100% |  |  |
| 6 | 1.1.4 | 功能测试 | manual | 6d | 2019-06-06 | 2019-06-13 |  |  |  | 杜振兴; 高祥云 | 96h |  | 测试用例 |  |  |  |
| 7 | 1.1.5 | 功能部署上线 | manual | 5d | 2019-06-07 | 2019-06-13 |  |  |  | 杜振兴; 高祥云 | 80h |  |  | 90% |  | 需求增加现金流和人力部分 |
| 8 | 1.2 | **基础经营指标分析** |  | 4.88d | 2019-06-10 A | 2019-06-14 | 40% | 2.92d | 0d |  | 80h | 32h |  |  |  |  |
| 9 | 1.2.1 | 用户需求/需求分析 | manual | 1d | 2019-06-10 A | 2019-06-10 A | 100% |  |  | 高祥云; 罗加云 | 16h | 16h | 需求分析文档,bi详细设计,概要设计文档 | 100% | 2019年6月10日 |  |
| 10 | 1.2.2 | 方案设计/Demo展示 | manual | 1d | 2019-06-11 A | 2019-06-11 A | 100% |  |  | 高祥云; 罗加云 | 16h | 16h |  | 100% |  |  |
| 11 | 1.2.3 | 功能开发 | manual | 1d | 2019-06-12 | 2019-06-12 |  |  |  | 高祥云; 罗加云 | 16h |  |  | 50% |  |  |
| 12 | 1.2.4 | 功能测试 | manual | 1d | 2019-06-13 | 2019-06-13 |  |  |  | 杜振兴; 高祥云 | 16h |  | 测试用例 |  |  |  |
| 13 | 1.2.5 | 功能部署上线 | manual | 1d | 2019-06-14 | 2019-06-14 |  |  |  | 杜振兴; 高祥云 | 16h |  |  |  |  |  |
| 14 | 1.3 | **损益表** |  | 7d | 2019-06-13 | 2019-06-21 |  |  |  |  | 112h |  |  |  |  |  |
| 15 | 1.3.1 | 用户需求/需求分析 | manual | 3d | 2019-06-13 | 2019-06-17 |  |  |  | 高祥云; 罗加云 | 48h |  | 需求分析文档，bi详细设计,概要设计文档 |  | 2019年6月12日 |  |
| 16 | 1.3.2 | 方案设计/Demo展示 | manual | 1d | 2019-06-18 | 2019-06-18 |  |  |  | 高祥云; 罗加云 | 16h |  |  |  |  |  |
| 17 | 1.3.3 | 功能开发 | manual | 1d | 2019-06-19 | 2019-06-19 |  |  |  | 高祥云; 罗加云 | 16h |  |  |  |  |  |
| 18 | 1.3.4 | 功能测试 | manual | 1d | 2019-06-20 | 2019-06-20 |  |  |  | 杜振兴; 高祥云 | 16h |  | 测试用例 |  |  |  |
| 19 | 1.3.5 | 功能部署上线 | manual | 1d | 2019-06-21 | 2019-06-21 |  |  |  | 杜振兴; 高祥云 | 16h |  | 概要设计文档 |  |  |  |
| 20 | 1.4 | **资产负债表** |  | 6.88d | 2019-06-20 | 2019-06-28 |  |  | 0d |  | 112h |  |  |  |  |  |
| 21 | 1.4.1 | 用户需求/需求分析 | manual | 3d | 2019-06-20 | 2019-06-24 |  |  |  | 高祥云; 罗加云 | 48h |  | 需求分析文档，bi详细设计,概要设计文档 |  | 2019年6月20日 |  |
| 22 | 1.4.2 | 方案设计/Demo展示 | manual | 1d | 2019-06-25 | 2019-06-25 |  |  |  | 高祥云; 罗加云 | 16h |  |  |  |  |  |
| 23 | 1.4.3 | 功能开发 | manual | 1d | 2019-06-26 | 2019-06-26 |  |  |  | 高祥云; 罗加云 | 16h |  |  |  |  |  |
| 24 | 1.4.4 | 功能测试 | manual | 1d | 2019-06-27 | 2019-06-27 |  |  |  | 杜振兴; 高祥云 | 16h |  | 测试用例 |  |  |  |
| 25 | 1.4.5 | 功能部署上线 | manual | 1d | 2019-06-28 | 2019-06-28 |  |  |  | 杜振兴; 高祥云 | 16h |  |  |  |  |  |

Notes:
- 7: 需求增加人力资源和现金流部分
- 11: 由于方案尚未彻底敲定，现按照中间版本进行开发

| ID | WBS | Task | Type | Duration | Start | Finish | Resources | Work | 交付物 | 交付时间 |
| --- | --- | --- | --- | --- | --- | --- | --- | --- | --- | --- |
| 26 | 1.5 | **现金流量表** |  | 7d | 2019-06-27 | 2019-07-05 |  | 112h |  |  |
| 27 | 1.5.1 | 用户需求/需求分析 | manual | 3d | 2019-06-27 | 2019-07-01 | 高祥云; 罗加云 | 48h | 需求分析文档，bi详细设计,概要设计文档 | 2019年6月27日 |
| 28 | 1.5.2 | 方案设计/Demo展示 | manual | 1d | 2019-07-02 | 2019-07-02 | 高祥云; 罗加云 | 16h |  |  |
| 29 | 1.5.3 | 功能开发 | manual | 1d | 2019-07-03 | 2019-07-03 | 高祥云; 罗加云 | 16h |  |  |
| 30 | 1.5.4 | 功能测试 | manual | 1d | 2019-07-04 | 2019-07-04 | 杜振兴; 高祥云 | 16h | 测试用例 |  |
| 31 | 1.5.5 | 功能部署上线 | manual | 1d | 2019-07-05 | 2019-07-05 | 杜振兴; 高祥云 | 16h | 概要设计文档 |  |
| 32 | 1.6 | **销售项目分析,业绩/回款报表** |  | 7d | 2019-07-04 | 2019-07-12 |  | 112h |  |  |
| 33 | 1.6.1 | 用户需求/需求分析 | manual | 3d | 2019-07-04 | 2019-07-08 | 高祥云; 罗加云 | 48h | 需求分析文档，bi详细设计 | 2019年7月4日 |
| 34 | 1.6.2 | 方案设计/Demo展示 | manual | 1d | 2019-07-09 | 2019-07-09 | 高祥云; 罗加云 | 16h |  |  |
| 35 | 1.6.3 | 功能开发 | manual | 1d | 2019-07-10 | 2019-07-10 | 高祥云; 罗加云 | 16h |  |  |
| 36 | 1.6.4 | 功能测试 | manual | 1d | 2019-07-11 | 2019-07-11 | 杜振兴; 高祥云 | 16h | 测试用例 |  |
| 37 | 1.6.5 | 功能部署上线 | manual | 1d | 2019-07-12 | 2019-07-12 | 杜振兴; 高祥云 | 16h | 概要设计文档 |  |
| 38 | 1.7 | **工程项目分析/售后400分析** |  | 7d | 2019-07-11 | 2019-07-19 |  | 224h |  |  |
| 39 | 1.7.1 | 用户需求/需求分析 | manual | 3d | 2019-07-11 | 2019-07-15 | 高祥云; 罗加云 | 48h | 需求分析文档，bi详细设计 |  |
| 40 | 1.7.2 | 方案设计/Demo展示 | manual | 1d | 2019-07-16 | 2019-07-16 | 高祥云; 罗加云 | 16h |  |  |
| 41 | 1.7.3 | 功能开发 | manual | 1d | 2019-07-17 | 2019-07-17 | 高祥云; 罗加云 | 16h |  |  |
| 42 | 1.7.4 | 功能测试 | manual | 1d | 2019-07-18 | 2019-07-18 | 杜振兴; 高祥云 | 16h | 测试用例 |  |
| 43 | 1.7.5 | **功能部署上线** |  | 1d | 2019-07-19 | 2019-07-19 | 杜振兴; 高祥云 | 128h | 概要设计文档 |  |
| 44 | 1.7.5.1 | **员工结构分析/员工流动分析/薪酬分析** |  | 7d | 2019-07-18 | 2019-07-26 |  | 112h |  |  |
| 45 | 1.7.5.1.1 | 用户需求/需求分析 | manual | 3d | 2019-07-18 | 2019-07-22 | 高祥云; 罗加云 | 48h | 需求分析文档，bi详细设计 | 2019年7月18日 |
| 46 | 1.7.5.1.2 | 方案设计/Demo展示 | manual | 1d | 2019-07-23 | 2019-07-23 | 高祥云; 罗加云 | 16h |  |  |
| 47 | 1.7.5.1.3 | 功能开发 | manual | 1d | 2019-07-24 | 2019-07-24 | 高祥云; 罗加云 | 16h |  |  |
| 48 | 1.7.5.1.4 | 功能测试 | manual | 1d | 2019-07-25 | 2019-07-25 | 杜振兴; 高祥云 | 16h |  |  |
| 49 | 1.7.5.1.5 | 功能部署上线 | manual | 1d | 2019-07-26 | 2019-07-26 | 杜振兴; 高祥云 | 16h |  |  |

| ID | WBS | Task | Type | Duration | Start | Finish | Total slack | Resources | Work | 交付物 | 交付时间 | 进度 |
| --- | --- | --- | --- | --- | --- | --- | --- | --- | --- | --- | --- | --- |
| 50 | 1.8 | **考勤分析/研发部门工作量统计/过程规范性得分统计** |  | 7d | 2019-07-25 | 2019-08-02 |  |  | 112h |  |  |  |
| 51 | 1.8.1 | 用户需求/需求分析 | manual | 3d | 2019-07-25 | 2019-07-29 |  | 高祥云; 罗加云 | 48h | 需求分析文档，bi详细设计 |  |  |
| 52 | 1.8.2 | 方案设计/Demo展示 | manual | 1d | 2019-07-30 | 2019-07-30 |  | 高祥云; 罗加云 | 16h |  |  |  |
| 53 | 1.8.3 | 功能开发 | manual | 1d | 2019-07-31 | 2019-07-31 |  | 高祥云; 罗加云 | 16h |  |  |  |
| 54 | 1.8.4 | 功能测试 | manual | 1d | 2019-08-01 | 2019-08-01 |  | 杜振兴; 高祥云 | 16h | 测试用例 |  |  |
| 55 | 1.8.5 | 功能部署上线 | manual | 1d | 2019-08-02 | 2019-08-02 |  | 杜振兴; 高祥云 | 16h | 概要设计文档 |  |  |
| 56 | 1.9 | **过程资产提交率统计/项目类采购分析** |  | 7d | 2019-08-01 | 2019-08-09 |  |  | 112h |  |  |  |
| 57 | 1.9.1 | 用户需求/需求分析 | manual | 3d | 2019-08-01 | 2019-08-05 |  | 高祥云; 罗加云 | 48h | 需求分析文档，bi详细设计 | 2019年8月5日 |  |
| 58 | 1.9.2 | 方案设计/Demo展示 | manual | 1d | 2019-08-06 | 2019-08-06 |  | 高祥云; 罗加云 | 16h |  |  |  |
| 59 | 1.9.3 | 功能开发 | manual | 1d | 2019-08-07 | 2019-08-07 |  | 高祥云; 罗加云 | 16h |  |  |  |
| 60 | 1.9.4 | 功能测试 | manual | 1d | 2019-08-08 | 2019-08-08 |  | 杜振兴; 高祥云 | 16h | 测试用例 |  |  |
| 61 | 1.9.5 | 功能部署上线 | manual | 1d | 2019-08-09 | 2019-08-09 |  | 杜振兴; 高祥云 | 16h | 概要设计文档 |  |  |
| 62 | 1.10 | **报表性能/页面交互调优** |  | 5.88d | 2019-08-12 | 2019-08-19 | 0d |  | 144h |  |  |  |
| 63 | 1.10.1 | 报表性能/页面交互调优 | manual | 6d | 2019-08-12 | 2019-08-19 |  | 杜振兴; 高祥云; 罗加云 | 144h |  |  |  |
| 64 | 1.11 | **甲方验收（第一轮）** |  | 9.88d | 2019-08-12 | 2019-08-24 | 0d |  | 264h |  |  |  |
| 65 | 1.11.1 | 甲方验收（第一轮） | manual | 11d | 2019-08-12 | 2019-08-24 |  | 杜振兴; 高祥云; 罗加云 | 264h |  |  |  |
| 66 | 1.12 | **甲方验收（第二轮）** |  | 5d | 2019-08-24 | 2019-08-31 | 0d |  | 168h |  |  |  |
| 67 | 1.12.1 | 甲方验收（第二轮） | manual | 7d | 2019-08-24 | 2019-08-31 |  | 杜振兴; 高祥云; 罗加云 | 168h |  |  |  |
| 68 | 1.13 | **远程支持客户需求** |  | 21d | 2019-09-01 | 2019-09-30 | 0d |  | 528h |  |  |  |
| 69 | 1.13.1 | 远程支持客户需求 | manual | 22d | 2019-09-01 | 2019-09-30 |  | 杜振兴; 高祥云; 罗加云 | 528h |  |  |  |
| 71 | 2 | **YJTXT_APP_V2.0R** |  | 14.88d | 2019-06-03 | 2019-06-21 | 0d |  | 360h |  |  |  |
| 72 | 2.1 | **客户接待** |  | 14.88d | 2019-06-03 | 2019-06-21 | 0d |  | 120h |  |  |  |
| 73 | 2.1.1 | 用户需求/需求分析 | manual | 2d | 2019-06-03 | 2019-06-04 |  | 陈子瑶 | 16h | 需求分析文档 | 2019年6月5日 | 100% |
| 74 | 2.1.2 | 方案设计 | manual | 1d | 2019-06-05 | 2019-06-05 |  | 陈子瑶 | 8h | 详细设计文档/概要设计文档/接口设计文档 |  | 100% |
| 75 | 2.1.3 | 功能开发 | manual | 9d | 2019-06-06 | 2019-06-18 |  | 陈子瑶 | 72h | 测试用例 |  | 65% |
| 76 | 2.1.4 | 单元测试 | manual | 1d | 2019-06-19 | 2019-06-19 |  | 陈子瑶 | 8h | 单元测试报告 |  |  |
| 77 | 2.1.5 | 集成测试 | manual | 1d | 2019-06-20 | 2019-06-20 |  | 陈子瑶 | 8h | 集成测试报告 |  |  |
| 78 | 2.1.6 | 功能部署上线 | manual | 1d | 2019-06-21 | 2019-06-21 |  | 陈子瑶 | 8h |  |  |  |

| ID | WBS | Task | Type | Duration | Start | Finish | Total slack | Resources | Work | 交付物 | 进度 | 交付时间 |
| --- | --- | --- | --- | --- | --- | --- | --- | --- | --- | --- | --- | --- |
| 79 | 2.2 | **考勤打卡** |  | 14.88d | 2019-06-03 | 2019-06-21 | 0d |  | 120h |  |  |  |
| 80 | 2.2.1 | 用户需求/需求分析 | manual | 2d | 2019-06-03 | 2019-06-04 |  | JAVA团队 | 16h | 需求分析文档 | 100% | 2019年6月5日 |
| 81 | 2.2.2 | 方案设计 | manual | 1d | 2019-06-05 | 2019-06-05 |  | JAVA团队 | 8h | 详细设计文档/概要设计文档/接口设计文档 | 100% |  |
| 82 | 2.2.3 | 功能开发 | manual | 9d | 2019-06-06 | 2019-06-18 |  | JAVA团队 | 72h | 测试用例 | 100% |  |
| 83 | 2.2.4 | 单元测试 | manual | 1d | 2019-06-19 | 2019-06-19 |  | JAVA团队 | 8h | 单元测试报告 | 20% |  |
| 84 | 2.2.5 | 集成测试 | manual | 1d | 2019-06-20 | 2019-06-20 |  | JAVA团队 | 8h | 集成测试报告 |  |  |
| 85 | 2.2.6 | 功能部署上线 | manual | 1d | 2019-06-21 | 2019-06-21 |  | JAVA团队 | 8h |  |  |  |
| 86 | 2.3 | **出差公出报备** |  | 14.88d | 2019-06-03 | 2019-06-21 | 0d |  | 120h |  |  |  |
| 87 | 2.3.1 | 用户需求/需求分析 | manual | 2d | 2019-06-03 | 2019-06-04 |  | 王晓旭 | 16h | 需求分析文档 | 100% | 2019年6月5日 |
| 88 | 2.3.2 | 方案设计 | manual | 1d | 2019-06-05 | 2019-06-05 |  | 王晓旭 | 8h | 详细设计文档/概要设计文档/接口设计文档 | 100% |  |
| 89 | 2.3.3 | 功能开发 | manual | 9d | 2019-06-06 | 2019-06-18 |  | 王晓旭 | 72h | 测试用例 | 65% |  |
| 90 | 2.3.4 | 单元测试 | manual | 1d | 2019-06-19 | 2019-06-19 |  | 王晓旭 | 8h | 单元测试报告 |  |  |
| 91 | 2.3.5 | 集成测试 | manual | 1d | 2019-06-20 | 2019-06-20 |  | 王晓旭 | 8h | 集成测试报告 |  |  |
| 92 | 2.3.6 | 功能部署上线 | manual | 1d | 2019-06-21 | 2019-06-21 |  | 王晓旭 | 8h |  |  |  |
| 93 | 2.4 | **假期管理** |  | 1d | 2019-06-03 | 2019-06-04 |  |  |  |  |  |  |
| 94 | 2.4.1 | 用户需求/需求分析 | manual | 1d | 2019-06-03 | 2019-06-04 |  |  |  | 需求分析文档 |  |  |
| 95 | 2.4.2 | 方案设计 | manual | 1d | 2019-06-03 | 2019-06-04 |  |  |  | 详细设计文档/概要设计文档/接口设计文档 |  |  |
| 96 | 2.4.3 | 功能开发 | manual | 1d | 2019-06-03 | 2019-06-04 |  |  |  | 测试用例 |  |  |
| 97 | 2.4.4 | 单元测试 | manual | 1d | 2019-06-03 | 2019-06-04 |  |  |  | 单元测试报告 |  |  |
| 98 | 2.4.5 | 集成测试 | manual | 1d | 2019-06-03 | 2019-06-04 |  |  |  | 集成测试报告 |  |  |
| 99 | 2.4.6 | 功能部署上线 | manual | 1d | 2019-06-03 | 2019-06-04 |  |  |  |  |  |  |
| 100 | 2.5 | **考勤明细** |  | 1d | 2019-06-03 | 2019-06-04 |  |  |  |  |  |  |
| 101 | 2.5.1 | 用户需求/需求分析 | manual | 1d | 2019-06-03 | 2019-06-04 |  |  |  |  |  |  |
| 102 | 2.5.2 | 方案设计 | manual | 1d | 2019-06-03 | 2019-06-04 |  |  |  |  |  |  |
| 103 | 2.5.3 | 功能开发 | manual | 1d | 2019-06-03 | 2019-06-04 |  |  |  |  |  |  |
| 104 | 2.5.4 | 单元测试 | manual | 1d | 2019-06-03 | 2019-06-04 |  |  |  |  |  |  |
| 105 | 2.5.5 | 集成测试 | manual | 1d | 2019-06-03 | 2019-06-04 |  |  |  |  |  |  |
| 106 | 2.5.6 | 功能部署上线 | manual | 1d | 2019-06-03 | 2019-06-04 |  |  |  |  |  |  |

| ID | WBS | Task | Type | Duration | Start | Finish |
| --- | --- | --- | --- | --- | --- | --- |
| 107 | 2.6 | **待办列表** |  | 1d | 2019-06-03 | 2019-06-04 |
| 108 | 2.6.1 | 用户需求/需求分析 | manual | 1d | 2019-06-03 | 2019-06-04 |
| 109 | 2.6.2 | 方案设计 | manual | 1d | 2019-06-03 | 2019-06-04 |
| 110 | 2.6.3 | 功能开发 | manual | 1d | 2019-06-03 | 2019-06-04 |
| 111 | 2.6.4 | 单元测试 | manual | 1d | 2019-06-03 | 2019-06-04 |
| 112 | 2.6.5 | 集成测试 | manual | 1d | 2019-06-03 | 2019-06-04 |
| 113 | 2.6.6 | 功能部署上线 | manual | 1d | 2019-06-03 | 2019-06-04 |
| 114 | 2.7 | **日报管理** |  | 1d | 2019-06-03 | 2019-06-04 |
| 115 | 2.7.1 | 用户需求/需求分析 | manual | 1d | 2019-06-03 | 2019-06-04 |
| 116 | 2.7.2 | 方案设计 | manual | 1d | 2019-06-03 | 2019-06-04 |
| 117 | 2.7.3 | 功能开发 | manual | 1d | 2019-06-03 | 2019-06-04 |
| 118 | 2.7.4 | 单元测试 | manual | 1d | 2019-06-03 | 2019-06-04 |
| 119 | 2.7.5 | 集成测试 | manual | 1d | 2019-06-03 | 2019-06-04 |
| 120 | 2.7.6 | 功能部署上线 | manual | 1d | 2019-06-03 | 2019-06-04 |
| 121 | 2.8 | **置换功能** |  | 1d | 2019-06-03 | 2019-06-04 |
| 122 | 2.8.1 | 用户需求/需求分析 | manual | 1d | 2019-06-03 | 2019-06-04 |
| 123 | 2.8.2 | 方案设计 | manual | 1d | 2019-06-03 | 2019-06-04 |
| 124 | 2.8.3 | 功能开发 | manual | 1d | 2019-06-03 | 2019-06-04 |
| 125 | 2.8.4 | 单元测试 | manual | 1d | 2019-06-03 | 2019-06-04 |
| 126 | 2.8.5 | 集成测试 | manual | 1d | 2019-06-03 | 2019-06-04 |
| 127 | 2.8.6 | 功能部署上线 | manual | 1d | 2019-06-03 | 2019-06-04 |
| 128 | 2.9 | **甲方验收（第一轮）** |  | 1d | 2019-06-03 | 2019-06-04 |
| 129 | 2.9.1 | 甲方验收（第一轮） | manual | 1d | 2019-06-03 | 2019-06-04 |
| 130 | 2.10 | **甲方验收（第二轮）** |  | 1d | 2019-06-03 | 2019-06-04 |
| 131 | 2.10.1 | 甲方验收（第二轮） | manual | 1d | 2019-06-03 | 2019-06-04 |
