Schedule from MS Project, 2019-11-13 to 2020-05-08.
Microsoft

## Calendars

- 标准: Mon-Fri 08:00-12:00, 13:00-17:00; Sat-Sun off. Exceptions (off unless hours are given): 2019-11-18 to 2019-12-11 08:00-12:00, 13:00-17:00 (周六, recurring).

## Resources

| Resource |
| --- |
| 高祥云 |
| 罗加云 |
| 杜振兴 |
| 陈子瑶 |
| 李龙 |
| JAVA团队 |
| 王晓旭 |
| 秦建锐 |

## Schedule

| ID | WBS | Task | Type | Duration | Start | Finish | Constraint | Resources | Work | 进度 | 交付物 |
| --- | --- | --- | --- | --- | --- | --- | --- | --- | --- | --- | --- |
| 1 | 1 | **项目规化阶段** |  | 10d | 2019-11-13 | 2019-11-25 |  |  | 112h |  |  |
| 2 | 1.1 | **需求调研** |  | 7d | 2019-11-14 | 2019-11-22 |  |  | 112h |  |  |
| 3 | 1.1.1 | 工程项目（12） | manual | 2d | 2019-11-14 | 2019-11-15 |  | 王晓旭 | 16h | 90% |  |
| 4 | 1.1.2 | 验收项目（12） | manual | 4d | 2019-11-18 | 2019-11-21 |  | 王晓旭 | 32h | 10% |  |
| 5 | 1.1.3 | 催款项目（10） | manual | 4d | 2019-11-18 | 2019-11-21 |  | 王晓旭 | 32h | 90% |  |
| 6 | 1.1.4 | 客户关系维护（8） | manual | 2d | 2019-11-21 | 2019-11-22 |  | 王晓旭 | 16h | 90% |  |
| 7 | 1.1.5 | 商机拓展（8） | manual | 2d | 2019-11-21 | 2019-11-22 |  | 陈子瑶 | 16h | 75% |  |
| 8 | 2 | **项目开发阶段** |  | 120d | 2019-11-25 | 2020-05-06 |  |  | 4536h |  |  |
| 9 | 2.1 | **工程项目（12）** |  | 60d | 2019-11-22 | 2020-02-09 |  |  | 1624h |  | 概要设计，详细设计，测试用例，测试报告，接口文档 |
| 10 | 2.1.1 | **工程费用增补V1.1** |  | 9d | 2019-11-22 | 2019-12-02 |  |  | 128h | 100% |  |
| 11 | 2.1.1.1 | 办公网YJT_APP端API封装 | manual | 6d | 2019-11-22 | 2019-11-28 | start no earlier than 2019-11-22 | 陈子瑶 | 48h |  |  |
| 12 | 2.1.1.2 | 移动端action开发+页面开发 | manual | 6d | 2019-11-22 | 2019-11-28 | start no earlier than 2019-11-22 | 王晓旭 | 48h |  |  |
| 13 | 2.1.1.3 | 单元测试及相关问题修改 | manual | 2d | 2019-11-29 | 2019-11-30 | start no earlier than 2019-11-29 | 陈子瑶; 王晓旭 | 32h |  |  |
| 14 | 2.1.1.4 | 上线 | milestone, manual | 0d | 2019-12-02 | 2019-12-02 | start no earlier than 2019-12-02 | 陈子瑶 |  |  |  |
| 15 | 2.1.2 | **工程结项审批V1.1** |  | 9d | 2019-11-22 | 2019-12-02 |  |  | 128h | 100% |  |
| 16 | 2.1.2.1 | 办公网YJT_APP端API封装 | manual | 6d | 2019-11-22 | 2019-11-28 | start no earlier than 2019-11-22 | 陈子瑶 | 48h |  |  |
| 17 | 2.1.2.2 | 移动端action开发+页面开发 | manual | 6d | 2019-11-22 | 2019-11-28 | start no earlier than 2019-11-22 | 王晓旭 | 48h |  |  |
| 18 | 2.1.2.3 | 单元测试及相关问题修改 | manual | 2d | 2019-11-29 | 2019-11-30 | start no earlier than 2019-11-29 | 陈子瑶; 王晓旭 | 32h |  |  |
| 19 | 2.1.2.4 | 上线 | milestone, manual | 0d | 2019-12-02 | 2019-12-02 | start no earlier than 2019-12-02 | 陈子瑶 |  |  |  |
| 20 | 2.1.3 | **工程里程碑承诺时间变更审批** |  | 9d | 2019-11-22 | 2019-12-02 |  |  | 128h | 100% |  |
| 21 | 2.1.3.1 | 办公网YJT_APP端API封装 | manual | 6d | 2019-11-22 | 2019-11-28 | start no earlier than 2019-11-22 | 陈子瑶 | 48h |  |  |
| 22 | 2.1.3.2 | 移动端action开发+页面开发 | manual | 6d | 2019-11-22 | 2019-11-28 | start no earlier than 2019-11-22 | 王晓旭 | 48h |  |  |
| 23 | 2.1.3.3 | 单元测试及相关问题修改 | manual | 2d | 2019-11-29 | 2019-11-30 | start no earlier than 2019-11-29 | 陈子瑶; 王晓旭 | 32h |  |  |
| 24 | 2.1.3.4 | 上线 | milestone, manual | 0d | 2019-12-02 | 2019-12-02 | start no earlier than 2019-12-02 | 陈子瑶 |  |  |  |

| ID | WBS | Task | Type | Duration | Start | Finish | Constraint | Resources | Work | 进度 | 交付物 |
| --- | --- | --- | --- | --- | --- | --- | --- | --- | --- | --- | --- |
| 25 | 2.1.4 | **工程里程碑负责人变更审批** |  | 9d | 2019-11-22 | 2019-12-02 |  |  | 128h | 100% |  |
| 26 | 2.1.4.1 | 办公网YJT_APP端API封装 | manual | 6d | 2019-11-22 | 2019-11-28 | start no earlier than 2019-11-22 | 陈子瑶 | 48h |  |  |
| 27 | 2.1.4.2 | 移动端action开发+页面开发 | manual | 6d | 2019-11-22 | 2019-11-28 | start no earlier than 2019-11-22 | 王晓旭 | 48h |  |  |
| 28 | 2.1.4.3 | 单元测试及相关问题修改 | manual | 2d | 2019-11-29 | 2019-11-30 | start no earlier than 2019-11-29 | 陈子瑶; 王晓旭 | 32h |  |  |
| 29 | 2.1.4.4 | 上线 | milestone, manual | 0d | 2019-12-02 | 2019-12-02 | start no earlier than 2019-12-02 | 陈子瑶 |  |  |  |
| 30 | 2.1.5 | **工程里程碑关闭审批v2** |  | 6d | 2020-02-03 | 2020-02-09 |  |  | 96h |  |  |
| 31 | 2.1.5.1 | 办公网YJT_APP端API封装 | manual | 1d | 2020-02-03 | 2020-02-04 | start no earlier than 2020-02-03 | 陈子瑶 | 8h |  |  |
| 32 | 2.1.5.2 | 移动端action开发+页面开发 | manual | 2d | 2020-02-04 | 2020-02-05 | start no earlier than 2020-02-04 | 王晓旭 | 16h |  |  |
| 33 | 2.1.5.3 | 单元测试及相关问题修改 | manual | 2d | 2020-02-04 | 2020-02-05 | start no earlier than 2020-02-04 | 陈子瑶; 王晓旭 | 32h |  |  |
| 34 | 2.1.5.4 | 上线 | manual | 5d | 2020-02-04 | 2020-02-09 | start no earlier than 2020-02-04 | 陈子瑶 | 40h |  | 上线并提交文档 |
| 35 | 2.1.6 | **工程里程碑新增审批** |  | 9d | 2019-11-22 | 2019-12-02 |  |  | 128h | 100% |  |
| 36 | 2.1.6.1 | 办公网YJT_APP端API封装 | manual | 6d | 2019-11-22 | 2019-11-28 | start no earlier than 2019-11-22 | 陈子瑶 | 48h |  |  |
| 37 | 2.1.6.2 | 移动端action开发+页面开发 | manual | 6d | 2019-11-22 | 2019-11-28 | start no earlier than 2019-11-22 | 王晓旭 | 48h |  |  |
| 38 | 2.1.6.3 | 单元测试及相关问题修改 | manual | 2d | 2019-11-29 | 2019-11-30 | start no earlier than 2019-11-29 | 陈子瑶; 王晓旭 | 32h |  |  |
| 39 | 2.1.6.4 | 上线 | milestone, manual | 0d | 2019-12-02 | 2019-12-02 | start no earlier than 2019-12-02 | 陈子瑶 |  |  |  |
| 40 | 2.1.7 | **工程立项审批** |  | 11d | 2019-12-02 | 2019-12-13 |  |  | 152h | 100% |  |
| 41 | 2.1.7.1 | 办公网YJT_APP端API封装 | manual | 6d | 2019-12-02 | 2019-12-07 | start no earlier than 2019-12-02 | 陈子瑶 | 48h |  |  |
| 42 | 2.1.7.2 | 移动端action开发+页面开发 | manual | 6d | 2019-12-02 | 2019-12-07 | start no earlier than 2019-12-02 | 王晓旭 | 48h |  |  |
| 43 | 2.1.7.3 | 单元测试及相关问题修改 | manual | 2d | 2019-12-09 | 2019-12-10 | start no earlier than 2019-12-09 | 陈子瑶; 王晓旭 | 32h |  |  |
| 44 | 2.1.7.4 | 上线 | manual | 3d | 2019-12-11 | 2019-12-13 | start no earlier than 2019-12-11 | 陈子瑶 | 24h |  |  |
| 45 | 2.1.8 | **工程评估审批** |  | 11d | 2019-12-02 | 2019-12-13 |  |  | 152h | 100% |  |
| 46 | 2.1.8.1 | 办公网YJT_APP端API封装 | manual | 6d | 2019-12-02 | 2019-12-07 | start no earlier than 2019-12-02 | 陈子瑶 | 48h |  |  |
| 47 | 2.1.8.2 | 移动端action开发+页面开发 | manual | 6d | 2019-12-02 | 2019-12-07 | start no earlier than 2019-12-02 | 王晓旭 | 48h |  |  |
| 48 | 2.1.8.3 | 单元测试及相关问题修改 | manual | 2d | 2019-12-09 | 2019-12-10 | start no earlier than 2019-12-09 | 陈子瑶; 王晓旭 | 32h |  |  |
| 49 | 2.1.8.4 | 上线 | manual | 3d | 2019-12-11 | 2019-12-13 | start no earlier than 2019-12-11 | 陈子瑶 | 24h |  |  |

| ID | WBS | Task | Type | Duration | Start | Finish | Constraint | Resources | Work | 进度 | 交付物 |
| --- | --- | --- | --- | --- | --- | --- | --- | --- | --- | --- | --- |
| 50 | 2.1.9 | **工程项目变更审批** |  | 11d | 2019-12-02 | 2019-12-13 |  |  | 152h | 100% |  |
| 51 | 2.1.9.1 | 办公网YJT_APP端API封装 | manual | 6d | 2019-12-02 | 2019-12-07 | start no earlier than 2019-12-02 | 陈子瑶 | 48h |  |  |
| 52 | 2.1.9.2 | 移动端action开发+页面开发 | manual | 6d | 2019-12-02 | 2019-12-07 | start no earlier than 2019-12-02 | 王晓旭 | 48h |  |  |
| 53 | 2.1.9.3 | 单元测试及相关问题修改 | manual | 2d | 2019-12-09 | 2019-12-10 | start no earlier than 2019-12-09 | 陈子瑶; 王晓旭 | 32h |  |  |
| 54 | 2.1.9.4 | 上线 | manual | 3d | 2019-12-11 | 2019-12-13 | start no earlier than 2019-12-11 | 陈子瑶 | 24h |  |  |
| 55 | 2.1.10 | **工程项目成员变更** |  | 11d | 2019-12-02 | 2019-12-13 |  |  | 128h | 100% |  |
| 56 | 2.1.10.1 | 办公网YJT_APP端API封装 | manual | 6d | 2019-12-02 | 2019-12-07 | start no earlier than 2019-12-02 | 陈子瑶 | 48h |  |  |
| 57 | 2.1.10.2 | 移动端action开发+页面开发 | manual | 6d | 2019-12-02 | 2019-12-07 | start no earlier than 2019-12-02 | 王晓旭 | 48h |  |  |
| 58 | 2.1.10.3 | 单元测试及相关问题修改 | manual | 2d | 2019-12-09 | 2019-12-10 | start no earlier than 2019-12-09 | 陈子瑶; 王晓旭 | 32h |  |  |
| 59 | 2.1.10.4 | 上线 | milestone, manual | 0d | 2019-12-11 | 2019-12-11 | start no earlier than 2019-12-11 | 陈子瑶 |  |  |  |
| 60 | 2.1.11 | **工程项目经理变更审批** |  | 11d | 2019-12-02 | 2019-12-13 |  |  | 152h | 100% |  |
| 61 | 2.1.11.1 | 办公网YJT_APP端API封装 | manual | 6d | 2019-12-02 | 2019-12-07 | start no earlier than 2019-12-02 | 陈子瑶 | 48h |  |  |
| 62 | 2.1.11.2 | 移动端action开发+页面开发 | manual | 6d | 2019-12-02 | 2019-12-07 | start no earlier than 2019-12-02 | 王晓旭 | 48h |  |  |
| 63 | 2.1.11.3 | 单元测试及相关问题修改 | manual | 2d | 2019-12-09 | 2019-12-10 | start no earlier than 2019-12-09 | 陈子瑶; 王晓旭 | 32h |  |  |
| 64 | 2.1.11.4 | 上线 | manual | 3d | 2019-12-11 | 2019-12-13 | start no earlier than 2019-12-11 | 陈子瑶 | 24h |  |  |
| 65 | 2.1.12 | **工程移交审批V1.1** |  | 11d | 2019-12-02 | 2019-12-13 |  |  | 152h | 100% |  |
| 66 | 2.1.12.1 | 办公网YJT_APP端API封装 | manual | 6d | 2019-12-02 | 2019-12-07 | start no earlier than 2019-12-02 | 陈子瑶 | 48h | 100% |  |
| 67 | 2.1.12.2 | 移动端action开发+页面开发 | manual | 6d | 2019-12-02 | 2019-12-07 | start no earlier than 2019-12-02 | 王晓旭 | 48h |  |  |
| 68 | 2.1.12.3 | 单元测试及相关问题修改 | manual | 2d | 2019-12-09 | 2019-12-10 | start no earlier than 2019-12-09 | 陈子瑶; 王晓旭 | 32h |  |  |
| 69 | 2.1.12.4 | 上线 | manual | 3d | 2019-12-11 | 2019-12-13 | start no earlier than 2019-12-11 | 陈子瑶 | 24h |  |  |
| 70 | 2.2 | **催款项目（10）** |  | 16d | 2020-02-10 | 2020-03-03 |  |  | 1280h |  | 概要设计，详细设计，测试用例，测试报告，接口文档 |
| 71 | 2.2.1 | **催款费用增补审批V1.1** |  | 9d | 2020-01-09 | 2020-01-21 |  |  | 120h |  |  |
| 72 | 2.2.1.1 | 办公网YJT_APP端API封装 | manual | 5d | 2020-01-09 | 2020-01-16 | start no earlier than 2020-01-09 | 陈子瑶 | 40h |  |  |
| 73 | 2.2.1.2 | 移动端action开发+页面开发 | manual | 5d | 2020-01-09 | 2020-01-16 | start no earlier than 2020-01-09 | 王晓旭 | 40h |  |  |
| 74 | 2.2.1.3 | 单元测试及相关问题修改 | manual | 2d | 2020-01-15 | 2020-01-17 | start no earlier than 2020-01-15 | 陈子瑶; 王晓旭 | 32h |  |  |
| 75 | 2.2.1.4 | 上线 | manual | 1d | 2020-01-17 | 2020-01-20 | start no earlier than 2020-01-17 | 陈子瑶 | 8h |  |  |

Notes:
- 70: 尚未查看内部细节，相关实现需要经过分析后敲定，目前是大致估计

| ID | WBS | Task | Type | Duration | Start | Finish | Constraint | Resources | Work |
| --- | --- | --- | --- | --- | --- | --- | --- | --- | --- |
| 76 | 2.2.2 | **催款结项审批V1.1** |  | 7d | 2020-01-09 | 2020-01-20 |  |  | 120h |
| 77 | 2.2.2.1 | 办公网YJT_APP端API封装 | manual | 5d | 2020-01-09 | 2020-01-16 | start no earlier than 2020-01-09 | 陈子瑶 | 40h |
| 78 | 2.2.2.2 | 移动端action开发+页面开发 | manual | 5d | 2020-01-09 | 2020-01-16 | start no earlier than 2020-01-09 | 王晓旭 | 40h |
| 79 | 2.2.2.3 | 单元测试及相关问题修改 | manual | 2d | 2020-01-15 | 2020-01-17 | start no earlier than 2020-01-15 | 陈子瑶; 王晓旭 | 32h |
| 80 | 2.2.2.4 | 上线 | manual | 1d | 2020-01-17 | 2020-01-20 | start no earlier than 2020-01-17 | 陈子瑶 | 8h |
| 81 | 2.2.3 | **催款里程碑承诺时间变更审批** |  | 7d | 2020-01-09 | 2020-01-20 |  |  | 120h |
| 82 | 2.2.3.1 | 办公网YJT_APP端API封装 | manual | 5d | 2020-01-09 | 2020-01-16 | start no earlier than 2020-01-09 | 陈子瑶 | 40h |
| 83 | 2.2.3.2 | 移动端action开发+页面开发 | manual | 5d | 2020-01-09 | 2020-01-16 | start no earlier than 2020-01-09 | 王晓旭 | 40h |
| 84 | 2.2.3.3 | 单元测试及相关问题修改 | manual | 2d | 2020-01-15 | 2020-01-17 | start no earlier than 2020-01-15 | 陈子瑶; 王晓旭 | 32h |
| 85 | 2.2.3.4 | 上线 | manual | 1d | 2020-01-17 | 2020-01-20 | start no earlier than 2020-01-17 | 陈子瑶 | 8h |
| 86 | 2.2.4 | **催款里程碑负责人变更审批** |  | 7d | 2020-01-09 | 2020-01-20 |  |  | 120h |
| 87 | 2.2.4.1 | 办公网YJT_APP端API封装 | manual | 5d | 2020-01-09 | 2020-01-16 | start no earlier than 2020-01-09 | 陈子瑶 | 40h |
| 88 | 2.2.4.2 | 移动端action开发+页面开发 | manual | 5d | 2020-01-09 | 2020-01-16 | start no earlier than 2020-01-09 | 王晓旭 | 40h |
| 89 | 2.2.4.3 | 单元测试及相关问题修改 | manual | 2d | 2020-01-15 | 2020-01-17 | start no earlier than 2020-01-15 | 陈子瑶; 王晓旭 | 32h |
| 90 | 2.2.4.4 | 上线 | manual | 1d | 2020-01-17 | 2020-01-20 | start no earlier than 2020-01-17 | 陈子瑶 | 8h |
| 91 | 2.2.5 | **催款里程碑关闭审批** |  | 7d | 2020-01-09 | 2020-01-20 |  |  | 120h |
| 92 | 2.2.5.1 | 办公网YJT_APP端API封装 | manual | 5d | 2020-01-09 | 2020-01-16 | start no earlier than 2020-01-09 | 陈子瑶 | 40h |
| 93 | 2.2.5.2 | 移动端action开发+页面开发 | manual | 5d | 2020-01-09 | 2020-01-16 | start no earlier than 2020-01-09 | 王晓旭 | 40h |
| 94 | 2.2.5.3 | 单元测试及相关问题修改 | manual | 2d | 2020-01-15 | 2020-01-17 | start no earlier than 2020-01-15 | 陈子瑶; 王晓旭 | 32h |
| 95 | 2.2.5.4 | 上线 | manual | 1d | 2020-01-17 | 2020-01-20 | start no earlier than 2020-01-17 | 陈子瑶 | 8h |
| 96 | 2.2.6 | **催款里程碑新增审批** |  | 8d | 2020-01-21 | 2020-01-31 |  |  | 136h |
| 97 | 2.2.6.1 | 办公网YJT_APP端API封装 | manual | 6d | 2020-01-23 | 2020-01-31 | start no earlier than 2020-01-23 | 陈子瑶 | 48h |
| 98 | 2.2.6.2 | 移动端action开发+页面开发 | manual | 6d | 2020-01-23 | 2020-01-31 | start no earlier than 2020-01-23 | 王晓旭 | 48h |
| 99 | 2.2.6.3 | 单元测试及相关问题修改 | manual | 2d | 2020-01-29 | 2020-01-31 | start no earlier than 2020-01-29 | 陈子瑶; 王晓旭 | 32h |
| 100 | 2.2.6.4 | 上线 | manual | 1d | 2020-01-30 | 2020-01-31 | start no earlier than 2020-01-30 | 陈子瑶 | 8h |

| ID | WBS | Task | Type | Duration | Start | Finish | Constraint | Resources | Work | 交付物 |
| --- | --- | --- | --- | --- | --- | --- | --- | --- | --- | --- |
| 101 | 2.2.7 | **催款立项审批** |  | 8d | 2020-01-21 | 2020-01-31 |  |  | 136h |  |
| 102 | 2.2.7.1 | 办公网YJT_APP端API封装 | manual | 6d | 2020-01-23 | 2020-01-31 | start no earlier than 2020-01-23 | 陈子瑶 | 48h |  |
| 103 | 2.2.7.2 | 移动端action开发+页面开发 | manual | 6d | 2020-01-23 | 2020-01-31 | start no earlier than 2020-01-23 | 王晓旭 | 48h |  |
| 104 | 2.2.7.3 | 单元测试及相关问题修改 | manual | 2d | 2020-01-29 | 2020-01-31 | start no earlier than 2020-01-29 | 陈子瑶; 王晓旭 | 32h |  |
| 105 | 2.2.7.4 | 上线 | manual | 1d | 2020-01-30 | 2020-01-31 | start no earlier than 2020-01-30 | 陈子瑶 | 8h |  |
| 106 | 2.2.8 | **催款项目变更审批** |  | 8d | 2020-01-21 | 2020-01-31 |  |  | 136h |  |
| 107 | 2.2.8.1 | 办公网YJT_APP端API封装 | manual | 6d | 2020-01-23 | 2020-01-31 | start no earlier than 2020-01-23 | 陈子瑶 | 48h |  |
| 108 | 2.2.8.2 | 移动端action开发+页面开发 | manual | 6d | 2020-01-23 | 2020-01-31 | start no earlier than 2020-01-23 | 王晓旭 | 48h |  |
| 109 | 2.2.8.3 | 单元测试及相关问题修改 | manual | 2d | 2020-01-29 | 2020-01-31 | start no earlier than 2020-01-29 | 陈子瑶; 王晓旭 | 32h |  |
| 110 | 2.2.8.4 | 上线 | manual | 1d | 2020-01-30 | 2020-01-31 | start no earlier than 2020-01-30 | 陈子瑶 | 8h |  |
| 111 | 2.2.9 | **催款项目经理变更审批** |  | 8d | 2020-01-21 | 2020-01-31 |  |  | 136h |  |
| 112 | 2.2.9.1 | 办公网YJT_APP端API封装 | manual | 6d | 2020-01-23 | 2020-01-31 | start no earlier than 2020-01-23 | 陈子瑶 | 48h |  |
| 113 | 2.2.9.2 | 移动端action开发+页面开发 | manual | 6d | 2020-01-23 | 2020-01-31 | start no earlier than 2020-01-23 | 王晓旭 | 48h |  |
| 114 | 2.2.9.3 | 单元测试及相关问题修改 | manual | 2d | 2020-01-29 | 2020-01-31 | start no earlier than 2020-01-29 | 陈子瑶; 王晓旭 | 32h |  |
| 115 | 2.2.9.4 | 上线 | manual | 1d | 2020-01-30 | 2020-01-31 | start no earlier than 2020-01-30 | 陈子瑶 | 8h |  |
| 116 | 2.2.10 | **催款项目人员变更审批** |  | 8d | 2020-01-21 | 2020-01-31 |  |  | 136h |  |
| 117 | 2.2.10.1 | 办公网YJT_APP端API封装 | manual | 6d | 2020-01-23 | 2020-01-31 | start no earlier than 2020-01-23 | 陈子瑶 | 48h |  |
| 118 | 2.2.10.2 | 移动端action开发+页面开发 | manual | 6d | 2020-01-23 | 2020-01-31 | start no earlier than 2020-01-23 | 王晓旭 | 48h |  |
| 119 | 2.2.10.3 | 单元测试及相关问题修改 | manual | 2d | 2020-01-29 | 2020-01-31 | start no earlier than 2020-01-29 | 陈子瑶; 王晓旭 | 32h |  |
| 120 | 2.2.10.4 | 上线 | manual | 1d | 2020-01-30 | 2020-01-31 | start no earlier than 2020-01-30 | 陈子瑶 | 8h |  |
| 121 | 2.3 | **客户关系维护（8）** |  | 16d | 2020-03-03 | 2020-03-25 |  |  | 640h | 概要设计，详细设计，测试用例，测试报告，接口文档 |
| 122 | 2.3.1 | **变更基本信息审批** |  | 6d | 2020-01-31 | 2020-02-07 |  |  | 80h |  |
| 123 | 2.3.1.1 | 办公网YJT_APP端API封装 | manual | 4d | 2020-01-31 | 2020-02-06 | start no earlier than 2020-01-31 | 陈子瑶 | 32h |  |
| 124 | 2.3.1.2 | 移动端action开发+页面开发 | manual | 4d | 2020-01-31 | 2020-02-06 | start no earlier than 2020-01-31 | 王晓旭 | 32h |  |
| 125 | 2.3.1.3 | 单元测试及相关问题修改 | manual | 1d | 2020-02-06 | 2020-02-07 | start no earlier than 2020-02-06 | 陈子瑶; 王晓旭 | 16h |  |
| 126 | 2.3.1.4 | 上线 | milestone, manual | 0d | 2020-02-07 | 2020-02-07 | start no earlier than 2020-02-07 | 陈子瑶 |  |  |

Notes:
- 121: 尚未查看内部细节，相关实现需要经过分析后敲定，目前是大致估计

| ID | WBS | Task | Type | Duration | Start | Finish | Constraint | Resources | Work |
| --- | --- | --- | --- | --- | --- | --- | --- | --- | --- |
| 127 | 2.3.2 | **成员变更审核** |  | 6d | 2020-01-31 | 2020-02-07 |  |  | 80h |
| 128 | 2.3.2.1 | 办公网YJT_APP端API封装 | manual | 4d | 2020-01-31 | 2020-02-06 | start no earlier than 2020-01-31 | 陈子瑶 | 32h |
| 129 | 2.3.2.2 | 移动端action开发+页面开发 | manual | 4d | 2020-01-31 | 2020-02-06 | start no earlier than 2020-01-31 | 王晓旭 | 32h |
| 130 | 2.3.2.3 | 单元测试及相关问题修改 | manual | 1d | 2020-02-06 | 2020-02-07 | start no earlier than 2020-02-06 | 陈子瑶; 王晓旭 | 16h |
| 131 | 2.3.2.4 | 上线 | milestone, manual | 0d | 2020-02-07 | 2020-02-07 | start no earlier than 2020-02-07 | 陈子瑶 |  |
| 132 | 2.3.3 | **费用增补审批流程V1.1** |  | 6d | 2020-01-31 | 2020-02-07 |  |  | 80h |
| 133 | 2.3.3.1 | 办公网YJT_APP端API封装 | manual | 4d | 2020-01-31 | 2020-02-06 | start no earlier than 2020-01-31 | 陈子瑶 | 32h |
| 134 | 2.3.3.2 | 移动端action开发+页面开发 | manual | 4d | 2020-01-31 | 2020-02-06 | start no earlier than 2020-01-31 | 王晓旭 | 32h |
| 135 | 2.3.3.3 | 单元测试及相关问题修改 | manual | 1d | 2020-02-06 | 2020-02-07 | start no earlier than 2020-02-06 | 陈子瑶; 王晓旭 | 16h |
| 136 | 2.3.3.4 | 上线 | milestone, manual | 0d | 2020-02-07 | 2020-02-07 | start no earlier than 2020-02-07 | 陈子瑶 |  |
| 137 | 2.3.4 | **结项审批流程** |  | 6d | 2020-01-31 | 2020-02-07 |  |  | 80h |
| 138 | 2.3.4.1 | 办公网YJT_APP端API封装 | manual | 4d | 2020-01-31 | 2020-02-06 | start no earlier than 2020-01-31 | 陈子瑶 | 32h |
| 139 | 2.3.4.2 | 移动端action开发+页面开发 | manual | 4d | 2020-01-31 | 2020-02-06 | start no earlier than 2020-01-31 | 王晓旭 | 32h |
| 140 | 2.3.4.3 | 单元测试及相关问题修改 | manual | 1d | 2020-02-06 | 2020-02-07 | start no earlier than 2020-02-06 | 陈子瑶; 王晓旭 | 16h |
| 141 | 2.3.4.4 | 上线 | milestone, manual | 0d | 2020-02-07 | 2020-02-07 | start no earlier than 2020-02-07 | 陈子瑶 |  |
| 142 | 2.3.5 | **经理变更审批流程** |  | 10d | 2020-02-10 | 2020-02-21 |  |  | 80h |
| 143 | 2.3.5.1 | 办公网YJT_APP端API封装 | manual | 4d | 2020-02-10 | 2020-02-14 | start no earlier than 2020-02-10 | 陈子瑶 | 32h |
| 144 | 2.3.5.2 | 移动端action开发+页面开发 | manual | 4d | 2020-02-10 | 2020-02-14 | start no earlier than 2020-02-10 | 王晓旭 | 32h |
| 145 | 2.3.5.3 | 单元测试及相关问题修改 | manual | 1d | 2020-02-14 | 2020-02-17 | start no earlier than 2020-02-14 | 陈子瑶; 王晓旭 | 16h |
| 146 | 2.3.5.4 | 上线 | milestone, manual | 0d | 2020-02-17 | 2020-02-17 | start no earlier than 2020-02-17 | 陈子瑶 |  |
| 147 | 2.3.6 | **里程碑变更审批流程** |  | 10d | 2020-02-10 | 2020-02-21 |  |  | 80h |
| 148 | 2.3.6.1 | 办公网YJT_APP端API封装 | manual | 4d | 2020-02-10 | 2020-02-14 | start no earlier than 2020-02-10 | 陈子瑶 | 32h |
| 149 | 2.3.6.2 | 移动端action开发+页面开发 | manual | 4d | 2020-02-10 | 2020-02-14 | start no earlier than 2020-02-10 | 王晓旭 | 32h |
| 150 | 2.3.6.3 | 单元测试及相关问题修改 | manual | 1d | 2020-02-14 | 2020-02-17 | start no earlier than 2020-02-14 | 陈子瑶; 王晓旭 | 16h |
| 151 | 2.3.6.4 | 上线 | milestone, manual | 0d | 2020-02-17 | 2020-02-17 | start no earlier than 2020-02-17 | 陈子瑶 |  |

| ID | WBS | Task | Type | Duration | Start | Finish | Constraint | Resources | Work | 交付物 |
| --- | --- | --- | --- | --- | --- | --- | --- | --- | --- | --- |
| 152 | 2.3.7 | **里程碑关闭审批流程** |  | 10d | 2020-02-10 | 2020-02-21 |  |  | 80h |  |
| 153 | 2.3.7.1 | 办公网YJT_APP端API封装 | manual | 4d | 2020-02-10 | 2020-02-14 | start no earlier than 2020-02-10 | 陈子瑶 | 32h |  |
| 154 | 2.3.7.2 | 移动端action开发+页面开发 | manual | 4d | 2020-02-10 | 2020-02-14 | start no earlier than 2020-02-10 | 王晓旭 | 32h |  |
| 155 | 2.3.7.3 | 单元测试及相关问题修改 | manual | 1d | 2020-02-14 | 2020-02-17 | start no earlier than 2020-02-14 | 陈子瑶; 王晓旭 | 16h |  |
| 156 | 2.3.7.4 | 上线 | milestone, manual | 0d | 2020-02-17 | 2020-02-17 | start no earlier than 2020-02-17 | 陈子瑶 |  |  |
| 157 | 2.3.8 | **立项审核流程** |  | 10d | 2020-02-10 | 2020-02-21 |  |  | 80h |  |
| 158 | 2.3.8.1 | 办公网YJT_APP端API封装 | manual | 4d | 2020-02-10 | 2020-02-14 | start no earlier than 2020-02-10 | 陈子瑶 | 32h |  |
| 159 | 2.3.8.2 | 移动端action开发+页面开发 | manual | 4d | 2020-02-10 | 2020-02-14 | start no earlier than 2020-02-10 | 王晓旭 | 32h |  |
| 160 | 2.3.8.3 | 单元测试及相关问题修改 | manual | 1d | 2020-02-14 | 2020-02-17 | start no earlier than 2020-02-14 | 陈子瑶; 王晓旭 | 16h |  |
| 161 | 2.3.8.4 | 上线 | milestone, manual | 0d | 2020-02-17 | 2020-02-17 | start no earlier than 2020-02-17 | 陈子瑶 |  |  |
| 162 | 2.4 | **商机拓展（8）** |  | 16d | 2020-03-25 | 2020-04-16 |  |  | 992h | 概要设计，详细设计，测试用例，测试报告，接口文档 |
| 163 | 2.4.1 | **立项审批流程** |  | 8d | 2020-02-25 | 2020-03-06 |  |  | 136h |  |
| 164 | 2.4.1.1 | 办公网YJT_APP端API封装 | manual | 6d | 2020-02-25 | 2020-03-04 | start no earlier than 2020-02-25 | 陈子瑶 | 48h |  |
| 165 | 2.4.1.2 | 移动端action开发+页面开发 | manual | 6d | 2020-02-25 | 2020-03-04 | start no earlier than 2020-02-25 | 王晓旭 | 48h |  |
| 166 | 2.4.1.3 | 单元测试及相关问题修改 | manual | 2d | 2020-03-02 | 2020-03-04 | start no earlier than 2020-03-02 | 陈子瑶; 王晓旭 | 32h |  |
| 167 | 2.4.1.4 | 上线 | manual | 1d | 2020-03-03 | 2020-03-04 | start no earlier than 2020-03-04 | 陈子瑶 | 8h |  |
| 168 | 2.4.2 | **变更基本信息审批** |  | 8d | 2020-02-25 | 2020-03-06 |  |  | 136h |  |
| 169 | 2.4.2.1 | 办公网YJT_APP端API封装 | manual | 6d | 2020-02-25 | 2020-03-04 | start no earlier than 2020-02-25 | 陈子瑶 | 48h |  |
| 170 | 2.4.2.2 | 移动端action开发+页面开发 | manual | 6d | 2020-02-25 | 2020-03-04 | start no earlier than 2020-02-25 | 王晓旭 | 48h |  |
| 171 | 2.4.2.3 | 单元测试及相关问题修改 | manual | 2d | 2020-03-02 | 2020-03-04 | start no earlier than 2020-03-02 | 陈子瑶; 王晓旭 | 32h |  |
| 172 | 2.4.2.4 | 上线 | manual | 1d | 2020-03-03 | 2020-03-04 | start no earlier than 2020-03-04 | 陈子瑶 | 8h |  |
| 173 | 2.4.3 | **费用增补审批流程V1.1** |  | 8d | 2020-02-25 | 2020-03-06 |  |  | 136h |  |
| 174 | 2.4.3.1 | 办公网YJT_APP端API封装 | manual | 6d | 2020-02-25 | 2020-03-04 | start no earlier than 2020-02-25 | 陈子瑶 | 48h |  |
| 175 | 2.4.3.2 | 移动端action开发+页面开发 | manual | 6d | 2020-02-25 | 2020-03-04 | start no earlier than 2020-02-25 | 王晓旭 | 48h |  |
| 176 | 2.4.3.3 | 单元测试及相关问题修改 | manual | 2d | 2020-03-02 | 2020-03-04 | start no earlier than 2020-03-02 | 陈子瑶; 王晓旭 | 32h |  |
| 177 | 2.4.3.4 | 上线 | manual | 1d | 2020-03-03 | 2020-03-04 | start no earlier than 2020-03-04 | 陈子瑶 | 8h |  |

Notes:
- 162: 尚未查看内部细节，相关实现需要经过分析后敲定，目前是大致估计

| ID | WBS | Task | Type | Duration | Start | Finish | Constraint | Resources | Work |
| --- | --- | --- | --- | --- | --- | --- | --- | --- | --- |
| 178 | 2.4.4 | **结项审批流程** |  | 8d | 2020-02-25 | 2020-03-06 |  |  | 136h |
| 179 | 2.4.4.1 | 办公网YJT_APP端API封装 | manual | 6d | 2020-02-25 | 2020-03-04 | start no earlier than 2020-02-25 | 陈子瑶 | 48h |
| 180 | 2.4.4.2 | 移动端action开发+页面开发 | manual | 6d | 2020-02-25 | 2020-03-04 | start no earlier than 2020-02-25 | 王晓旭 | 48h |
| 181 | 2.4.4.3 | 单元测试及相关问题修改 | manual | 2d | 2020-03-02 | 2020-03-04 | start no earlier than 2020-03-02 | 陈子瑶; 王晓旭 | 32h |
| 182 | 2.4.4.4 | 上线 | manual | 1d | 2020-03-03 | 2020-03-04 | start no earlier than 2020-03-04 | 陈子瑶 | 8h |
| 183 | 2.4.5 | **经理变更审批流程** |  | 10d | 2020-03-03 | 2020-03-17 |  |  | 112h |
| 184 | 2.4.5.1 | 办公网YJT_APP端API封装 | manual | 6d | 2020-03-03 | 2020-03-11 | start no earlier than 2020-03-04 | 陈子瑶 | 48h |
| 185 | 2.4.5.2 | 移动端action开发+页面开发 | manual | 6d | 2020-03-03 | 2020-03-11 | start no earlier than 2020-03-04 | 王晓旭 | 48h |
| 186 | 2.4.5.3 | 单元测试及相关问题修改 | manual | 1d | 2020-03-13 | 2020-03-16 | start no earlier than 2020-03-13 | 陈子瑶; 王晓旭 | 16h |
| 187 | 2.4.5.4 | 上线 | milestone, manual | 0d | 2020-03-16 | 2020-03-16 | start no earlier than 2020-03-16 | 陈子瑶 |  |
| 188 | 2.4.6 | **里程碑变更审批流程** |  | 10d | 2020-03-03 | 2020-03-17 |  |  | 112h |
| 189 | 2.4.6.1 | 办公网YJT_APP端API封装 | manual | 6d | 2020-03-03 | 2020-03-11 | start no earlier than 2020-03-04 | 陈子瑶 | 48h |
| 190 | 2.4.6.2 | 移动端action开发+页面开发 | manual | 6d | 2020-03-03 | 2020-03-11 | start no earlier than 2020-03-04 | 王晓旭 | 48h |
| 191 | 2.4.6.3 | 单元测试及相关问题修改 | manual | 1d | 2020-03-13 | 2020-03-16 | start no earlier than 2020-03-13 | 陈子瑶; 王晓旭 | 16h |
| 192 | 2.4.6.4 | 上线 | milestone, manual | 0d | 2020-03-16 | 2020-03-16 | start no earlier than 2020-03-16 | 陈子瑶 |  |
| 193 | 2.4.7 | **里程碑关闭审批流程** |  | 10d | 2020-03-03 | 2020-03-17 |  |  | 112h |
| 194 | 2.4.7.1 | 办公网YJT_APP端API封装 | manual | 6d | 2020-03-03 | 2020-03-11 | start no earlier than 2020-03-04 | 陈子瑶 | 48h |
| 195 | 2.4.7.2 | 移动端action开发+页面开发 | manual | 6d | 2020-03-03 | 2020-03-11 | start no earlier than 2020-03-04 | 王晓旭 | 48h |
| 196 | 2.4.7.3 | 单元测试及相关问题修改 | manual | 1d | 2020-03-13 | 2020-03-16 | start no earlier than 2020-03-13 | 陈子瑶; 王晓旭 | 16h |
| 197 | 2.4.7.4 | 上线 | milestone, manual | 0d | 2020-03-16 | 2020-03-16 | start no earlier than 2020-03-16 | 陈子瑶 |  |
| 198 | 2.4.8 | **成员变更审核** |  | 10d | 2020-03-03 | 2020-03-17 |  |  | 112h |
| 199 | 2.4.8.1 | 办公网YJT_APP端API封装 | manual | 6d | 2020-03-03 | 2020-03-11 | start no earlier than 2020-03-04 | 陈子瑶 | 48h |
| 200 | 2.4.8.2 | 移动端action开发+页面开发 | manual | 6d | 2020-03-03 | 2020-03-11 | start no earlier than 2020-03-04 | 王晓旭 | 48h |
| 201 | 2.4.8.3 | 单元测试及相关问题修改 | manual | 1d | 2020-03-13 | 2020-03-16 | start no earlier than 2020-03-13 | 陈子瑶; 王晓旭 | 16h |
| 202 | 2.4.8.4 | 上线 | milestone, manual | 0d | 2020-03-16 | 2020-03-16 | start no earlier than 2020-03-16 | 陈子瑶 |  |
| 203 | 3 | 验收项目（12） | manual | 16d | 2020-04-16 | 2020-05-08 |  |  |  |

Notes:
- 203: 尚未查看内部细节，相关实现需要经过分析后敲定，目前是大致估计
