Schedule from MS Project, 2019-06-03 to 2020-03-09, A marks actual dates.
Microsoft

## Calendars

- 标准: Mon-Fri 08:00-12:00, 13:00-17:00; Sat-Sun off. Exceptions (off unless hours are given): 2019-06-15 08:00-12:00, 13:00-17:00.

## Resources

| Resource |
| --- |
| 高祥云 |
| 罗加云 |
| 杜振兴 |
| 陈子瑶 |
| 李龙 |
| JAVA团队 |
| 王晓旭 |
| 秦建锐 |

## Schedule

| ID | WBS | Task | Type | Duration | Start | Finish | Complete | Remaining | Total slack | Constraint | Resources | Work | 交付物 | 进度 |
| --- | --- | --- | --- | --- | --- | --- | --- | --- | --- | --- | --- | --- | --- | --- |
| 1 | 1 | YJTXT_BI_V2.0R | manual | 17d | 2019-11-12 A | 2019-12-05 | 15% | 14.39d |  |  |  |  |  |  |
| 2 | 2 | **项目规化阶段** |  | 17d | 2019-11-13 | 2019-12-05 |  |  |  |  |  | 240h |  |  |
| 3 | 2.1 | **需求调研** |  | 17d | 2019-11-13 | 2019-12-05 |  |  |  |  |  | 240h | 需求分析文档 |  |
| 4 | 2.1.1 | **行业产品分析5个模块（李帆）** |  | 6d | 2019-11-13 | 2019-11-20 |  |  | 0d |  |  | 240h |  | 100% |
| 5 | 2.1.1.1 | 各地市承建厂商 | manual | 6d | 2019-11-13 | 2019-11-20 |  |  |  |  | 高祥云 | 48h |  | 100% |
| 6 | 2.1.1.2 | 今年项目状态 | manual | 6d | 2019-11-13 | 2019-11-20 |  |  |  |  | 高祥云 | 48h |  | 100% |
| 7 | 2.1.1.3 | 锐安介入情况 | manual | 6d | 2019-11-13 | 2019-11-20 |  |  |  |  | 高祥云 | 48h |  | 100% |
| 8 | 2.1.1.4 | 近期报工情况 | manual | 6d | 2019-11-13 | 2019-11-20 |  |  |  |  | 高祥云 | 48h |  | 100% |
| 9 | 2.1.1.5 | 重点客户动态 | manual | 6d | 2019-11-13 | 2019-11-20 |  |  |  |  | 高祥云 | 48h |  | 100% |
| 10 | 2.1.2 | 工程售后分析3个模块 | manual | 7d | 2019-11-21 | 2019-11-29 |  |  |  | finish no earlier than 2019-11-29 |  |  |  |  |
| 11 | 2.1.3 | 研发项目分析5个模块（廉喆） | manual | 3d | 2019-12-03 | 2019-12-05 |  |  |  | finish no earlier than 2019-12-11 |  |  |  |  |
| 12 | 3 | **项目开发阶段** |  | 84d | 2019-11-13 | 2020-03-09 |  |  |  |  |  | 3672h |  |  |
| 13 | 3.1 | **销售管理5个模块（李帆）** |  | 23d | 2019-11-13 | 2019-12-13 |  |  | 0d |  |  | 792h |  |  |
| 14 | 3.1.1 | **各地市承建厂商** |  | 18d | 2019-11-13 | 2019-12-06 |  |  |  |  |  | 216h | 概要文档、详细文档、测试用例、测试报告 | 100% |
| 15 | 3.1.1.1 | 来源数据分析梳理 | manual | 1d | 2019-11-13 | 2019-11-13 |  |  |  | finish no earlier than 2019-11-13 | 罗加云 | 8h |  | 100% |
| 16 | 3.1.1.2 | 数据建模 | manual | 1d | 2019-11-13 | 2019-11-14 |  |  |  | start no earlier than 2019-11-13 | 罗加云 | 8h |  | 100% |
| 17 | 3.1.1.3 | ETL开发 | manual | 6d | 2019-11-15 | 2019-11-22 |  |  |  | finish no earlier than 2019-11-22 | 罗加云 | 48h |  | 100% |
| 18 | 3.1.1.4 | 报表开发 | manual | 7d | 2019-11-14 | 2019-11-22 |  |  |  | finish no earlier than 2019-11-22 | 杜振兴 | 56h |  | 100% |
| 19 | 3.1.1.5 | 测试 | manual | 2d | 2019-11-25 | 2019-11-26 |  |  |  | finish no earlier than 2019-11-26 | 杜振兴 | 16h |  | 100% |
| 20 | 3.1.1.6 | 上线 | manual | 1d | 2019-11-26 | 2019-11-26 |  |  |  | finish no earlier than 2019-11-26 | 杜振兴 | 8h |  | 100% |
| 21 | 3.1.1.7 | 上线试运行及相关调整 | manual | 9d | 2019-11-26 | 2019-12-06 |  |  |  | finish no earlier than 2019-11-26 | 杜振兴 | 72h |  |  |
| 22 | 3.1.2 | **今年项目状态** |  | 14d | 2019-11-26 | 2019-12-13 |  |  |  |  |  | 160h | 概要文档、详细文档、测试用例、测试报告 | 100% |
| 23 | 3.1.2.1 | 来源数据分析梳理 | manual | 1d | 2019-11-26 | 2019-11-26 |  |  |  | finish no earlier than 2019-11-26 | 罗加云 | 8h |  | 100% |
| 24 | 3.1.2.2 | 数据建模 | manual | 1d | 2019-11-26 | 2019-11-26 |  |  |  | finish no earlier than 2019-11-26 | 罗加云 | 8h |  | 100% |
| 25 | 3.1.2.3 | ETL开发 | manual | 3d | 2019-11-27 | 2019-11-29 |  |  |  | finish no earlier than 2019-11-29 | 罗加云 | 24h |  | 100% |
| 26 | 3.1.2.4 | 报表开发 | manual | 3d | 2019-11-27 | 2019-12-02 |  |  |  | start no earlier than 2019-11-27 | 杜振兴 | 24h |  | 100% |
| 27 | 3.1.2.5 | 测试 | manual | 1d | 2019-12-02 | 2019-12-02 |  |  |  | finish no earlier than 2019-12-02 | 杜振兴 | 8h |  | 100% |
| 28 | 3.1.2.6 | 上线 | manual | 1d | 2019-12-02 | 2019-12-02 |  |  |  | finish no earlier than 2019-12-02 | 杜振兴 | 8h |  | 100% |
| 29 | 3.1.2.7 | 上线试运行及相关调整 | manual | 10d | 2019-12-02 | 2019-12-13 |  |  |  | start no earlier than 2019-12-02 | 杜振兴 | 80h |  |  |

| ID | WBS | Task | Type | Duration | Start | Finish | Constraint | Resources | Work | 交付物 | 进度 |
| --- | --- | --- | --- | --- | --- | --- | --- | --- | --- | --- | --- |
| 30 | 3.1.3 | **锐安介入情况** |  | 14d | 2019-11-26 | 2019-12-13 |  |  | 168h | 概要文档、详细文档、测试用例、测试报告 |  |
| 31 | 3.1.3.1 | 来源数据分析梳理 | manual | 1d | 2019-11-26 | 2019-11-26 | finish no earlier than 2019-11-26 | 罗加云 | 8h |  | 90% |
| 32 | 3.1.3.2 | 数据建模 | manual | 1d | 2019-11-26 | 2019-11-26 | finish no earlier than 2019-11-26 | 罗加云 | 8h |  | 100% |
| 33 | 3.1.3.3 | ETL开发 | manual | 3d | 2019-11-27 | 2019-11-29 | finish no earlier than 2019-11-29 | 罗加云 | 24h |  |  |
| 34 | 3.1.3.4 | 报表开发 | manual | 4d | 2019-11-27 | 2019-12-02 | finish no earlier than 2019-12-02 | 杜振兴 | 32h |  | 100% |
| 35 | 3.1.3.5 | 测试 | manual | 1d | 2019-12-02 | 2019-12-02 | finish no earlier than 2019-12-02 | 杜振兴 | 8h |  |  |
| 36 | 3.1.3.6 | 上线 | manual | 1d | 2019-12-02 | 2019-12-02 | finish no earlier than 2019-12-02 | 杜振兴 | 8h |  |  |
| 37 | 3.1.3.7 | 上线试运行及相关调整 | manual | 10d | 2019-12-02 | 2019-12-13 | start no earlier than 2019-12-02 | 杜振兴 | 80h |  |  |
| 38 | 3.1.4 | **近期报工情况** |  | 17d | 2019-11-21 | 2019-12-13 |  |  | 160h | 概要文档、详细文档、测试用例、测试报告 | 100% |
| 39 | 3.1.4.1 | 分析理解需求相关内容 | manual | 2d | 2019-11-18 | 2019-11-19 | finish no earlier than 2019-11-19 |  |  |  | 100% |
| 40 | 3.1.4.2 | 来源数据分析梳理 | manual | 2d | 2019-11-21 | 2019-11-22 | finish no earlier than 2019-11-22 | 秦建锐 | 16h |  | 100% |
| 41 | 3.1.4.3 | 数据建模 | manual | 1d | 2019-11-25 | 2019-11-25 | finish no earlier than 2019-11-25 | 秦建锐 | 8h |  | 100% |
| 42 | 3.1.4.4 | ETL开发 | manual | 3d | 2019-11-26 | 2019-11-28 | finish no earlier than 2019-11-29 | 秦建锐 | 24h |  | 100% |
| 43 | 3.1.4.5 | 报表开发 | manual | 2d | 2019-11-29 | 2019-12-02 | start no earlier than 2019-11-29 | 秦建锐 | 16h |  | 100% |
| 44 | 3.1.4.6 | 测试 | manual | 1d | 2019-12-03 | 2019-12-03 | start no earlier than 2019-12-03 | 秦建锐 | 8h |  | 100% |
| 45 | 3.1.4.7 | 上线 | manual | 1d | 2019-12-03 | 2019-12-03 | start no earlier than 2019-12-03 | 秦建锐 | 8h |  | 100% |
| 46 | 3.1.4.8 | 上线试运行及相关调整 | manual | 10d | 2019-12-02 | 2019-12-13 | start no earlier than 2019-12-02 | 杜振兴 | 80h |  |  |
| 47 | 3.1.5 | **重点客户动态** |  | 14d | 2019-11-26 | 2019-12-13 |  |  | 88h | 概要文档、详细文档、测试用例、测试报告 | 90% |
| 48 | 3.1.5.1 | 来源数据分析梳理 | manual | 1d | 2019-11-26 | 2019-11-26 |  | 罗加云 | 8h |  | 100% |
| 49 | 3.1.5.2 | 数据建模 | manual | 1d | 2019-11-26 | 2019-11-26 |  | 罗加云 | 8h |  | 100% |
| 50 | 3.1.5.3 | ETL开发 | manual | 3d | 2019-11-27 | 2019-11-29 |  | 罗加云 | 24h |  | 100% |
| 51 | 3.1.5.4 | 报表开发 | manual | 4d | 2019-11-27 | 2019-12-02 |  | 杜振兴 | 32h |  | 100% |
| 52 | 3.1.5.5 | 测试 | manual | 1d | 2019-12-02 | 2019-12-02 |  | 杜振兴 | 8h |  | 100% |
| 53 | 3.1.5.6 | 上线 | manual | 1d | 2019-12-02 | 2019-12-02 |  | 杜振兴 | 8h |  | 100% |
| 54 | 3.1.5.7 | 上线试运行及相关调整 | manual | 9d | 2019-12-03 | 2019-12-13 | finish no earlier than 2019-12-05 |  |  |  |  |

| ID | WBS | Task | Type | Duration | Start | Finish | Constraint | Resources | Work | 交付物 | 进度 |
| --- | --- | --- | --- | --- | --- | --- | --- | --- | --- | --- | --- |
| 55 | 3.2 | **工程售后分析3个模块** |  | 29d | 2019-12-03 | 2020-01-10 |  |  | 1080h |  |  |
| 56 | 3.2.1 | **合同项目整体交付概况** |  | 25d | 2019-12-09 | 2020-01-10 |  |  | 360h | 概要文档、详细文档、测试用例、测试报告 |  |
| 57 | 3.2.1.1 | 来源数据分析梳理 | manual | 11d | 2019-12-09 | 2019-12-21 |  | 罗加云 | 88h |  | 80% |
| 58 | 3.2.1.2 | 数据建模 | manual | 4d | 2019-12-11 | 2019-12-16 |  | 罗加云 | 32h |  | 100% |
| 59 | 3.2.1.3 | ETL开发 | manual | 11d | 2019-12-16 | 2019-12-28 |  | 罗加云 | 88h |  | 30% |
| 60 | 3.2.1.4 | 报表开发 | manual | 16d | 2019-12-09 | 2019-12-28 |  | 杜振兴 | 128h |  | 70% |
| 61 | 3.2.1.5 | 测试 | manual | 2d | 2019-12-28 | 2019-12-29 |  | 杜振兴 | 16h |  |  |
| 62 | 3.2.1.6 | 上线 | manual | 1d | 2019-12-30 | 2019-12-30 |  | 杜振兴 | 8h |  |  |
| 63 | 3.2.1.7 | 上线试运行及相关调整 | manual | 9d | 2019-12-31 | 2020-01-10 | start no earlier than 2019-12-31 |  |  |  |  |
| 64 | 3.2.2 | **工程类排名** |  | 24d | 2019-12-10 | 2020-01-10 |  |  | 360h | 概要文档、详细文档、测试用例、测试报告 |  |
| 65 | 3.2.2.1 | 来源数据分析梳理 | manual | 11d | 2019-12-09 | 2019-12-21 |  | 罗加云 | 88h |  | 80% |
| 66 | 3.2.2.2 | 数据建模 | manual | 4d | 2019-12-11 | 2019-12-16 |  | 罗加云 | 32h |  | 100% |
| 67 | 3.2.2.3 | ETL开发 | manual | 11d | 2019-12-16 | 2019-12-28 |  | 罗加云 | 88h |  | 30% |
| 68 | 3.2.2.4 | 报表开发 | manual | 16d | 2019-12-09 | 2019-12-28 |  | 杜振兴 | 128h |  | 60% |
| 69 | 3.2.2.5 | 测试 | manual | 2d | 2019-12-28 | 2019-12-29 |  | 杜振兴 | 16h |  |  |
| 70 | 3.2.2.6 | 上线 | manual | 1d | 2019-12-30 | 2019-12-30 |  | 杜振兴 | 8h |  |  |
| 71 | 3.2.2.7 | 上线试运行及相关调整 | manual | 9d | 2019-12-31 | 2020-01-10 | start no earlier than 2019-12-31 |  |  |  |  |
| 72 | 3.2.3 | **售后类排名** |  | 24d | 2019-12-10 | 2020-01-10 |  |  | 360h | 概要文档、详细文档、测试用例、测试报告 |  |
| 73 | 3.2.3.1 | 来源数据分析梳理 | manual | 11d | 2019-12-09 | 2019-12-21 |  | 罗加云 | 88h |  | 80% |
| 74 | 3.2.3.2 | 数据建模 | manual | 4d | 2019-12-11 | 2019-12-16 |  | 罗加云 | 32h |  | 100% |
| 75 | 3.2.3.3 | ETL开发 | manual | 11d | 2019-12-16 | 2019-12-28 |  | 罗加云 | 88h |  | 30% |
| 76 | 3.2.3.4 | 报表开发 | manual | 16d | 2019-12-09 | 2019-12-28 |  | 杜振兴 | 128h |  | 55% |
| 77 | 3.2.3.5 | 测试 | manual | 2d | 2019-12-28 | 2019-12-29 |  | 杜振兴 | 16h |  |  |
| 78 | 3.2.3.6 | 上线 | manual | 1d | 2019-12-30 | 2019-12-30 |  | 杜振兴 | 8h |  |  |
| 79 | 3.2.3.7 | 上线试运行及相关调整 | manual | 9d | 2019-12-31 | 2020-01-10 | start no earlier than 2019-12-31 |  |  |  |  |

| ID | WBS | Task | Type | Duration | Start | Finish | Constraint | Resources | Work |
| --- | --- | --- | --- | --- | --- | --- | --- | --- | --- |
| 80 | 3.3 | **研发项目分析5个模块（廉喆）** |  | 46d | 2020-01-06 | 2020-03-09 |  |  | 1800h |
| 81 | 3.3.1 | **项目维度** |  | 46d | 2020-01-06 | 2020-03-09 |  |  | 360h |
| 82 | 3.3.1.1 | 来源数据分析梳理 | manual | 11d | 2020-01-06 | 2020-01-20 |  | 罗加云 | 88h |
| 83 | 3.3.1.2 | 数据建模 | manual | 3d | 2020-01-21 | 2020-01-23 |  | 罗加云 | 24h |
| 84 | 3.3.1.3 | ETL开发 | manual | 6d | 2020-02-08 | 2020-02-14 |  | 罗加云 | 48h |
| 85 | 3.3.1.4 | 报表开发 | manual | 19d | 2020-01-21 | 2020-02-14 |  | 杜振兴 | 152h |
| 86 | 3.3.1.5 | 测试 | manual | 5d | 2020-02-17 | 2020-02-21 |  | 杜振兴 | 40h |
| 87 | 3.3.1.6 | 上线 | manual | 1d | 2020-02-24 | 2020-02-24 |  | 杜振兴 | 8h |
| 88 | 3.3.1.7 | 上线试运行及相关调整 | manual | 10d | 2020-02-25 | 2020-03-09 | start no earlier than 2020-02-25 |  |  |
| 89 | 3.3.2 | **人-项目维度** |  | 46d | 2020-01-06 | 2020-03-09 |  |  | 360h |
| 90 | 3.3.2.1 | 来源数据分析梳理 | manual | 11d | 2020-01-06 | 2020-01-20 |  | 罗加云 | 88h |
| 91 | 3.3.2.2 | 数据建模 | manual | 3d | 2020-01-21 | 2020-01-23 |  | 罗加云 | 24h |
| 92 | 3.3.2.3 | ETL开发 | manual | 6d | 2020-02-08 | 2020-02-14 |  | 罗加云 | 48h |
| 93 | 3.3.2.4 | 报表开发 | manual | 19d | 2020-01-21 | 2020-02-14 |  | 杜振兴 | 152h |
| 94 | 3.3.2.5 | 测试 | manual | 5d | 2020-02-17 | 2020-02-21 |  | 杜振兴 | 40h |
| 95 | 3.3.2.6 | 上线 | manual | 1d | 2020-02-24 | 2020-02-24 |  | 杜振兴 | 8h |
| 96 | 3.3.2.7 | 上线试运行及相关调整 | manual | 10d | 2020-02-25 | 2020-03-09 | start no earlier than 2020-02-25 |  |  |
| 97 | 3.3.3 | **财-项目维度** |  | 46d | 2020-01-06 | 2020-03-09 |  |  | 360h |
| 98 | 3.3.3.1 | 来源数据分析梳理 | manual | 11d | 2020-01-06 | 2020-01-20 |  | 罗加云 | 88h |
| 99 | 3.3.3.2 | 数据建模 | manual | 3d | 2020-01-21 | 2020-01-23 |  | 罗加云 | 24h |
| 100 | 3.3.3.3 | ETL开发 | manual | 6d | 2020-02-08 | 2020-02-14 |  | 罗加云 | 48h |
| 101 | 3.3.3.4 | 报表开发 | manual | 19d | 2020-01-21 | 2020-02-14 |  | 杜振兴 | 152h |
| 102 | 3.3.3.5 | 测试 | manual | 5d | 2020-02-17 | 2020-02-21 |  | 杜振兴 | 40h |
| 103 | 3.3.3.6 | 上线 | manual | 1d | 2020-02-24 | 2020-02-24 |  | 杜振兴 | 8h |
| 104 | 3.3.3.7 | 上线试运行及相关调整 | manual | 10d | 2020-02-25 | 2020-03-09 | start no earlier than 2020-02-25 |  |  |

| ID | WBS | Task | Type | Duration | Start | Finish | Constraint | Resources | Work |
| --- | --- | --- | --- | --- | --- | --- | --- | --- | --- |
| 105 | 3.3.4 | **产品维度** |  | 46d | 2020-01-06 | 2020-03-09 |  |  | 360h |
| 106 | 3.3.4.1 | 来源数据分析梳理 | manual | 11d | 2020-01-06 | 2020-01-20 |  | 罗加云 | 88h |
| 107 | 3.3.4.2 | 数据建模 | manual | 3d | 2020-01-21 | 2020-01-23 |  | 罗加云 | 24h |
| 108 | 3.3.4.3 | ETL开发 | manual | 6d | 2020-02-08 | 2020-02-14 |  | 罗加云 | 48h |
| 109 | 3.3.4.4 | 报表开发 | manual | 19d | 2020-01-21 | 2020-02-14 |  | 杜振兴 | 152h |
| 110 | 3.3.4.5 | 测试 | manual | 5d | 2020-02-17 | 2020-02-21 |  | 杜振兴 | 40h |
| 111 | 3.3.4.6 | 上线 | manual | 1d | 2020-02-24 | 2020-02-24 |  | 杜振兴 | 8h |
| 112 | 3.3.4.7 | 上线试运行及相关调整 | manual | 10d | 2020-02-25 | 2020-03-09 | start no earlier than 2020-02-25 |  |  |
| 113 | 3.3.5 | **人财-产品维度** |  | 46d | 2020-01-06 | 2020-03-09 |  |  | 360h |
| 114 | 3.3.5.1 | 来源数据分析梳理 | manual | 11d | 2020-01-06 | 2020-01-20 |  | 罗加云 | 88h |
| 115 | 3.3.5.2 | 数据建模 | manual | 3d | 2020-01-21 | 2020-01-23 |  | 罗加云 | 24h |
| 116 | 3.3.5.3 | ETL开发 | manual | 6d | 2020-02-08 | 2020-02-14 |  | 罗加云 | 48h |
| 117 | 3.3.5.4 | 报表开发 | manual | 19d | 2020-01-21 | 2020-02-14 |  | 杜振兴 | 152h |
| 118 | 3.3.5.5 | 测试 | manual | 5d | 2020-02-17 | 2020-02-21 |  | 杜振兴 | 40h |
| 119 | 3.3.5.6 | 上线 | manual | 1d | 2020-02-24 | 2020-02-24 |  | 杜振兴 | 8h |
| 120 | 3.3.5.7 | 上线试运行及相关调整 | manual | 10d | 2020-02-25 | 2020-03-09 | start no earlier than 2020-02-25 |  |  |
| 121 | 4 | **项目验收** |  | 1d? | 2019-06-03 | 2019-06-04 |  |  |  |
| 122 | 4.1 | 项目验收 | manual | 1d? | 2019-06-03 | 2019-06-04 |  |  |  |
| 123 | 4.2 | 项目运维 | manual | 1d? | 2019-06-03 | 2019-06-04 |  |  |  |
