Schedule from MS Project, 2019-06-03 to 2019-09-30, A marks actual dates.
Microsoft

## Calendars

- 标准: Mon-Fri 08:00-12:00, 13:00-17:00; Sat-Sun off. Exceptions (off unless hours are given): 2019-06-15 08:00-12:00, 13:00-17:00.

## Resources

| Resource |
| --- |
| 高祥云 |
| 罗加云 |
| 杜振兴 |
| 陈子瑶 |
| 李龙 |
| JAVA团队 |
| 王晓旭 |

## Schedule

| ID | WBS | Task | Type | Duration | Start | Finish | Predecessors | Complete | Remaining | Total slack | Constraint | Resources | Work | Actual work | 交付物 | 进度 | 交付时间 | Text5 |
| --- | --- | --- | --- | --- | --- | --- | --- | --- | --- | --- | --- | --- | --- | --- | --- | --- | --- | --- |
| 1 | 1 | **YJTXT_BI_V2.0R** |  | 86.88d? | 2019-06-03 A | 2019-09-30 |  | 8% | 80.02d? | 0d |  |  | 2452h | 181.69h |  |  |  |  |
| 2 | 1.1 | **总裁驾驶舱DEMO上线** |  | 13.88d? | 2019-06-03 A | 2019-06-19 |  | 10% | 12.46d? | 0d |  |  | 224h | 32h |  |  |  |  |
| 3 | 1.1.1 | 用户需求/需求分析 | manual | 1d | 2019-06-03 A | 2019-06-03 A |  | 100% |  |  |  | 杜振兴; 高祥云 | 16h | 16h | 需求分析文档,bi详细设计,概要设计文档 | 100% | 2019年6月5日 |  |
| 4 | 1.1.2 | 方案设计/Demo展示 | manual | 1d | 2019-06-04 | 2019-06-04 |  |  |  |  |  | 杜振兴; 高祥云 | 16h |  |  | 100% |  |  |
| 5 | 1.1.3 | 功能开发 | manual | 1d | 2019-06-05 A | 2019-06-05 A |  | 100% |  |  |  | 杜振兴; 高祥云 | 16h | 16h |  | 100% |  |  |
| 6 | 1.1.4 | 页面自适应问题解决 | milestone, manual | 0d? | 2019-06-15 | 2019-06-15 |  |  |  |  | start no earlier than 2019-06-15 |  |  |  |  | 100% |  |  |
| 7 | 1.1.5 | 人力数据展示(总规划人数取不到暂时用假数据代替) | manual | 0.88d? | 2019-06-15 | 2019-06-15 |  |  |  |  | finish no earlier than 2019-06-15 |  |  |  |  | 100% |  |  |
| 8 | 1.1.6 | 现金流量展示三个指标的数据（该数据同样无法取得） | manual | 0.88d? | 2019-06-15 | 2019-06-15 |  |  |  |  | start no earlier than 2019-06-15 |  |  |  |  | 100% |  |  |
| 9 | 1.1.7 | 页面ui风格的处理 | manual | 3d | 2019-06-17 | 2019-06-19 | 6 |  |  |  | finish no earlier than 2019-06-19 |  |  |  |  | 100% |  |  |
| 10 | 1.1.8 | 处理分辨率不兼容的问题 | manual | 0.88d? | 2019-06-18 | 2019-06-18 |  |  |  |  | finish no earlier than 2019-06-18 |  |  |  |  | 10% |  |  |
| 11 | 1.1.9 | 功能测试 | manual | 6d | 2019-06-06 | 2019-06-13 |  |  |  |  |  | 杜振兴; 高祥云 | 96h |  | 测试用例 | 90% |  |  |
| 12 | 1.1.10 | 功能部署上线 | manual | 5d | 2019-06-07 | 2019-06-13 |  |  |  |  |  | 杜振兴; 高祥云 | 80h |  |  | 90% |  | 需求增加现金流和人力部分 |
| 13 | 1.2 | **基础经营指标分析** |  | 7.88d? | 2019-06-10 A | 2019-06-18 |  | 21% | 6.22d? | 0d |  |  | 80h | 32h |  |  |  |  |
| 14 | 1.2.1 | 用户需求/需求分析 | manual | 1d | 2019-06-10 A | 2019-06-10 A |  | 100% |  |  |  | 高祥云; 罗加云 | 16h | 16h | 需求分析文档,bi详细设计,概要设计文档 | 100% | 2019年6月10日 |  |
| 15 | 1.2.2 | 方案设计/Demo展示 | manual | 1d | 2019-06-11 A | 2019-06-11 A |  | 100% |  |  |  | 高祥云; 罗加云 | 16h | 16h |  | 100% |  |  |
| 16 | 1.2.3 | 功能开发 | manual | 1d | 2019-06-12 | 2019-06-12 |  |  |  |  |  | 高祥云; 罗加云 | 16h |  |  | 100% |  |  |
| 17 | 1.2.4 | 合同总额功能开发 | manual | 0.88d? | 2019-06-12 | 2019-06-12 |  |  |  |  | finish no earlier than 2019-06-12 |  |  |  |  | 100% |  |  |
| 18 | 1.2.5 | 业绩总额功能开发 | manual | 0.88d? | 2019-06-12 | 2019-06-12 |  |  |  |  | finish no earlier than 2019-06-12 |  |  |  |  | 100% |  |  |
| 19 | 1.2.6 | 回款功能开发 | manual | 0.88d? | 2019-06-12 | 2019-06-12 |  |  |  |  | finish no earlier than 2019-06-12 |  |  |  |  | 100% |  |  |
| 20 | 1.2.7 | 功能测试 | manual | 1d | 2019-06-13 | 2019-06-13 |  |  |  |  |  | 杜振兴; 高祥云 | 16h |  | 测试用例 | 90% |  |  |
| 21 | 1.2.8 | 修改页面布局及样式 | manual | 1.88d? | 2019-06-17 | 2019-06-18 |  |  |  |  | finish no earlier than 2019-06-18 |  |  |  |  | 100% |  |  |
| 22 | 1.2.9 | 功能部署上线 | manual | 1d | 2019-06-14 | 2019-06-14 |  |  |  |  |  | 杜振兴; 高祥云 | 16h |  |  | 100% |  |  |
| 23 | 1.3 | **损益表** |  | 7.88d | 2019-06-13 | 2019-06-21 |  |  |  | 0d |  |  | 112h |  |  |  |  |  |
| 24 | 1.3.1 | 用户需求/需求分析 | manual | 3d | 2019-06-13 | 2019-06-17 |  |  |  |  |  | 高祥云; 罗加云 | 48h |  | 需求分析文档，bi详细设计,概要设计文档 | 100% | 2019年6月12日 |  |
| 25 | 1.3.2 | 方案设计/Demo展示 | manual | 1d | 2019-06-18 | 2019-06-18 |  |  |  |  |  | 高祥云; 罗加云 | 16h |  |  | 100% |  |  |
| 26 | 1.3.3 | 功能开发 | manual | 1d | 2019-06-19 | 2019-06-19 |  |  |  |  |  | 高祥云; 罗加云 | 16h |  |  |  |  |  |
| 27 | 1.3.4 | 功能测试 | manual | 1d | 2019-06-20 | 2019-06-20 |  |  |  |  |  | 杜振兴; 高祥云 | 16h |  | 测试用例 |  |  |  |
| 28 | 1.3.5 | 功能部署上线 | manual | 1d | 2019-06-21 | 2019-06-21 |  |  |  |  |  | 杜振兴; 高祥云 | 16h |  | 概要设计文档 |  |  |  |

Notes:
- 6: 在chrome上1080P有较好适应，ie下仍有问题
- 7: 岗位人数，在岗，空岗，总人数
- 11: 周三中午新的ui样式上线
- 12: 需求增加人力资源和现金流部分
- 16: 由于方案尚未彻底敲定，现按照中间版本进行开发
- 18: 业绩漏斗昨天确定
- 19: 回款漏斗换成环形图

| ID | WBS | Task | Type | Duration | Start | Finish | Complete | Remaining | Total slack | Constraint | Resources | Work | Actual work | 交付物 | 交付时间 | 进度 |
| --- | --- | --- | --- | --- | --- | --- | --- | --- | --- | --- | --- | --- | --- | --- | --- | --- |
| 29 | 1.4 | **资产负债表** |  | 4.88d | 2019-06-24 | 2019-06-28 |  |  | 0d |  |  | 144h |  |  |  |  |
| 30 | 1.4.1 | 用户需求/需求分析 | manual | 3d | 2019-06-24 | 2019-06-26 |  |  |  |  | 高祥云; 罗加云 | 48h |  | 需求分析文档，bi详细设计,概要设计文档 | 2019年6月20日 |  |
| 31 | 1.4.2 | 方案设计/Demo展示 | manual | 3d | 2019-06-24 | 2019-06-26 |  |  |  |  | 高祥云; 罗加云 | 48h |  |  |  |  |
| 32 | 1.4.3 | 功能开发 | manual | 1d | 2019-06-26 | 2019-06-26 |  |  |  |  | 高祥云; 罗加云 | 16h |  |  |  |  |
| 33 | 1.4.4 | 功能测试 | manual | 1d | 2019-06-27 | 2019-06-27 |  |  |  |  | 杜振兴; 高祥云 | 16h |  | 测试用例 |  |  |
| 34 | 1.4.5 | 功能部署上线 | manual | 1d | 2019-06-28 | 2019-06-28 |  |  |  |  | 杜振兴; 高祥云 | 16h |  |  |  |  |
| 35 | 1.5 | **现金流量表** |  | 6.88d | 2019-06-27 | 2019-07-05 |  |  | 0d |  |  | 112h |  |  |  |  |
| 36 | 1.5.1 | 用户需求/需求分析 | manual | 3d | 2019-06-27 | 2019-07-01 |  |  |  |  | 高祥云; 罗加云 | 48h |  | 需求分析文档，bi详细设计,概要设计文档 | 2019年6月27日 |  |
| 37 | 1.5.2 | 方案设计/Demo展示 | manual | 1d | 2019-07-02 | 2019-07-02 |  |  |  |  | 高祥云; 罗加云 | 16h |  |  |  |  |
| 38 | 1.5.3 | 功能开发 | manual | 1d | 2019-07-03 | 2019-07-03 |  |  |  |  | 高祥云; 罗加云 | 16h |  |  |  |  |
| 39 | 1.5.4 | 功能测试 | manual | 1d | 2019-07-04 | 2019-07-04 |  |  |  |  | 杜振兴; 高祥云 | 16h |  | 测试用例 |  |  |
| 40 | 1.5.5 | 功能部署上线 | manual | 1d | 2019-07-05 | 2019-07-05 |  |  |  |  | 杜振兴; 高祥云 | 16h |  | 概要设计文档 |  |  |
| 41 | 1.6 | **销售项目分析+行业业绩统计** |  | 6.88d | 2019-07-04 | 2019-07-12 |  |  | 0d |  |  | 112h |  |  |  |  |
| 42 | 1.6.1 | 用户需求/需求分析 | manual | 3d | 2019-07-04 | 2019-07-08 |  |  |  |  | 高祥云; 罗加云 | 48h |  | 需求分析文档，bi详细设计 | 2019年7月4日 |  |
| 43 | 1.6.2 | 方案设计/Demo展示 | manual | 1d | 2019-07-09 | 2019-07-09 |  |  |  |  | 高祥云; 罗加云 | 16h |  |  |  |  |
| 44 | 1.6.3 | 功能开发 | manual | 1d | 2019-07-10 | 2019-07-10 |  |  |  |  | 高祥云; 罗加云 | 16h |  |  |  |  |
| 45 | 1.6.4 | 功能测试 | manual | 1d | 2019-07-11 | 2019-07-11 |  |  |  |  | 杜振兴; 高祥云 | 16h |  | 测试用例 |  |  |
| 46 | 1.6.5 | 功能部署上线 | manual | 1d | 2019-07-12 | 2019-07-12 |  |  |  |  | 杜振兴; 高祥云 | 16h |  | 概要设计文档 |  |  |
| 47 | 1.7 | **工程项目分析/售后400分析/+确认收入统计** |  | 5d? | 2019-06-18 A | 2019-06-25 | 50% | 2.51d? | 69.88d |  |  | 260h | 117.69h |  |  |  |
| 48 | 1.7.1 | 用户需求/需求分析 | manual | 2d | 2019-06-18 A | 2019-06-19 A | 100% |  |  |  | 高祥云; 罗加云 | 32h | 32h | 需求分析文档，bi详细设计 |  | 100% |
| 49 | 1.7.2 | **方案设计/Demo展示** |  | 1.88d | 2019-06-19 A | 2019-06-20 A | 100% |  |  |  | 高祥云; 罗加云 | 70h | 70h |  |  | 100% |
| 50 | 1.7.2.1 | exceldemo原型 | manual | 1d | 2019-06-19 A | 2019-06-20 A | 100% |  |  |  | 高祥云 | 8h | 8h | exceldemo原型 |  | 100% |
| 51 | 1.7.2.2 | 根据需求进行数据建模 | manual | 1d | 2019-06-19 A | 2019-06-20 A | 100% |  |  | start no earlier than 2019-06-19 | 罗加云 | 8h | 8h |  |  | 100% |
| 52 | 1.7.2.3 | exceldemo原型问题分析及修改 | manual | 1d | 2019-06-19 A | 2019-06-20 A | 100% |  |  |  | 高祥云 | 8h | 8h |  |  | 100% |
| 53 | 1.7.2.4 | 测试数据插入 | manual | 1d | 2019-06-20 A | 2019-06-20 A | 100% |  |  | finish no earlier than 2019-06-20 | 杜振兴 | 8h | 8h |  |  | 100% |
| 54 | 1.7.2.5 | bi或report初版页面 | manual | 1d | 2019-06-20 A | 2019-06-20 A | 100% |  |  |  | 杜振兴 | 8h | 8h |  |  | 100% |

Notes:
- 48: 需要拿到页面数据将从哪里来，用于数据确认阶段及测试阶段，确认维度量级，以便页面展示数据的多少的确认。/ 1.确认指标维度/ 2.确认指标维度是否够用，重要级进行排序
- 50: 方案设计：exceldemo原型

| ID | WBS | Task | Type | Duration | Start | Finish | Complete | Remaining | Total slack | Constraint | Resources | Work | Actual work | 交付物 | 进度 | 交付时间 |
| --- | --- | --- | --- | --- | --- | --- | --- | --- | --- | --- | --- | --- | --- | --- | --- | --- |
| 55 | 1.7.3 | **功能开发** |  | 2.88d? | 2019-06-20 A | 2019-06-24 | 15% | 2.44d? | 0d |  | 高祥云; 罗加云 | 118h | 15.69h | 概要设计文档 |  |  |
| 56 | 1.7.3.1 | 进行初版页面的问题跟踪 | manual | 0.88d? | 2019-06-21 | 2019-06-21 |  |  |  | finish no earlier than 2019-06-21 | 杜振兴; 高祥云 | 14h |  |  | 100% |  |
| 57 | 1.7.3.2 | etl数据确认 | manual | 0.88d? | 2019-06-20 A | 2019-06-20 | 75% | 0.22d? |  | start no earlier than 2019-06-20 | 罗加云 | 7h | 5.25h |  | 95% |  |
| 58 | 1.7.3.3 | 如有问题，问题解决方案 | manual | 0.88d? | 2019-06-21 | 2019-06-21 |  |  |  | finish no earlier than 2019-06-21 | 杜振兴; 高祥云 | 14h |  |  | 100% |  |
| 59 | 1.7.3.4 | 页面原型再版 | manual | 1.88d? | 2019-06-21 | 2019-06-24 |  |  |  | finish no earlier than 2019-06-24 | 杜振兴 | 15h |  |  | 90% |  |
| 60 | 1.7.3.5 | etl数据抽取转换 | manual | 1d | 2019-06-21 A | 2019-06-21 | 44% | 0.56d |  | finish no earlier than 2019-06-21 | 罗加云 | 8h | 3.5h |  | 95% |  |
| 61 | 1.7.3.6 | 页面原型在版迭代 | manual | 0.88d? | 2019-06-24 | 2019-06-24 |  |  |  | finish no earlier than 2019-06-24 | 杜振兴 | 7h |  |  |  |  |
| 62 | 1.7.3.7 | etl数据抽取转换迭代 | manual | 0.88d? | 2019-06-24 | 2019-06-24 |  |  |  | finish no earlier than 2019-06-24 | 罗加云 | 7h |  |  |  |  |
| 63 | 1.7.4 | **功能测试** |  | 1d? | 2019-06-24 | 2019-06-25 |  |  | 69.88d |  | 杜振兴; 高祥云 | 40h |  | 测试用例 |  |  |
| 64 | 1.7.4.1 | 页面逻辑确认 |  | 1d? | 2019-06-24 | 2019-06-25 |  |  | 69.88d | start no earlier than 2019-06-24 | 杜振兴 | 8h |  |  |  |  |
| 65 | 1.7.4.2 | 页面数据确认 |  | 1d? | 2019-06-24 | 2019-06-25 |  |  | 69.88d | start no earlier than 2019-06-24 | 杜振兴; 罗加云 | 16h |  |  |  |  |
| 66 | 1.7.5 | 功能部署上线 | milestone, manual | 0d | 2019-06-25 | 2019-06-25 |  |  |  |  | 杜振兴; 高祥云 |  |  | 概要设计文档 |  |  |
| 67 | 1.8 | **员工结构分析/员工流动分析/薪酬分析** |  | 6d | 2019-06-25 | 2019-07-02 |  |  |  |  |  | 80h |  |  |  |  |
| 68 | 1.8.1 | 用户需求/需求分析 |  | 1d? | 2019-06-25 | 2019-06-26 |  |  | 68.88d | start no earlier than 2019-06-25 |  |  |  |  | 50% |  |
| 69 | 1.8.2 | **方案设计/Demo展示** |  | 1d? | 2019-06-25 | 2019-06-26 |  |  | 4.88d |  |  |  |  |  |  |  |
| 70 | 1.8.2.1 | exceldemo原型 |  | 1d? | 2019-06-25 | 2019-06-26 |  |  | 4.88d |  |  |  |  |  |  |  |
| 71 | 1.8.2.2 | 根据需求进行数据建模 |  | 1d? | 2019-06-25 | 2019-06-26 |  |  | 4.88d |  |  |  |  |  |  |  |
| 72 | 1.8.2.3 | exceldemo原型问题分析及修改 |  | 1d? | 2019-06-25 | 2019-06-26 |  |  | 4.88d |  |  |  |  |  |  |  |
| 73 | 1.8.2.4 | 测试数据插入 |  | 1d? | 2019-06-25 | 2019-06-26 |  |  | 4.88d |  |  |  |  |  |  |  |
| 74 | 1.8.2.5 | bi或report初版页面 |  | 1d? | 2019-06-25 | 2019-06-26 |  |  | 4.88d |  |  |  |  |  |  |  |
| 75 | 1.8.3 | **功能开发** |  | 3.88d? | 2019-06-25 | 2019-06-28 |  |  | 1d |  |  | 32h |  |  |  |  |
| 76 | 1.8.3.1 | 进行初版页面的问题跟踪 |  | 1d? | 2019-06-25 | 2019-06-26 |  |  | 4.88d |  |  |  |  |  |  |  |
| 77 | 1.8.3.2 | etl数据确认 |  | 1d? | 2019-06-25 | 2019-06-26 |  |  | 4.88d |  |  |  |  |  |  |  |
| 78 | 1.8.3.3 | 如有问题，问题解决方案 | manual | 2d | 2019-06-26 | 2019-06-27 |  |  |  |  | 高祥云; 罗加云 | 32h |  | 需求分析文档，bi详细设计 |  | 2019年7月18日 |
| 79 | 1.8.3.4 | 页面原型再版 |  | 1d? | 2019-06-27 | 2019-06-27 |  |  | 3d | finish no earlier than 2019-06-27 |  |  |  |  |  |  |
| 80 | 1.8.3.5 | etl数据抽取转换 |  | 1.88d? | 2019-06-27 | 2019-06-28 |  |  | 2d | finish no earlier than 2019-06-28 |  |  |  |  |  |  |
| 81 | 1.8.3.6 | 页面原型在版迭代 |  | 1d? | 2019-06-27 | 2019-06-28 |  |  | 2.88d | start no earlier than 2019-06-27 |  |  |  |  |  |  |
| 82 | 1.8.3.7 | etl数据抽取转换迭代 |  | 1d? | 2019-06-27 | 2019-06-28 |  |  | 2.88d | start no earlier than 2019-06-27 |  |  |  |  |  |  |

| ID | WBS | Task | Type | Duration | Start | Finish | Total slack | Constraint | Resources | Work | 交付物 | 交付时间 |
| --- | --- | --- | --- | --- | --- | --- | --- | --- | --- | --- | --- | --- |
| 83 | 1.8.4 | **功能测试** |  | 1d | 2019-07-23 | 2019-07-23 |  |  | 高祥云; 罗加云 | 32h |  |  |
| 84 | 1.8.4.1 | 页面逻辑确认 |  | 1d? | 2019-07-01 | 2019-07-02 | 64.88d | start no earlier than 2019-07-01 |  |  |  |  |
| 85 | 1.8.4.2 | 页面数据确认 | manual | 1d | 2019-07-01 | 2019-07-02 |  |  | 高祥云; 罗加云 | 16h |  |  |
| 86 | 1.8.5 | 功能部署上线 | manual | 1d | 2019-07-01 | 2019-07-02 |  |  | 杜振兴; 高祥云 | 16h |  |  |
| 87 | 1.9 | **考勤分析/研发部门工作量统计/过程规范性得分统计** |  | 47.88d | 2019-07-25 | 2019-09-30 | 0d |  |  | 1328h |  |  |
| 88 | 1.9.1 | 用户需求/需求分析 | manual | 3d | 2019-07-25 | 2019-07-29 |  |  | 高祥云; 罗加云 | 48h | 需求分析文档，bi详细设计 |  |
| 89 | 1.9.2 | 方案设计/Demo展示 | manual | 1d | 2019-07-30 | 2019-07-30 |  |  | 高祥云; 罗加云 | 16h |  |  |
| 90 | 1.9.3 | 功能开发 | manual | 1d | 2019-07-31 | 2019-07-31 |  |  | 高祥云; 罗加云 | 16h |  |  |
| 91 | 1.9.4 | 功能测试 | manual | 1d | 2019-08-01 | 2019-08-01 |  |  | 杜振兴; 高祥云 | 16h | 测试用例 |  |
| 92 | 1.9.5 | 功能部署上线 | manual | 1d | 2019-08-02 | 2019-08-02 |  |  | 杜振兴; 高祥云 | 16h | 概要设计文档 |  |
| 93 | 1.9.6 | **过程资产提交率统计/项目类采购分析** |  | 6.88d | 2019-08-01 | 2019-08-09 | 0d |  |  | 112h |  |  |
| 94 | 1.9.6.1 | 用户需求/需求分析 | manual | 3d | 2019-08-01 | 2019-08-05 |  |  | 高祥云; 罗加云 | 48h | 需求分析文档，bi详细设计 | 2019年8月5日 |
| 95 | 1.9.6.2 | 方案设计/Demo展示 | manual | 1d | 2019-08-06 | 2019-08-06 |  |  | 高祥云; 罗加云 | 16h |  |  |
| 96 | 1.9.6.3 | 功能开发 | manual | 1d | 2019-08-07 | 2019-08-07 |  |  | 高祥云; 罗加云 | 16h |  |  |
| 97 | 1.9.6.4 | 功能测试 | manual | 1d | 2019-08-08 | 2019-08-08 |  |  | 杜振兴; 高祥云 | 16h | 测试用例 |  |
| 98 | 1.9.6.5 | 功能部署上线 | manual | 1d | 2019-08-09 | 2019-08-09 |  |  | 杜振兴; 高祥云 | 16h | 概要设计文档 |  |
| 99 | 1.9.7 | **报表性能/页面交互调优** |  | 5.88d | 2019-08-12 | 2019-08-19 | 0d |  |  | 144h |  |  |
| 100 | 1.9.7.1 | 报表性能/页面交互调优 | manual | 6d | 2019-08-12 | 2019-08-19 |  |  | 杜振兴; 高祥云; 罗加云 | 144h |  |  |
| 101 | 1.9.8 | **甲方验收（第一轮）** |  | 9.88d | 2019-08-12 | 2019-08-24 | 0d |  |  | 264h |  |  |
| 102 | 1.9.8.1 | 甲方验收（第一轮） | manual | 11d | 2019-08-12 | 2019-08-24 |  |  | 杜振兴; 高祥云; 罗加云 | 264h |  |  |
| 103 | 1.9.9 | **甲方验收（第二轮）** |  | 5d | 2019-08-24 | 2019-08-31 | 0d |  |  | 168h |  |  |
| 104 | 1.9.9.1 | 甲方验收（第二轮） | manual | 7d | 2019-08-24 | 2019-08-31 |  |  | 杜振兴; 高祥云; 罗加云 | 168h |  |  |
| 105 | 1.9.10 | **远程支持客户需求** |  | 21d | 2019-09-01 | 2019-09-30 | 0d |  |  | 528h |  |  |
| 106 | 1.9.10.1 | 远程支持客户需求 | manual | 22d | 2019-09-01 | 2019-09-30 |  |  | 杜振兴; 高祥云; 罗加云 | 528h |  |  |

| ID | WBS | Task | Type | Duration | Start | Finish | Total slack | Constraint | Resources | Work | 交付物 | 进度 | 交付时间 |
| --- | --- | --- | --- | --- | --- | --- | --- | --- | --- | --- | --- | --- | --- |
| 108 | 2 | **YJTXT_APP_V2.0R** |  | 55.88d? | 2019-06-03 | 2019-08-16 | 0d |  |  | 431h |  |  |  |
| 109 | 2.1 | **客户接待** |  | 16.88d? | 2019-06-03 | 2019-06-24 | 0d |  |  | 119h |  |  |  |
| 110 | 2.1.1 | 用户需求/需求分析 | manual | 2d | 2019-06-03 | 2019-06-04 |  |  | 陈子瑶 | 16h | 需求分析文档 | 100% | 2019年6月5日 |
| 111 | 2.1.2 | 方案设计 | manual | 1d | 2019-06-05 | 2019-06-05 |  |  | 陈子瑶 | 8h | 详细设计文档/概要设计文档/接口设计文档 | 100% |  |
| 112 | 2.1.3 | 功能开发 | manual | 9d | 2019-06-06 | 2019-06-18 |  |  | 陈子瑶 | 72h | 测试用例 | 90% |  |
| 113 | 2.1.4 | 单元测试 | manual | 1d | 2019-06-19 | 2019-06-19 |  |  | 陈子瑶 | 8h | 单元测试报告 | 90% |  |
| 114 | 2.1.5 | **集成测试** |  | 0.88d? | 2019-06-21 | 2019-06-21 |  |  | 陈子瑶 | 7h | 集成测试报告 |  |  |
| 115 | 2.1.5.1 | bug调试 |  | 0.88d? | 2019-06-21 | 2019-06-23 | 71d | finish no earlier than 2019-06-23 |  |  |  | 90% |  |
| 116 | 2.1.5.2 | 页面调整美化 |  | 0.88d? | 2019-06-21 | 2019-06-21 | 71d | finish no earlier than 2019-06-21 |  |  |  | 90% |  |
| 117 | 2.1.6 | 功能部署上线 | manual | 1d | 2019-06-24 | 2019-06-24 |  |  | 陈子瑶 | 8h |  | 90% |  |
| 118 | 2.2 | **考勤打卡** |  | 16.88d | 2019-06-03 | 2019-06-24 | 0d |  |  | 136h |  |  |  |
| 119 | 2.2.1 | 用户需求/需求分析 | manual | 2d | 2019-06-03 | 2019-06-04 |  |  | JAVA团队 | 16h | 需求分析文档 | 100% | 2019年6月5日 |
| 120 | 2.2.2 | 方案设计 | manual | 1d | 2019-06-05 | 2019-06-05 |  |  | JAVA团队 | 8h | 详细设计文档/概要设计文档/接口设计文档 | 100% |  |
| 121 | 2.2.3 | 功能开发 | manual | 9d | 2019-06-06 | 2019-06-18 |  |  | JAVA团队 | 72h | 测试用例 | 100% |  |
| 122 | 2.2.4 | 单元测试 | manual | 1d | 2019-06-19 | 2019-06-19 |  |  | JAVA团队 | 8h | 单元测试报告 | 90% |  |
| 123 | 2.2.5 | **集成测试** |  | 3d | 2019-06-20 | 2019-06-24 |  |  | JAVA团队 | 24h | 集成测试报告 |  |  |
| 124 | 2.2.5.1 | 用户测试 |  | 1d? | 2019-06-24 | 2019-06-24 | 70d | finish no earlier than 2019-06-24 |  |  |  | 90% |  |
| 125 | 2.2.5.2 | bug调整 |  | 1d? | 2019-06-21 | 2019-06-23 | 71d | finish no earlier than 2019-06-23 |  |  |  | 90% |  |
| 126 | 2.2.6 | 功能部署上线 | manual | 1d | 2019-06-24 | 2019-06-24 |  |  | JAVA团队 | 8h |  |  |  |
| 127 | 2.3 | **出差公出报备** |  | 18.88d | 2019-06-03 | 2019-06-26 | 0d |  |  | 176h |  |  |  |
| 128 | 2.3.1 | 用户需求/需求分析 | manual | 2d | 2019-06-03 | 2019-06-04 |  |  | 王晓旭 | 16h | 需求分析文档 | 100% | 2019年6月5日 |
| 129 | 2.3.2 | 方案设计 | manual | 1d | 2019-06-05 | 2019-06-05 |  |  | 王晓旭 | 8h | 详细设计文档/概要设计文档/接口设计文档 | 100% |  |
| 130 | 2.3.3 | 功能开发 | manual | 16d | 2019-06-06 | 2019-06-26 |  |  | 王晓旭 | 128h | 测试用例 | 65% |  |
| 131 | 2.3.4 | 单元测试 | manual | 1d | 2019-06-19 | 2019-06-19 |  |  | 王晓旭 | 8h | 单元测试报告 |  |  |
| 132 | 2.3.5 | 集成测试 | manual | 1d | 2019-06-20 | 2019-06-20 |  |  | 王晓旭 | 8h | 集成测试报告 |  |  |
| 133 | 2.3.6 | 功能部署上线 | manual | 1d | 2019-06-21 | 2019-06-21 |  |  | 王晓旭 | 8h |  |  |  |

| ID | WBS | Task | Type | Duration | Start | Finish | Total slack | 交付物 | 进度 |
| --- | --- | --- | --- | --- | --- | --- | --- | --- | --- |
| 134 | 2.4 | **日报管理** |  | 15.88d | 2019-06-28 | 2019-07-19 | 0d |  |  |
| 135 | 2.4.1 | 用户需求/需求分析 | manual | 3d | 2019-06-28 | 2019-07-02 |  | 需求分析文档 | 50% |
| 136 | 2.4.2 | 方案设计 | manual | 3d | 2019-07-02 | 2019-07-04 |  | 详细设计文档/概要设计文档/接口设计文档 |  |
| 137 | 2.4.3 | 功能开发 | manual | 7d | 2019-07-04 | 2019-07-12 |  | 测试用例 |  |
| 138 | 2.4.4 | 单元测试 | manual | 2d | 2019-07-15 | 2019-07-16 |  | 单元测试报告 |  |
| 139 | 2.4.5 | 集成测试 | manual | 2d | 2019-07-17 | 2019-07-18 |  | 集成测试报告 |  |
| 140 | 2.4.6 | 功能部署上线 | manual | 2d | 2019-07-18 | 2019-07-19 |  |  |  |
| 141 | 2.5 | **待办列表** |  | 9.88d | 2019-07-22 | 2019-08-02 | 0d |  |  |
| 142 | 2.5.1 | 用户需求/需求分析 | manual | 2d | 2019-07-22 | 2019-07-23 |  | 需求分析文档 |  |
| 143 | 2.5.2 | 方案设计 | manual | 1d | 2019-07-24 | 2019-07-24 |  | 详细设计文档/概要设计文档/接口设计文档 |  |
| 144 | 2.5.3 | 功能开发 | manual | 4d | 2019-07-25 | 2019-07-30 |  | 测试用例 |  |
| 145 | 2.5.4 | 单元测试 | manual | 1d | 2019-07-31 | 2019-07-31 |  | 单元测试报告 |  |
| 146 | 2.5.5 | 集成测试 | manual | 1d | 2019-08-01 | 2019-08-01 |  | 集成测试报告 |  |
| 147 | 2.5.6 | 功能部署上线 | manual | 1d | 2019-08-02 | 2019-08-02 |  |  |  |
| 148 | 2.6 | **考勤明细** |  | 4.88d | 2019-08-05 | 2019-08-09 | 0d |  |  |
| 149 | 2.6.1 | 用户需求/需求分析 | manual | 1d | 2019-08-05 | 2019-08-05 |  | 需求分析文档 |  |
| 150 | 2.6.2 | 方案设计 | manual | 1d | 2019-08-05 | 2019-08-05 |  | 详细设计文档/概要设计文档/接口设计文档 |  |
| 151 | 2.6.3 | 功能开发 | manual | 2d | 2019-08-06 | 2019-08-07 |  | 测试用例 |  |
| 152 | 2.6.4 | 单元测试 | manual | 1d | 2019-08-08 | 2019-08-08 |  | 单元测试报告 |  |
| 153 | 2.6.5 | 集成测试 | manual | 1d | 2019-08-08 | 2019-08-08 |  | 集成测试报告 |  |
| 154 | 2.6.6 | 功能部署上线 | manual | 1d | 2019-08-09 | 2019-08-09 |  |  |  |
| 155 | 2.7 | **假期管理** |  | 55.88d | 2019-06-03 | 2019-08-16 | 0d |  |  |
| 156 | 2.7.1 | 用户需求/需求分析 | manual | 1d | 2019-08-12 | 2019-08-12 |  | 需求分析文档 |  |
| 157 | 2.7.2 | 方案设计 | manual | 1d | 2019-08-12 | 2019-08-12 |  | 详细设计文档/概要设计文档/接口设计文档 |  |
| 158 | 2.7.3 | 功能开发 | manual | 2d | 2019-08-13 | 2019-08-14 |  | 测试用例 |  |
| 159 | 2.7.4 | 单元测试 | manual | 1d | 2019-08-15 | 2019-08-15 |  | 单元测试报告 |  |
| 160 | 2.7.5 | 集成测试 | manual | 1d | 2019-08-15 | 2019-08-15 |  | 集成测试报告 |  |
| 161 | 2.7.6 | 功能部署上线 | manual | 1d | 2019-08-16 | 2019-08-16 |  |  |  |

| ID | WBS | Task | Type | Duration | Start | Finish | Total slack |
| --- | --- | --- | --- | --- | --- | --- | --- |
| 162 | 2.7.7 | **置换功能** |  | 1d | 2019-06-03 | 2019-06-04 | 0d |
| 163 | 2.7.7.1 | 用户需求/需求分析 | manual | 1d | 2019-06-03 | 2019-06-04 |  |
| 164 | 2.7.7.2 | 方案设计 | manual | 1d | 2019-06-03 | 2019-06-04 |  |
| 165 | 2.7.7.3 | 功能开发 | manual | 1d | 2019-06-03 | 2019-06-04 |  |
| 166 | 2.7.7.4 | 单元测试 | manual | 1d | 2019-06-03 | 2019-06-04 |  |
| 167 | 2.7.7.5 | 集成测试 | manual | 1d | 2019-06-03 | 2019-06-04 |  |
| 168 | 2.7.7.6 | 功能部署上线 | manual | 1d | 2019-06-03 | 2019-06-04 |  |
| 169 | 2.7.8 | **甲方验收（第一轮）** |  | 1d | 2019-06-03 | 2019-06-04 | 0d |
| 170 | 2.7.8.1 | 甲方验收（第一轮） | manual | 1d | 2019-06-03 | 2019-06-04 |  |
| 171 | 2.7.9 | **甲方验收（第二轮）** |  | 1d | 2019-06-03 | 2019-06-04 | 0d |
| 172 | 2.7.9.1 | 甲方验收（第二轮） | manual | 1d | 2019-06-03 | 2019-06-04 |  |
