Schedule from MS Project, 2019-06-03 to 2019-10-30, A marks actual dates.
Microsoft

## Calendars

- 标准: Mon-Fri 08:00-12:00, 13:00-17:00; Sat-Sun off. Exceptions (off unless hours are given): 2019-06-15 08:00-12:00, 13:00-17:00.

## Resources

| Resource |
| --- |
| 高祥云 |
| 罗加云 |
| 杜振兴 |
| 陈子瑶 |
| 李龙 |
| JAVA团队 |
| 王晓旭 |

## Schedule

| ID | WBS | Task | Type | Duration | Start | Finish | Predecessors | Complete | Remaining | Constraint | Resources | Work | Actual work | 进度 | 交付物 | 交付时间 | Text5 |
| --- | --- | --- | --- | --- | --- | --- | --- | --- | --- | --- | --- | --- | --- | --- | --- | --- | --- |
| 1 | 1 | **YJTXT_BI_V2.0R** |  | 87d | 2019-06-03 A | 2019-09-30 |  | 5% | 83.04d |  |  | 3040h | 181.31h |  |  |  |  |
| 2 | 1.1 | **总裁驾驶舱DEMO上线** |  | 30d | 2019-06-03 A | 2019-07-11 |  | 8% | 27.6d |  |  | 224h | 32h | 100% |  |  |  |
| 3 | 1.1.1 | 用户需求/需求分析 | manual | 1d | 2019-06-03 A | 2019-06-03 A |  | 100% |  |  | 杜振兴; 高祥云 | 16h | 16h | 100% | 需求分析文档,详细设计文档,概要设计文档 | 2019年6月5日 |  |
| 4 | 1.1.2 | 方案设计/Demo展示 | manual | 1d | 2019-06-04 | 2019-06-04 |  |  |  |  | 杜振兴; 高祥云 | 16h |  | 100% |  |  |  |
| 5 | 1.1.3 | 功能开发 | manual | 1d | 2019-06-05 A | 2019-06-05 A |  | 100% |  |  | 杜振兴; 高祥云 | 16h | 16h | 100% |  |  |  |
| 6 | 1.1.4 | 页面自适应问题解决 | manual | 1d | 2019-06-15 | 2019-06-17 |  |  |  | start no earlier than 2019-06-15 |  |  |  | 100% |  |  |  |
| 7 | 1.1.5 | 人力数据展示(总规划人数取不到暂时用假数据代替) | manual | 1d | 2019-06-15 | 2019-06-17 |  |  |  | finish no earlier than 2019-06-15 |  |  |  | 100% |  |  |  |
| 8 | 1.1.6 | 现金流量展示三个指标的数据（该数据同样无法取得） | manual | 1d | 2019-06-15 | 2019-06-17 |  |  |  | start no earlier than 2019-06-15 |  |  |  | 100% |  |  |  |
| 9 | 1.1.7 | 页面ui风格的处理 | manual | 3d | 2019-06-17 | 2019-06-20 | 6 |  |  |  |  |  |  | 100% |  |  |  |
| 10 | 1.1.8 | 处理分辨率不兼容的问题 | manual | 1d | 2019-06-18 | 2019-06-19 |  |  |  | finish no earlier than 2019-06-18 |  |  |  | 100% |  |  |  |
| 11 | 1.1.9 | 功能测试 | manual | 6d | 2019-06-06 | 2019-06-13 |  |  |  |  | 杜振兴; 高祥云 | 96h |  | 100% | 测试用例，测试报告 | 2019年6月13号 |  |
| 12 | 1.1.10 | 功能部署上线 | manual | 5d | 2019-06-07 | 2019-06-13 |  |  |  |  | 杜振兴; 高祥云 | 80h |  | 100% |  |  | 需求增加现金流和人力部分 |
| 13 | 1.1.11 | 修改联动问题 | manual | 4d | 2019-07-08 | 2019-07-11 |  |  |  | finish no earlier than 2019-07-09 |  |  |  | 100% |  |  |  |
| 14 | 1.2 | **基础经营指标分析** |  | 26d | 2019-06-10 A | 2019-07-12 |  | 13% | 22.53d |  |  | 80h | 32h | 100% |  |  |  |
| 15 | 1.2.1 | 用户需求/需求分析 | manual | 1d | 2019-06-10 A | 2019-06-10 A |  | 100% |  |  | 高祥云; 罗加云 | 16h | 16h | 100% | 需求分析文档,详细设计文档,概要设计文档 | 2019年6月10日 |  |
| 16 | 1.2.2 | 方案设计/Demo展示 | manual | 1d | 2019-06-11 A | 2019-06-11 A |  | 100% |  |  | 高祥云; 罗加云 | 16h | 16h | 100% |  |  |  |
| 17 | 1.2.3 | 功能开发 | manual | 1d | 2019-06-12 | 2019-06-12 |  |  |  |  | 高祥云; 罗加云 | 16h |  | 100% |  |  |  |
| 18 | 1.2.4 | 合同总额功能开发 | manual | 1d | 2019-06-12 | 2019-06-13 |  |  |  | finish no earlier than 2019-06-12 |  |  |  | 100% |  |  |  |
| 19 | 1.2.5 | 业绩总额功能开发 | manual | 1d | 2019-06-12 | 2019-06-13 |  |  |  | finish no earlier than 2019-06-12 |  |  |  | 100% |  |  |  |
| 20 | 1.2.6 | 回款功能开发 | manual | 1d | 2019-06-12 | 2019-06-13 |  |  |  | finish no earlier than 2019-06-12 |  |  |  | 100% |  |  |  |
| 21 | 1.2.7 | 功能测试 | manual | 1d | 2019-06-13 | 2019-06-13 |  |  |  |  | 杜振兴; 高祥云 | 16h |  | 100% | 测试用例，测试报告 | 2019年6月13号 |  |
| 22 | 1.2.8 | 修改页面布局及样式 | manual | 2d | 2019-06-17 | 2019-06-19 |  |  |  | finish no earlier than 2019-06-18 |  |  |  | 100% |  |  |  |
| 23 | 1.2.9 | 功能部署上线 | manual | 1d | 2019-06-14 | 2019-06-14 |  |  |  |  | 杜振兴; 高祥云 | 16h |  | 100% |  |  |  |
| 24 | 1.2.10 | 修改权限问题 | manual | 5d | 2019-07-08 | 2019-07-12 |  |  |  | finish no earlier than 2019-07-10 |  |  |  | 100% |  |  |  |

Notes:
- 6: 在chrome上1080P有较好适应，ie下仍有问题
- 7: 岗位人数，在岗，空岗，总人数
- 11: 周三中午新的ui样式上线
- 12: 需求增加人力资源和现金流部分
- 17: 由于方案尚未彻底敲定，现按照中间版本进行开发
- 19: 业绩漏斗昨天确定
- 20: 回款漏斗换成环形图
- 24: 由于发现部分事业群分管领导所属为管理层，拿不到其相应的所属事业群

| ID | WBS | Task | Type | Duration | Start | Finish | Complete | Remaining | Constraint | Resources | Work | Actual work | 交付物 | 进度 | 交付时间 |
| --- | --- | --- | --- | --- | --- | --- | --- | --- | --- | --- | --- | --- | --- | --- | --- |
| 25 | 1.3 | **损益表** | inactive | 14d | 2019-06-24 | 2019-07-12 |  |  |  |  | 240h |  |  |  |  |
| 26 | 1.3.1 | 用户需求/需求分析 | inactive, manual | 4d | 2019-06-24 | 2019-06-27 |  |  |  | 高祥云; 罗加云 | 64h |  | 需求分析文档，bi详细设计,概要设计文档 | 100% | 2019年6月12日 |
| 27 | 1.3.2 | 方案设计/Demo展示 | inactive, manual | 4d | 2019-06-24 | 2019-06-27 |  |  |  | 高祥云; 罗加云 | 64h |  |  | 100% |  |
| 28 | 1.3.3 | 功能开发 | inactive, manual | 3d | 2019-07-03 | 2019-07-05 |  |  |  | 高祥云; 罗加云 | 48h |  |  |  |  |
| 29 | 1.3.4 | 功能测试 | inactive, manual | 3d | 2019-07-08 | 2019-07-10 |  |  |  | 杜振兴; 高祥云 | 48h |  | 测试用例 |  |  |
| 30 | 1.3.5 | 功能部署上线 | inactive, manual | 1d | 2019-07-11 | 2019-07-12 |  |  |  | 杜振兴; 高祥云 | 16h |  | 概要设计文档 |  |  |
| 31 | 1.4 | **资产负债表** | inactive | 5d | 2019-06-24 | 2019-06-28 |  |  |  |  | 144h |  |  |  |  |
| 32 | 1.4.1 | 用户需求/需求分析 | inactive, manual | 3d | 2019-06-24 | 2019-06-26 |  |  |  | 高祥云; 罗加云 | 48h |  | 需求分析文档，bi详细设计,概要设计文档 |  | 2019年6月20日 |
| 33 | 1.4.2 | 方案设计/Demo展示 | inactive, manual | 3d | 2019-06-24 | 2019-06-26 |  |  |  | 高祥云; 罗加云 | 48h |  |  |  |  |
| 34 | 1.4.3 | 功能开发 | inactive, manual | 1d | 2019-06-26 | 2019-06-26 |  |  |  | 高祥云; 罗加云 | 16h |  |  |  |  |
| 35 | 1.4.4 | 功能测试 | inactive, manual | 1d | 2019-06-27 | 2019-06-27 |  |  |  | 杜振兴; 高祥云 | 16h |  | 测试用例 |  |  |
| 36 | 1.4.5 | 功能部署上线 | inactive, manual | 1d | 2019-06-28 | 2019-06-28 |  |  |  | 杜振兴; 高祥云 | 16h |  |  |  |  |
| 37 | 1.5 | **现金流量表** | inactive | 7d | 2019-06-27 | 2019-07-05 |  |  |  |  | 112h |  |  |  |  |
| 38 | 1.5.1 | 用户需求/需求分析 | inactive, manual | 3d | 2019-06-27 | 2019-07-01 |  |  |  | 高祥云; 罗加云 | 48h |  | 需求分析文档，bi详细设计,概要设计文档 |  | 2019年6月27日 |
| 39 | 1.5.2 | 方案设计/Demo展示 | inactive, manual | 1d | 2019-07-02 | 2019-07-02 |  |  |  | 高祥云; 罗加云 | 16h |  |  |  |  |
| 40 | 1.5.3 | 功能开发 | inactive, manual | 1d | 2019-07-03 | 2019-07-03 |  |  |  | 高祥云; 罗加云 | 16h |  |  |  |  |
| 41 | 1.5.4 | 功能测试 | inactive, manual | 1d | 2019-07-04 | 2019-07-04 |  |  |  | 杜振兴; 高祥云 | 16h |  | 测试用例 |  |  |
| 42 | 1.5.5 | 功能部署上线 | inactive, manual | 1d | 2019-07-05 | 2019-07-05 |  |  |  | 杜振兴; 高祥云 | 16h |  | 概要设计文档 |  |  |
| 43 | 1.6 | **工程项目分析/售后400分析** |  | 19d | 2019-06-18 A | 2019-07-12 | 39% | 11.68d |  |  | 328h | 117.31h |  | 100% |  |
| 44 | 1.6.1 | 用户需求/需求分析 | manual | 2d | 2019-06-18 A | 2019-06-19 A | 100% |  |  | 高祥云; 罗加云 | 32h | 32h | 需求分析文档,详细设计文档,概要设计文档 | 100% | 2019年7月15日 |
| 45 | 1.6.2 | **方案设计/Demo展示** |  | 2d | 2019-06-19 A | 2019-06-21 | 99% | 0d |  | 高祥云; 罗加云 | 72h | 70h |  | 100% |  |
| 46 | 1.6.2.1 | exceldemo原型 | manual | 1d | 2019-06-19 A | 2019-06-20 A | 100% |  |  | 高祥云 | 8h | 8h |  | 100% |  |
| 47 | 1.6.2.2 | 根据需求进行数据建模 | manual | 1d | 2019-06-19 A | 2019-06-20 A | 100% |  | start no earlier than 2019-06-19 | 罗加云 | 8h | 8h |  | 100% |  |
| 48 | 1.6.2.3 | exceldemo原型问题分析及修改 | manual | 1d | 2019-06-19 A | 2019-06-20 A | 100% |  |  | 高祥云 | 8h | 8h |  | 100% |  |
| 49 | 1.6.2.4 | 测试数据插入 | manual | 1d | 2019-06-20 A | 2019-06-20 A | 100% |  | finish no earlier than 2019-06-20 | 杜振兴 | 8h | 8h |  | 100% |  |
| 50 | 1.6.2.5 | bi或report初版页面 | manual | 1d | 2019-06-20 A | 2019-06-20 A | 100% |  |  | 杜振兴 | 8h | 8h |  | 100% |  |

Notes:
- 44: 需要拿到页面数据将从哪里来，用于数据确认阶段及测试阶段，确认维度量级，以便页面展示数据的多少的确认。/ 1.确认指标维度/ 2.确认指标维度是否够用，重要级进行排序
- 46: 方案设计：exceldemo原型

| ID | WBS | Task | Type | Duration | Start | Finish | Complete | Remaining | Constraint | Resources | Work | Actual work | 进度 | 交付物 | 交付时间 |
| --- | --- | --- | --- | --- | --- | --- | --- | --- | --- | --- | --- | --- | --- | --- | --- |
| 51 | 1.6.3 | **功能开发** |  | 3d | 2019-06-20 A | 2019-06-25 | 14% | 2.59d |  | 高祥云; 罗加云 | 128h | 15.31h |  |  |  |
| 52 | 1.6.3.1 | 进行初版页面的问题跟踪 | manual | 1d | 2019-06-21 | 2019-06-24 |  |  | finish no earlier than 2019-06-21 | 杜振兴; 高祥云 | 16h |  | 100% |  |  |
| 53 | 1.6.3.2 | etl数据确认 | manual | 1d | 2019-06-20 A | 2019-06-21 | 66% | 0.34d | start no earlier than 2019-06-20 | 罗加云 | 8h | 5.25h | 100% |  |  |
| 54 | 1.6.3.3 | 如有问题，问题解决方案 | manual | 1d | 2019-06-21 | 2019-06-24 |  |  | finish no earlier than 2019-06-21 | 杜振兴; 高祥云 | 16h |  | 100% |  |  |
| 55 | 1.6.3.4 | 页面原型再版 | manual | 2d | 2019-06-21 | 2019-06-25 |  |  | finish no earlier than 2019-06-24 | 杜振兴 | 16h |  | 100% |  |  |
| 56 | 1.6.3.5 | etl数据抽取转换 | manual | 1d | 2019-06-21 A | 2019-06-21 | 44% | 0.56d | finish no earlier than 2019-06-21 | 罗加云 | 8h | 3.5h | 100% |  |  |
| 57 | 1.6.3.6 | 页面原型在版迭代 | manual | 1d | 2019-06-24 | 2019-06-25 |  |  | finish no earlier than 2019-06-24 | 杜振兴 | 8h |  | 100% |  |  |
| 58 | 1.6.3.7 | etl数据抽取转换迭代 | manual | 1d | 2019-06-24 | 2019-06-25 |  |  | finish no earlier than 2019-06-24 | 罗加云 | 8h |  | 100% |  |  |
| 59 | 1.6.4 | **功能测试** |  | 2d | 2019-06-24 | 2019-06-26 |  |  |  | 杜振兴; 高祥云 | 64h |  |  | 测试用例，测试报告 | 2019年7月15日 |
| 60 | 1.6.4.1 | 数据逻辑确认 | manual | 2d | 2019-06-24 | 2019-06-26 |  |  | start no earlier than 2019-06-24 | 杜振兴; 罗加云 | 32h |  | 100% |  |  |
| 61 | 1.6.5 | 功能部署上线 | manual | 2d | 2019-06-25 | 2019-06-26 |  |  |  | 杜振兴; 高祥云 | 32h |  | 100% |  |  |
| 62 | 1.6.6 | 修改权限问题 | manual | 2d | 2019-07-10 | 2019-07-12 |  |  | start no earlier than 2019-07-10 |  |  |  | 100% |  |  |
| 63 | 1.7 | **人力资源分析** |  | 13d | 2019-06-25 | 2019-07-11 |  |  |  |  | 416h |  | 90% |  |  |
| 64 | 1.7.1 | 用户需求/需求分析 | manual | 1d | 2019-06-25 | 2019-06-26 |  |  | start no earlier than 2019-06-25 |  |  |  | 100% |  |  |
| 65 | 1.7.2 | **方案设计/Demo展示** |  | 1d | 2019-06-25 | 2019-06-26 |  |  |  |  |  |  |  |  |  |
| 66 | 1.7.2.1 | exceldemo原型 | manual | 1d | 2019-06-25 | 2019-06-26 |  |  |  |  |  |  | 100% |  |  |
| 67 | 1.7.2.2 | 根据需求进行数据建模 | manual | 1d | 2019-06-25 | 2019-06-26 |  |  |  |  |  |  | 100% |  |  |
| 68 | 1.7.2.3 | exceldemo原型问题分析及修改 | manual | 1d | 2019-06-25 | 2019-06-26 |  |  |  |  |  |  | 100% |  |  |
| 69 | 1.7.2.4 | 测试数据插入 | manual | 1d | 2019-06-25 | 2019-06-26 |  |  |  |  |  |  | 100% |  |  |
| 70 | 1.7.2.5 | bi或report初版页面 | manual | 1d | 2019-06-25 | 2019-06-26 |  |  |  |  |  |  | 100% |  |  |
| 71 | 1.7.3 | **功能开发** |  | 5d | 2019-06-25 | 2019-07-01 |  |  |  |  | 32h |  |  |  |  |
| 72 | 1.7.3.1 | 进行初版页面的问题跟踪 | manual | 1d | 2019-06-25 | 2019-06-26 |  |  |  |  |  |  | 100% |  |  |
| 73 | 1.7.3.2 | etl数据确认 | manual | 1d | 2019-06-25 | 2019-06-26 |  |  |  |  |  |  | 100% |  |  |
| 74 | 1.7.3.3 | 如有问题，问题解决方案 | manual | 2d | 2019-06-26 | 2019-06-27 |  |  |  | 高祥云; 罗加云 | 32h |  | 100% | 需求分析文档,详细设计文档,概要设计文档 | 2019年7月15日 |
| 75 | 1.7.3.4 | 页面原型再版 | manual | 1d | 2019-06-27 | 2019-06-27 |  |  | finish no earlier than 2019-06-27 |  |  |  | 100% |  |  |
| 76 | 1.7.3.5 | etl数据抽取转换 | manual | 2d | 2019-06-27 | 2019-06-28 |  |  | finish no earlier than 2019-06-28 |  |  |  | 100% |  |  |
| 77 | 1.7.3.6 | 页面原型在版迭代 | manual | 3d | 2019-06-27 | 2019-07-01 |  |  | finish no earlier than 2019-07-01 |  |  |  | 100% |  |  |
| 78 | 1.7.3.7 | etl数据抽取转换迭代 | manual | 3d | 2019-06-27 | 2019-07-01 |  |  | finish no earlier than 2019-07-01 |  |  |  | 100% |  |  |

| ID | WBS | Task | Type | Duration | Start | Finish | Constraint | Resources | Work | 交付物 | 交付时间 | 进度 |
| --- | --- | --- | --- | --- | --- | --- | --- | --- | --- | --- | --- | --- |
| 79 | 1.7.4 | **功能测试** |  | 8d | 2019-07-02 | 2019-07-11 |  | 高祥云; 罗加云 | 272h | 测试用例，测试报告 | 2019年7月15日 |  |
| 80 | 1.7.4.1 | 页面逻辑确认 | manual | 9d | 2019-07-01 | 2019-07-11 | finish no earlier than 2019-07-03 |  |  |  |  | 100% |
| 81 | 1.7.4.2 | 页面数据确认 | manual | 9d | 2019-07-01 | 2019-07-11 |  | 高祥云; 罗加云 | 144h |  |  | 100% |
| 82 | 1.7.5 | 功能部署上线 | manual | 7d | 2019-07-03 | 2019-07-11 |  | 杜振兴; 高祥云 | 112h |  |  | 50% |
| 83 | 1.8 | **三表相关开发** |  | 40d | 2019-07-01 | 2019-08-23 |  |  | 800h |  |  |  |
| 84 | 1.8.1 | **etl功能** |  | 30d | 2019-07-01 | 2019-08-09 |  |  | 216h |  |  |  |
| 85 | 1.8.1.1 | etl需求整理 | manual | 3d | 2019-07-01 | 2019-07-03 | finish no earlier than 2019-07-03 | 罗加云 | 24h | 需求分析文档 | 2019年7月15日 | 100% |
| 86 | 1.8.1.2 | 配合方案确定 | manual | 5d | 2019-07-04 | 2019-07-10 | finish no earlier than 2019-07-08 | 罗加云 | 40h | 详细设计文档,概要设计文档 | 2019年7月15日 | 100% |
| 87 | 1.8.1.3 | etl数据建模 | inactive, manual | 1d | 2019-07-09 | 2019-07-09 | finish no earlier than 2019-07-09 | 罗加云 | 8h |  |  |  |
| 88 | 1.8.1.4 | etl转换底层数据表 | manual | 1d | 2019-07-09 | 2019-07-09 | finish no earlier than 2019-07-09 | 罗加云 | 8h |  |  | 100% |
| 89 | 1.8.1.5 | etl查漏数据表 | inactive, manual | 1d | 2019-07-11 | 2019-07-11 | finish no earlier than 2019-07-11 | 罗加云 | 8h |  |  |  |
| 90 | 1.8.1.6 | etl进行损益表数据配置，汇总逻辑，权限逻辑，业务实现等内容的相关开发 | manual | 5d | 2019-07-10 | 2019-07-16 | finish no earlier than 2019-07-16 | 罗加云 | 40h |  |  | 100% |
| 91 | 1.8.1.7 | etl检验损益表相关数据逻辑 | manual | 1d | 2019-07-17 | 2019-07-17 | finish no earlier than 2019-07-17 | 罗加云 | 8h |  |  | 100% |
| 92 | 1.8.1.8 | etl进行资产负债表数据配置，汇总逻辑，权限逻辑，业务实现等内容的相关开发 | manual | 5d | 2019-07-18 | 2019-07-24 | finish no earlier than 2019-07-24 | 罗加云 | 40h |  |  | 90% |
| 93 | 1.8.1.9 | etl检验资产负债表相关数据逻辑 | manual | 1d | 2019-07-25 | 2019-07-25 | finish no earlier than 2019-07-25 | 罗加云 | 8h |  |  |  |
| 94 | 1.8.1.10 | etl进行现金流量表数据配置，汇总逻辑，权限逻辑，业务实现等内容的相关开发 | manual | 5d | 2019-07-26 | 2019-08-01 | finish no earlier than 2019-08-01 | 罗加云 | 40h |  |  |  |
| 95 | 1.8.1.11 | etl检验现金流量表相关数据逻辑 | manual | 1d | 2019-08-02 | 2019-08-02 | finish no earlier than 2019-08-02 | 罗加云 | 8h |  |  |  |
| 96 | 1.8.1.12 | 解决未完成的相关问题 | manual | 5d | 2019-08-05 | 2019-08-09 | finish no earlier than 2019-08-09 |  |  |  |  |  |
| 97 | 1.8.2 | **中台开发** | inactive | 30d | 2019-07-01 | 2019-08-09 |  |  |  |  |  |  |
| 98 | 1.8.2.1 | 需求整理 | inactive, manual | 3d | 2019-07-01 | 2019-07-03 | finish no earlier than 2019-07-03 |  |  |  |  | 100% |
| 99 | 1.8.2.2 | 配合方案确定 | inactive, manual | 5d | 2019-07-04 | 2019-07-10 | finish no earlier than 2019-07-08 |  |  |  |  | 100% |
| 100 | 1.8.2.3 | 中台相关设计方案的确定 | inactive, manual | 5d | 2019-07-09 | 2019-07-15 | finish no earlier than 2019-07-15 |  |  |  |  | 100% |
| 101 | 1.8.2.4 | 中台搭建 | inactive, manual | 1d | 2019-07-16 | 2019-07-16 | finish no earlier than 2019-07-16 |  |  |  |  |  |
| 102 | 1.8.2.5 | 中台开发任务调度模块底层实现 | inactive, manual | 7d | 2019-07-17 | 2019-07-25 | finish no earlier than 2019-07-25 |  |  |  |  |  |
| 103 | 1.8.2.6 | 中台开发相关页面 | inactive, manual | 3d | 2019-07-26 | 2019-07-30 | finish no earlier than 2019-07-30 |  |  |  |  |  |
| 104 | 1.8.2.7 | 中台进行相关测试 | inactive, manual | 3d | 2019-07-31 | 2019-08-02 | finish no earlier than 2019-08-02 |  |  |  |  |  |
| 105 | 1.8.2.8 | 中台集成测试问题解决 | inactive, manual | 5d | 2019-08-05 | 2019-08-09 | finish no earlier than 2019-08-09 |  |  |  |  |  |

Notes:
- 79: 需家园修改相关问题后核对，由于家园系统中存在部分数据问题，相关报表的数据逻辑已经测试通过，等待客户修改问题后进行集成测试，目前相关问题已反馈，正在进行处理中。持续跟进
- 80: 需家园修改相关问题后核对，由于家园系统中存在部分数据问题，相关报表的数据逻辑已经测试通过，等待客户修改问题后进行集成测试，目前相关问题已反馈，正在进行处理中。持续跟进
- 81: 需家园修改相关问题后核对，由于家园系统中存在部分数据问题，相关报表的数据逻辑已经测试通过，等待客户修改问题后进行集成测试，目前相关问题已反馈，正在进行处理中。持续跟进
- 82: 需家园修改相关问题后核对，由于家园系统中存在部分数据问题，相关报表的数据逻辑已经测试通过，等待客户修改问题后进行集成测试，目前相关问题已反馈，正在进行处理中。持续跟进
- 90: 已核对完成损益表表项及利润中心汇总的相关逻辑

| ID | WBS | Task | Type | Duration | Start | Finish | Predecessors | Constraint | Resources | Work | 进度 | 交付物 | 交付时间 |
| --- | --- | --- | --- | --- | --- | --- | --- | --- | --- | --- | --- | --- | --- |
| 106 | 1.8.3 | **report开发** |  | 40d | 2019-07-01 | 2019-08-23 |  |  |  | 584h |  |  |  |
| 107 | 1.8.3.1 | 需求整理：3天 （7.1 7.2 7.3） | manual | 3d | 2019-07-01 | 2019-07-04 |  | start no earlier than 2019-07-01 | 杜振兴 | 24h | 100% |  |  |
| 108 | 1.8.3.2 | 配合方案确定：3天 （7.4 7.5 7.8） | manual | 5d | 2019-07-04 | 2019-07-10 |  | start no earlier than 2019-07-04 | 杜振兴 | 40h | 100% |  |  |
| 109 | 1.8.3.3 | 整理相关需求：1天 （7.9） | manual | 1d | 2019-07-09 | 2019-07-09 |  | finish no earlier than 2019-07-09 | 杜振兴 | 8h | 100% |  |  |
| 110 | 1.8.3.4 | **损益表开发** |  | 8d | 2019-07-11 | 2019-07-22 |  |  | 杜振兴 | 120h |  |  |  |
| 111 | 1.8.3.4.1 | 损益表开发 2天 （7.10 7.11） | manual | 2d | 2019-07-10 | 2019-07-12 |  | start no earlier than 2019-07-10 | 杜振兴 | 16h | 100% |  |  |
| 112 | 1.8.3.4.2 | 损益表钻取利润中心的开发 1天 （7.12） ->利润中心子表的开发 | manual | 1d | 2019-07-15 | 2019-07-15 |  | start no earlier than 2019-07-15 | 杜振兴 | 8h | 100% |  |  |
| 113 | 1.8.3.4.3 | 损益表及利润中心钻取到会计科目的开发 1天 （7.15） ->会计科目子表的开发 | manual | 1d | 2019-07-16 | 2019-07-16 |  | start no earlier than 2019-07-16 | 杜振兴 | 8h | 100% |  |  |
| 114 | 1.8.3.4.4 | 钻取到明细表的开发 1天 （7.16） ->明细表的开发 | manual | 1d | 2019-07-17 | 2019-07-17 |  | start no earlier than 2019-07-17 | 杜振兴 | 8h | 100% |  |  |
| 115 | 1.8.3.4.5 | 损益表核对页面及逻辑修改 2天 （7.18 7.19） | manual | 2d | 2019-07-18 | 2019-07-19 | 91 | finish no earlier than 2019-07-19 | 杜振兴 | 16h | 100% | 测试用例，测试报告 | 2019年7月19号 |
| 116 | 1.8.3.4.6 | 损益表初步上线 | manual | 1d | 2019-07-22 | 2019-07-22 |  | finish no earlier than 2019-07-22 |  |  | 100% |  |  |
| 117 | 1.8.3.5 | **资产负债表开发** |  | 13d | 2019-07-17 | 2019-08-02 |  |  | 杜振兴 | 152h |  |  |  |
| 118 | 1.8.3.5.1 | 资产负债表需求核对 （7.17） | manual | 1d | 2019-07-17 | 2019-07-17 |  | finish no earlier than 2019-07-17 | 杜振兴 | 8h | 100% |  |  |
| 119 | 1.8.3.5.2 | 资产负债表开发 2天 （7.22 7.23） | manual | 2d | 2019-07-22 | 2019-07-23 |  | finish no earlier than 2019-07-23 | 杜振兴 | 16h | 100% |  |  |
| 120 | 1.8.3.5.3 | 资产负债表钻取利润中心的开发 1天 （7.24） ->利润中心子表的开发 | inactive, manual | 1d | 2019-07-24 | 2019-07-24 |  | finish no earlier than 2019-07-24 | 杜振兴 | 8h |  |  |  |
| 121 | 1.8.3.5.4 | 资产负债表及利润中心钻取到会计科目的开发 1天 （7.25） ->会计科目子表的开发 | manual | 1d | 2019-07-25 | 2019-07-25 |  | finish no earlier than 2019-07-25 | 杜振兴 | 8h | 80% |  |  |
| 122 | 1.8.3.5.5 | 钻取到明细表的开发 1天 （7.26） ->明细表的开发 | inactive, manual | 1d | 2019-07-26 | 2019-07-26 |  | finish no earlier than 2019-07-26 | 杜振兴 | 8h |  |  |  |
| 123 | 1.8.3.5.6 | 资产负债表核对页面及逻辑修改 2天 （7.29 7.30） | manual | 2d | 2019-07-29 | 2019-07-30 | 93 | finish no earlier than 2019-07-30 | 杜振兴 | 16h |  | 测试用例，测试报告 | 2019年7月30日 |
| 124 | 1.8.3.6 | **现金流量表开发** |  | 12d | 2019-07-29 | 2019-08-13 |  |  | 杜振兴 | 160h |  |  |  |
| 125 | 1.8.3.6.1 | 现金流量表需求核对 （7.29） | manual | 1d | 2019-07-29 | 2019-07-29 |  | finish no earlier than 2019-07-29 | 杜振兴 | 8h |  |  |  |
| 126 | 1.8.3.6.2 | 现金流量表开发 2天 （7.30 7.31） | manual | 2d | 2019-07-30 | 2019-07-31 |  | finish no earlier than 2019-07-31 | 杜振兴 | 16h |  |  |  |
| 127 | 1.8.3.6.3 | 现金流量表钻取利润中心的开发 1天 （8.5） ->利润中心子表的开发 | manual | 1d | 2019-08-05 | 2019-08-05 |  | finish no earlier than 2019-08-05 | 杜振兴 | 8h |  |  |  |
| 128 | 1.8.3.6.4 | 现金流量表及利润中心钻取到会计科目的开发 1天 （8.6，8.7） ->会计科目子表的开发 | manual | 2d | 2019-08-06 | 2019-08-07 |  | start no earlier than 2019-08-06 | 杜振兴 | 16h |  |  |  |
| 129 | 1.8.3.6.5 | 现金流量表核对页面及逻辑修改 2天 （8.8 8.9） | manual | 2d | 2019-08-08 | 2019-08-09 | 94 | finish no earlier than 2019-08-09 | 杜振兴 | 16h |  | 测试用例，测试报告 | 2019年8月9日 |
| 130 | 1.8.3.7 | 集成测试 | manual | 4d | 2019-08-12 | 2019-08-15 |  | finish no earlier than 2019-08-15 | 杜振兴 | 32h |  |  |  |
| 131 | 1.8.3.8 | 支持运维 | manual | 6d | 2019-08-16 | 2019-08-23 |  | finish no earlier than 2019-08-23 | 杜振兴 | 48h |  |  |  |

Notes:
- 111: 调整为12日完成
- 116: 将权限开给了财务申请的几个部门小范围测试
- 120: 资产负债表不做钻取操作
- 121: 会计科目表不做钻取，更名为科目详情表
- 122: 资产负债表不做钻取操作

| ID | WBS | Task | Type | Duration | Start | Finish | Constraint |
| --- | --- | --- | --- | --- | --- | --- | --- |
| 132 | 1.9 | **员工结构分析修改权限** |  | 6d | 2019-07-23 | 2019-07-30 |  |
| 133 | 1.9.1 | 分析模型需求 | manual | 2d | 2019-07-23 | 2019-07-24 | finish no earlier than 2019-07-24 |
| 134 | 1.9.2 | 数据库模型重构 | manual | 1d | 2019-07-24 | 2019-07-24 | finish no earlier than 2019-07-24 |
| 135 | 1.9.3 | 页面取数逻辑修改 | manual | 1d | 2019-07-25 | 2019-07-25 | finish no earlier than 2019-07-25 |
| 136 | 1.9.4 | 测试环境测试 | manual | 1d | 2019-07-26 | 2019-07-26 | finish no earlier than 2019-07-26 |
| 137 | 1.9.5 | 正式环境验证 | manual | 2d | 2019-07-26 | 2019-07-29 | finish no earlier than 2019-07-29 |
| 138 | 1.9.6 | 上线 | manual | 1d | 2019-07-30 | 2019-07-30 | finish no earlier than 2019-07-30 |
| 139 | 1.10 | **员工流动分析修改权限** |  | 7d | 2019-07-24 | 2019-08-01 |  |
| 140 | 1.10.1 | 分析模型需求 | manual | 1d | 2019-07-24 | 2019-07-24 | finish no earlier than 2019-07-24 |
| 141 | 1.10.2 | 数据库模型重构 | manual | 1d | 2019-07-25 | 2019-07-25 | finish no earlier than 2019-07-25 |
| 142 | 1.10.3 | 页面取数逻辑修改 | manual | 1d | 2019-07-26 | 2019-07-26 | finish no earlier than 2019-07-26 |
| 143 | 1.10.4 | 测试环境测试 | manual | 1d | 2019-07-29 | 2019-07-29 | finish no earlier than 2019-07-29 |
| 144 | 1.10.5 | 正式环境验证 | manual | 2d | 2019-07-29 | 2019-07-30 | finish no earlier than 2019-07-30 |
| 145 | 1.10.6 | 上线 | manual | 1d | 2019-07-31 | 2019-07-31 | finish no earlier than 2019-07-31 |
| 146 | 1.11 | **业绩回款修改权限** |  | 6d | 2019-08-06 | 2019-08-14 |  |
| 147 | 1.11.1 | 确认数据权限关联问题 | manual | 1d | 2019-08-06 | 2019-08-06 | finish no earlier than 2019-08-06 |
| 148 | 1.11.2 | 分析模型需求 | manual | 1d | 2019-08-07 | 2019-08-07 | finish no earlier than 2019-08-07 |
| 149 | 1.11.3 | 数据库模型重构 | manual | 1d | 2019-08-08 | 2019-08-08 | finish no earlier than 2019-08-08 |
| 150 | 1.11.4 | 页面取数逻辑修改 | manual | 1d | 2019-08-09 | 2019-08-09 | finish no earlier than 2019-08-09 |
| 151 | 1.11.5 | 测试环境测试 | manual | 1d | 2019-08-12 | 2019-08-12 | finish no earlier than 2019-08-12 |
| 152 | 1.11.6 | 正式环境验证 | manual | 2d | 2019-08-12 | 2019-08-13 | finish no earlier than 2019-08-13 |
| 153 | 1.11.7 | 上线 | manual | 1d | 2019-08-14 | 2019-08-14 | finish no earlier than 2019-08-14 |
| 154 | 1.12 | **合同总额修改权限** |  | 6d | 2019-08-08 | 2019-08-15 |  |
| 155 | 1.12.1 | 分析模型需求 | manual | 2d | 2019-08-07 | 2019-08-08 | finish no earlier than 2019-08-08 |
| 156 | 1.12.2 | 数据库模型重构 | manual | 1d | 2019-08-09 | 2019-08-09 | finish no earlier than 2019-08-09 |
| 157 | 1.12.3 | 页面取数逻辑修改 | manual | 1d | 2019-08-12 | 2019-08-12 | finish no earlier than 2019-08-12 |
| 158 | 1.12.4 | 测试环境测试 | manual | 1d | 2019-08-13 | 2019-08-13 | finish no earlier than 2019-08-13 |
| 159 | 1.12.5 | 正式环境验证 | manual | 2d | 2019-08-13 | 2019-08-14 | finish no earlier than 2019-08-14 |
| 160 | 1.12.6 | 上线 | manual | 1d | 2019-08-15 | 2019-08-15 | finish no earlier than 2019-08-15 |

| ID | WBS | Task | Type | Duration | Start | Finish | Resources | Work | 交付物 | 交付时间 |
| --- | --- | --- | --- | --- | --- | --- | --- | --- | --- | --- |
| 161 | 1.13 | **确认收入+行业业绩统计** |  | 8d | 2019-08-16 | 2019-08-27 |  | 112h |  |  |
| 162 | 1.13.1 | 用户需求/需求分析 | manual | 3d | 2019-08-16 | 2019-08-21 | 高祥云; 罗加云 | 48h | 需求分析文档,详细设计文档,概要设计文档 | 2019年8月21日 |
| 163 | 1.13.2 | 方案设计/Demo展示 | manual | 1d | 2019-08-22 | 2019-08-22 | 高祥云; 罗加云 | 16h |  |  |
| 164 | 1.13.3 | 功能开发 | manual | 1d | 2019-08-23 | 2019-08-23 | 高祥云; 罗加云 | 16h |  |  |
| 165 | 1.13.4 | 功能测试 | manual | 1d | 2019-08-26 | 2019-08-26 | 杜振兴; 高祥云 | 16h | 测试用例，测试报告 | 2019年8月26日 |
| 166 | 1.13.5 | 功能部署上线 | manual | 1d | 2019-08-27 | 2019-08-27 | 杜振兴; 高祥云 | 16h |  | 2019年8月27日 |
| 167 | 1.14 | **考勤分析/研发部门工作量统计/过程规范性得分统计** |  | 7d | 2019-08-26 | 2019-09-03 |  | 112h |  |  |
| 168 | 1.14.1 | 用户需求/需求分析 | manual | 3d | 2019-08-26 | 2019-08-28 | 高祥云; 罗加云 | 48h | 需求分析文档,详细设计文档,概要设计文档 | 2019年8月28日 |
| 169 | 1.14.2 | 方案设计/Demo展示 | manual | 1d | 2019-08-29 | 2019-08-29 | 高祥云; 罗加云 | 16h |  |  |
| 170 | 1.14.3 | 功能开发 | manual | 1d | 2019-08-30 | 2019-08-30 | 高祥云; 罗加云 | 16h |  |  |
| 171 | 1.14.4 | 功能测试 | manual | 1d | 2019-09-02 | 2019-09-02 | 杜振兴; 高祥云 | 16h | 测试用例，测试报告 | 2019年9月2日 |
| 172 | 1.14.5 | 功能部署上线 | manual | 1d | 2019-09-03 | 2019-09-03 | 杜振兴; 高祥云 | 16h |  |  |
| 173 | 1.15 | **过程资产提交率统计/项目类采购分析** |  | 8d | 2019-09-02 | 2019-09-12 |  | 128h |  |  |
| 174 | 1.15.1 | 用户需求/需求分析 | manual | 3d | 2019-09-02 | 2019-09-04 | 高祥云; 罗加云 | 48h | 需求分析文档,详细设计文档,概要设计文档 | 2019年8月5日 |
| 175 | 1.15.2 | 方案设计/Demo展示 | manual | 1d | 2019-09-05 | 2019-09-05 | 高祥云; 罗加云 | 16h |  |  |
| 176 | 1.15.3 | 功能开发 | manual | 1d | 2019-09-06 | 2019-09-06 | 高祥云; 罗加云 | 16h |  |  |
| 177 | 1.15.4 | 功能测试 | manual | 2d | 2019-09-09 | 2019-09-10 | 杜振兴; 高祥云 | 32h | 测试用例，测试报告 | 2019年9月10日 |
| 178 | 1.15.5 | 功能部署上线 | manual | 1d | 2019-09-11 | 2019-09-11 | 杜振兴; 高祥云 | 16h |  |  |
| 179 | 1.16 | **报表性能/页面交互调优** |  | 6d | 2019-09-11 | 2019-09-19 |  | 144h |  |  |
| 180 | 1.16.1 | 报表性能/页面交互调优 | manual | 6d | 2019-08-12 | 2019-08-19 | 杜振兴; 高祥云; 罗加云 | 144h |  |  |
| 181 | 1.17 | **甲方验收（第一轮）** |  | 3d | 2019-09-20 | 2019-09-24 |  | 72h |  |  |
| 182 | 1.17.1 | 甲方验收（第一轮） | manual | 3d | 2019-09-20 | 2019-09-24 | 杜振兴; 高祥云; 罗加云 | 72h |  |  |
| 183 | 1.18 | **甲方验收（第二轮）** |  | 4d | 2019-09-25 | 2019-09-30 |  | 96h |  |  |
| 184 | 1.18.1 | 甲方验收（第二轮） | manual | 4d | 2019-09-25 | 2019-09-30 | 杜振兴; 高祥云; 罗加云 | 96h |  |  |

| ID | WBS | Task | Type | Duration | Start | Finish | Constraint | Resources | Work | 进度 | 交付物 | 交付时间 |
| --- | --- | --- | --- | --- | --- | --- | --- | --- | --- | --- | --- | --- |
| 185 | 1.19 | **远程支持客户需求** |  | 22d | 2019-10-01 | 2019-10-30 |  |  | 528h |  |  |  |
| 186 | 1.19.1 | 远程支持客户需求 | manual | 22d | 2019-10-01 | 2019-10-30 |  | 杜振兴; 高祥云; 罗加云 | 528h |  |  |  |
| 188 | 2 | **YJTXT_APP_V2.0R** |  | 73d | 2019-06-03 | 2019-09-10 |  |  | 368h |  |  |  |
| 189 | 2.1 | **客户接待** |  | 17d | 2019-06-03 | 2019-06-24 |  |  | 120h | 100% |  |  |
| 190 | 2.1.1 | 用户需求/需求分析 | manual | 2d | 2019-06-03 | 2019-06-04 |  | 陈子瑶 | 16h | 100% | 需求分析文档 | 2019年6月5日 |
| 191 | 2.1.2 | 方案设计 | manual | 1d | 2019-06-05 | 2019-06-05 |  | 陈子瑶 | 8h | 100% | 详细设计文档/概要设计文档/接口设计文档 | 2019年7月15日 |
| 192 | 2.1.3 | 功能开发 | manual | 9d | 2019-06-06 | 2019-06-18 |  | 陈子瑶 | 72h | 100% | 测试用例 | 2019年7月15日 |
| 193 | 2.1.4 | 单元测试 | manual | 1d | 2019-06-19 | 2019-06-19 |  | 陈子瑶 | 8h | 100% | 测试报告 | 2019年7月15日 |
| 194 | 2.1.5 | **集成测试** |  | 1d | 2019-06-21 | 2019-06-24 |  | 陈子瑶 | 8h | 100% |  |  |
| 195 | 2.1.5.1 | bug调试 | manual | 1d | 2019-06-21 | 2019-06-21 | finish no earlier than 2019-06-23 |  |  | 100% |  |  |
| 196 | 2.1.5.2 | 页面调整美化 | manual | 1d | 2019-06-21 | 2019-06-21 | finish no earlier than 2019-06-21 |  |  | 100% |  |  |
| 197 | 2.1.6 | 功能部署上线 | manual | 1d | 2019-06-24 | 2019-06-24 |  | 陈子瑶 | 8h | 100% |  |  |
| 198 | 2.2 | **考勤打卡** |  | 17d | 2019-06-03 | 2019-06-24 |  |  | 136h | 100% |  |  |
| 199 | 2.2.1 | 用户需求/需求分析 | manual | 2d | 2019-06-03 | 2019-06-04 |  | JAVA团队 | 16h | 100% | 需求分析文档 | 2019年6月5日 |
| 200 | 2.2.2 | 方案设计 | manual | 1d | 2019-06-05 | 2019-06-05 |  | JAVA团队 | 8h | 100% | 详细设计文档/概要设计文档/接口设计文档 | 2019年7月15日 |
| 201 | 2.2.3 | 功能开发 | manual | 9d | 2019-06-06 | 2019-06-18 |  | JAVA团队 | 72h | 100% | 测试用例 | 2019年7月15日 |
| 202 | 2.2.4 | 单元测试 | manual | 1d | 2019-06-19 | 2019-06-19 |  | JAVA团队 | 8h | 100% | 测试报告 | 2019年7月15日 |
| 203 | 2.2.5 | **集成测试** |  | 3d | 2019-06-20 | 2019-06-24 |  | JAVA团队 | 24h |  |  |  |
| 204 | 2.2.5.1 | 用户测试 | manual | 1d | 2019-06-24 | 2019-06-24 | finish no earlier than 2019-06-24 |  |  | 100% |  |  |
| 205 | 2.2.5.2 | bug调整 | manual | 1d | 2019-06-21 | 2019-06-21 | finish no earlier than 2019-06-23 |  |  | 100% |  |  |
| 206 | 2.2.6 | 功能部署上线 | manual | 1d | 2019-06-24 | 2019-06-24 |  | JAVA团队 | 8h | 100% |  |  |
| 207 | 2.3 | **出差公出报备** |  | 73d | 2019-06-03 | 2019-09-10 |  |  | 112h |  |  |  |
| 208 | 2.3.1 | 用户需求/需求分析 | manual | 2d | 2019-06-03 | 2019-06-04 |  | 王晓旭 | 16h | 100% | 需求分析文档 | 2019年8月15日 |
| 209 | 2.3.2 | 方案设计 | manual | 1d | 2019-06-05 | 2019-06-05 |  | 王晓旭 | 8h | 100% | 详细设计文档/概要设计文档/接口设计文档 | 2019年8月15日 |
| 210 | 2.3.3 | 功能开发 | manual | 5d | 2019-08-19 | 2019-08-26 |  | 王晓旭 | 40h | 65% | 测试用例 | 2019年8月15日 |
| 211 | 2.3.4 | 单元测试 | manual | 3d | 2019-08-19 | 2019-08-22 |  | 王晓旭 | 24h |  | 测试报告 | 2019年8月15日 |
| 212 | 2.3.5 | 集成测试 | manual | 2d | 2019-08-22 | 2019-08-26 |  | 王晓旭 | 16h |  |  |  |
| 213 | 2.3.6 | 功能部署上线 | manual | 1d | 2019-08-26 | 2019-08-27 |  | 王晓旭 | 8h |  |  |  |

| ID | WBS | Task | Type | Duration | Start | Finish | Predecessors | Constraint | 交付物 | 进度 | 交付时间 |
| --- | --- | --- | --- | --- | --- | --- | --- | --- | --- | --- | --- |
| 214 | 2.4 | **日报管理** |  | 24d | 2019-06-28 | 2019-07-31 |  |  |  |  |  |
| 215 | 2.4.1 | 用户需求/需求分析 | manual | 3d | 2019-06-28 | 2019-07-02 |  |  | 需求分析文档 | 100% | 2019年7月15日 |
| 216 | 2.4.2 | 方案设计 | manual | 3d | 2019-07-02 | 2019-07-04 |  |  | 详细设计文档/概要设计文档/接口设计文档 | 100% | 2019年7月15日 |
| 217 | 2.4.3 | **功能开发** |  | 20d | 2019-07-04 | 2019-07-31 |  |  | 测试用例 |  | 2019年7月15日 |
| 218 | 2.4.3.1 | 报工列表查询 | manual | 1d | 2019-07-04 | 2019-07-04 |  | finish no earlier than 2019-07-04 |  | 100% |  |
| 219 | 2.4.3.2 | 导出报工列表 | inactive, manual | 1d | 2019-07-05 | 2019-07-05 |  | finish no earlier than 2019-07-05 |  |  |  |
| 220 | 2.4.3.3 | 获取日报相关的员工信息 | manual | 1d | 2019-07-05 | 2019-07-05 |  | finish no earlier than 2019-07-05 |  | 100% |  |
| 221 | 2.4.3.4 | 获取员工打卡信息 | manual | 1d | 2019-07-08 | 2019-07-08 |  | finish no earlier than 2019-07-08 |  | 100% |  |
| 222 | 2.4.3.5 | 需求细化分析及细节接口需求分析 | manual | 3d | 2019-07-10 | 2019-07-12 |  | finish no earlier than 2019-07-12 | 需求分析文档 | 100% |  |
| 223 | 2.4.3.6 | 接口整理细化分析工作 | manual | 2d | 2019-07-12 | 2019-07-14 |  | start no earlier than 2019-07-12 |  | 100% |  |
| 224 | 2.4.3.7 | **开发相关功能** |  | 7d | 2019-07-14 | 2019-07-21 |  |  |  |  |  |
| 225 | 2.4.3.7.1 | 报工列表 | manual | 2d | 2019-07-14 | 2019-07-15 |  |  |  | 100% |  |
| 226 | 2.4.3.7.2 | 查看日报详情 | manual | 2d | 2019-07-15 | 2019-07-16 |  |  |  | 100% |  |
| 227 | 2.4.3.7.3 | 日报删除 | manual | 1d | 2019-07-17 | 2019-07-17 |  |  |  | 100% |  |
| 228 | 2.4.3.7.4 | 日报撤回 | manual | 1d | 2019-07-17 | 2019-07-17 |  |  |  | 100% |  |
| 229 | 2.4.3.7.5 | **新增日报** |  | 5d | 2019-07-16 | 2019-07-20 |  |  |  |  |  |
| 230 | 2.4.3.7.5.1 | 日报基础信息 | manual | 1d | 2019-07-16 | 2019-07-16 |  |  |  | 100% |  |
| 231 | 2.4.3.7.5.2 | 今日/明日计划 | manual | 1d | 2019-07-16 | 2019-07-16 |  |  |  | 100% |  |
| 232 | 2.4.3.7.5.3 | 具体任务信息 | manual | 2d | 2019-07-17 | 2019-07-18 |  |  |  | 100% |  |
| 233 | 2.4.3.7.5.4 | 费用报销 | manual | 2d | 2019-07-17 | 2019-07-18 |  |  |  | 100% |  |
| 234 | 2.4.3.7.5.5 | 客户咨讯关联 | manual | 2d | 2019-07-18 | 2019-07-19 |  |  |  |  |  |
| 235 | 2.4.3.7.5.6 | 报销票据 | manual | 2d | 2019-07-18 | 2019-07-19 |  |  |  | 100% |  |
| 236 | 2.4.3.7.5.7 | 发票池功能 | manual | 2d | 2019-07-19 | 2019-07-20 |  |  |  | 100% |  |
| 237 | 2.4.3.7.6 | 日报更新 | manual | 1d | 2019-07-21 | 2019-07-21 | 229 |  |  | 100% |  |
| 238 | 2.4.4 | 测试相关功能 | manual | 3d | 2019-07-22 | 2019-07-24 |  |  |  | 50% |  |
| 239 | 2.4.5 | 功能部署上线 | manual | 1d | 2019-07-25 | 2019-07-25 |  |  |  |  |  |
| 240 | 2.4.6 | 报工详情 | inactive, manual | 4d | 2019-07-09 | 2019-07-12 |  | finish no earlier than 2019-07-10 |  | 20% |  |
| 241 | 2.4.7 | 费用报销 | inactive, manual | 1d | 2019-07-12 | 2019-07-15 |  | start no earlier than 2019-07-12 |  |  |  |
| 242 | 2.4.8 | 票据填写 | inactive, manual | 1d | 2019-07-15 | 2019-07-16 |  | start no earlier than 2019-07-15 |  |  |  |
| 243 | 2.4.9 | 发票池功能 | inactive, manual | 1d | 2019-07-17 | 2019-07-18 |  | start no earlier than 2019-07-17 |  |  |  |
| 244 | 2.4.10 | 单元测试 | inactive, manual | 1d | 2019-07-25 | 2019-07-25 |  |  | 测试报告 |  | 2019年7月16日 |
| 245 | 2.4.11 | 集成测试 | inactive, manual | 1d | 2019-07-26 | 2019-07-26 |  |  |  |  |  |
| 246 | 2.4.12 | 功能部署上线 | inactive, manual | 1d | 2019-07-19 | 2019-07-22 |  |  |  |  |  |

Notes:
- 220: 由于理解调试PC端日报现有功能代码花费较长时间，并且未达到应有的效果，现整理日报功能所需接口文档与问题列表，请求相关资源予以协助.
- 221: 由于理解调试PC端日报现有功能代码花费较长时间，并且未达到应有的效果，现整理日报功能所需接口文档与问题列表，请求相关资源予以协助.
- 232: 需要根据滴滴机票住宿自动生成任务，需要客户协助提供相应的api
- 233: 需要客户协助提供里程碑以及花销分类相关信息的api
- 234: 暂无法提供客户资讯相关的api，暂放。
- 235: 需要获取操作类型相关的api
- 236: 需要客户协助提供发票池相关功能的api
- 237: 日报更新依赖于新增日报功能。
- 238: 因调整技术实现方案，测试上线时间延期4天
- 239: 因调整技术实现方案，测试上线时间延期4天

| ID | WBS | Task | Type | Duration | Start | Finish | Constraint | 进度 | 交付物 | 交付时间 |
| --- | --- | --- | --- | --- | --- | --- | --- | --- | --- | --- |
| 247 | 2.5 | **待办列表** |  | 10d | 2019-07-22 | 2019-08-05 |  |  |  |  |
| 248 | 2.5.1 | 技术可行性分析 | manual | 4d | 2019-07-15 | 2019-07-18 |  | 100% |  |  |
| 249 | 2.5.2 | 用户需求/需求分析 | manual | 1d | 2019-07-22 | 2019-07-22 |  | 80% | 需求分析文档 | 2019年7月23日 |
| 250 | 2.5.3 | 方案设计 | manual | 2d | 2019-07-22 | 2019-07-23 |  | 100% | 详细设计文档/概要设计文档/接口设计文档 | 2019年7月24日 |
| 251 | 2.5.4 | 功能开发 | manual | 5d | 2019-07-23 | 2019-07-29 |  |  | 测试用例 | 2019年7月30日 |
| 252 | 2.5.5 | 单元测试 | manual | 3d | 2019-07-30 | 2019-08-01 |  |  | 测试报告 | 2019年7月31日 |
| 253 | 2.5.6 | 集成测试 | manual | 1d | 2019-08-01 | 2019-08-02 |  |  |  |  |
| 254 | 2.5.7 | 功能部署上线 | manual | 2d | 2019-08-02 | 2019-08-04 |  |  |  |  |
| 255 | 2.6 | **考勤明细** |  | 6d | 2019-08-05 | 2019-08-11 |  |  |  |  |
| 256 | 2.6.1 | 技术可行性分析 | manual | 3d | 2019-07-29 | 2019-07-31 | finish no earlier than 2019-07-31 |  |  |  |
| 257 | 2.6.2 | 用户需求/需求分析 | manual | 1d | 2019-08-05 | 2019-08-06 |  |  | 需求分析文档 | 2019年8月5日 |
| 258 | 2.6.3 | 方案设计 | manual | 1d | 2019-08-05 | 2019-08-06 |  |  | 详细设计文档/概要设计文档/接口设计文档 | 2019年8月5日 |
| 259 | 2.6.4 | 功能开发 | manual | 2d | 2019-08-06 | 2019-08-08 |  |  | 测试用例 | 2019年8月7日 |
| 260 | 2.6.5 | 单元测试 | manual | 1d | 2019-08-08 | 2019-08-09 |  |  | 测试报告 | 2019年8月8日 |
| 261 | 2.6.6 | 集成测试 | manual | 1d | 2019-08-08 | 2019-08-09 |  |  |  |  |
| 262 | 2.6.7 | 功能部署上线 | manual | 2d | 2019-08-09 | 2019-08-11 |  |  |  |  |
| 263 | 2.7 | **假期管理** |  | 6d | 2019-08-12 | 2019-08-18 |  |  |  |  |
| 264 | 2.7.1 | 技术可行性分析 | manual | 3d | 2019-08-05 | 2019-08-07 |  |  |  |  |
| 265 | 2.7.2 | 用户需求/需求分析 | manual | 1d | 2019-08-12 | 2019-08-12 |  |  | 需求分析文档 | 2019年8月12日 |
| 266 | 2.7.3 | 方案设计 | manual | 2d | 2019-08-12 | 2019-08-13 |  |  | 详细设计文档/概要设计文档/接口设计文档 | 2019年8月12日 |
| 267 | 2.7.4 | 功能开发 | manual | 2d | 2019-08-13 | 2019-08-15 |  |  | 测试用例 | 2019年8月14日 |
| 268 | 2.7.5 | 单元测试 | manual | 1d | 2019-08-15 | 2019-08-16 |  |  | 测试报告 | 2019年8月15日 |
| 269 | 2.7.6 | 集成测试 | manual | 1d | 2019-08-15 | 2019-08-16 |  |  |  |  |
| 270 | 2.7.7 | 功能部署上线 | manual | 2d | 2019-08-16 | 2019-08-18 |  |  |  |  |

Notes:
- 248: 待办列表的详细计划会根据技术可行性分析和需求分析的结果进行调整
- 249: 目前分析了日报，考勤，补登，假期的相关需求，并整理其相关需求，形成api文档并已发送
- 256: 考勤明细的详细计划会根据技术可行性分析和需求分析的结果进行调整
- 264: 假期管理的详细计划会根据技术可行性分析和需求分析的结果进行调整

| ID | WBS | Task | Type | Duration | Start | Finish |
| --- | --- | --- | --- | --- | --- | --- |
| 271 | 2.8 | **置换功能** |  | 2d | 2019-08-27 | 2019-08-29 |
| 272 | 2.8.1 | 用户需求/需求分析 | manual | 1d | 2019-08-27 | 2019-08-28 |
| 273 | 2.8.2 | 方案设计 | manual | 1d | 2019-08-27 | 2019-08-28 |
| 274 | 2.8.3 | 功能开发 | manual | 1d | 2019-08-27 | 2019-08-28 |
| 275 | 2.8.4 | 单元测试 | manual | 1d | 2019-08-27 | 2019-08-28 |
| 276 | 2.8.5 | 集成测试 | manual | 1d | 2019-08-27 | 2019-08-28 |
| 277 | 2.8.6 | 功能部署上线 | manual | 1d | 2019-08-27 | 2019-08-28 |
| 278 | 2.9 | **甲方验收（第一轮）** |  | 1d | 2019-08-29 | 2019-08-29 |
| 279 | 2.9.1 | 甲方验收（第一轮） | manual | 1d | 2019-08-29 | 2019-08-30 |
| 280 | 2.10 | **甲方验收（第二轮）** |  | 1d | 2019-08-30 | 2019-08-30 |
| 281 | 2.10.1 | 甲方验收（第二轮） | manual | 1d | 2019-08-30 | 2019-09-02 |
