Schedule from MS Project, 2019-06-03 to 2020-03-30, A marks actual dates.
Microsoft

## Calendars

- 标准: Mon-Fri 08:00-12:00, 13:00-17:00; Sat-Sun off. Exceptions (off unless hours are given): 2019-06-15 08:00-12:00, 13:00-17:00.

## Resources

| Resource |
| --- |
| 高祥云 |
| 罗加云 |
| 杜振兴 |
| 陈子瑶 |
| 李龙 |
| JAVA团队 |
| 王晓旭 |

## Schedule

| ID | WBS | Task | Type | Duration | Start | Finish | Predecessors | Complete | Remaining | Constraint | Resources | Work | Actual work | 进度 | 交付物 | 交付时间 | Text5 |
| --- | --- | --- | --- | --- | --- | --- | --- | --- | --- | --- | --- | --- | --- | --- | --- | --- | --- |
| 1 | 1 | **YJTXT_BI_V2.0R** |  | 87d | 2019-06-03 A | 2019-09-30 |  | 3% | 84.63d |  |  | 3080h | 181.31h |  |  |  |  |
| 2 | 1.1 | **总裁驾驶舱DEMO上线** |  | 30d | 2019-06-03 A | 2019-07-11 |  | 8% | 27.6d |  |  | 224h | 32h | 100% |  |  |  |
| 3 | 1.1.1 | 用户需求/需求分析 | manual | 1d | 2019-06-03 A | 2019-06-03 A |  | 100% |  |  | 杜振兴; 高祥云 | 16h | 16h | 100% | 需求分析文档,详细设计文档,概要设计文档 | 2019年6月5日 |  |
| 4 | 1.1.2 | 方案设计/Demo展示 | manual | 1d | 2019-06-04 | 2019-06-04 |  |  |  |  | 杜振兴; 高祥云 | 16h |  | 100% |  |  |  |
| 5 | 1.1.3 | 功能开发 | manual | 1d | 2019-06-05 A | 2019-06-05 A |  | 100% |  |  | 杜振兴; 高祥云 | 16h | 16h | 100% |  |  |  |
| 6 | 1.1.4 | 页面自适应问题解决 | manual | 1d | 2019-06-15 | 2019-06-17 |  |  |  | start no earlier than 2019-06-15 |  |  |  | 100% |  |  |  |
| 7 | 1.1.5 | 人力数据展示(总规划人数取不到暂时用假数据代替) | manual | 1d | 2019-06-15 | 2019-06-17 |  |  |  | finish no earlier than 2019-06-15 |  |  |  | 100% |  |  |  |
| 8 | 1.1.6 | 现金流量展示三个指标的数据（该数据同样无法取得） | manual | 1d | 2019-06-15 | 2019-06-17 |  |  |  | start no earlier than 2019-06-15 |  |  |  | 100% |  |  |  |
| 9 | 1.1.7 | 页面ui风格的处理 | manual | 3d | 2019-06-17 | 2019-06-20 | 6 |  |  |  |  |  |  | 100% |  |  |  |
| 10 | 1.1.8 | 处理分辨率不兼容的问题 | manual | 1d | 2019-06-18 | 2019-06-19 |  |  |  | finish no earlier than 2019-06-18 |  |  |  | 100% |  |  |  |
| 11 | 1.1.9 | 功能测试 | manual | 6d | 2019-06-06 | 2019-06-13 |  |  |  |  | 杜振兴; 高祥云 | 96h |  | 100% | 测试用例，测试报告 | 2019年6月13号 |  |
| 12 | 1.1.10 | 功能部署上线 | manual | 5d | 2019-06-07 | 2019-06-13 |  |  |  |  | 杜振兴; 高祥云 | 80h |  | 100% |  |  | 需求增加现金流和人力部分 |
| 13 | 1.1.11 | 修改联动问题 | manual | 4d | 2019-07-08 | 2019-07-11 |  |  |  | finish no earlier than 2019-07-09 |  |  |  | 100% |  |  |  |
| 14 | 1.2 | **基础经营指标分析** |  | 26d | 2019-06-10 A | 2019-07-12 |  | 13% | 22.53d |  |  | 80h | 32h | 100% |  |  |  |
| 15 | 1.2.1 | 用户需求/需求分析 | manual | 1d | 2019-06-10 A | 2019-06-10 A |  | 100% |  |  | 高祥云; 罗加云 | 16h | 16h | 100% | 需求分析文档,详细设计文档,概要设计文档 | 2019年6月10日 |  |
| 16 | 1.2.2 | 方案设计/Demo展示 | manual | 1d | 2019-06-11 A | 2019-06-11 A |  | 100% |  |  | 高祥云; 罗加云 | 16h | 16h | 100% |  |  |  |
| 17 | 1.2.3 | 功能开发 | manual | 1d | 2019-06-12 | 2019-06-12 |  |  |  |  | 高祥云; 罗加云 | 16h |  | 100% |  |  |  |
| 18 | 1.2.4 | 合同总额功能开发 | manual | 1d | 2019-06-12 | 2019-06-13 |  |  |  | finish no earlier than 2019-06-12 |  |  |  | 100% |  |  |  |
| 19 | 1.2.5 | 业绩总额功能开发 | manual | 1d | 2019-06-12 | 2019-06-13 |  |  |  | finish no earlier than 2019-06-12 |  |  |  | 100% |  |  |  |
| 20 | 1.2.6 | 回款功能开发 | manual | 1d | 2019-06-12 | 2019-06-13 |  |  |  | finish no earlier than 2019-06-12 |  |  |  | 100% |  |  |  |
| 21 | 1.2.7 | 功能测试 | manual | 1d | 2019-06-13 | 2019-06-13 |  |  |  |  | 杜振兴; 高祥云 | 16h |  | 100% | 测试用例，测试报告 | 2019年6月13号 |  |
| 22 | 1.2.8 | 修改页面布局及样式 | manual | 2d | 2019-06-17 | 2019-06-19 |  |  |  | finish no earlier than 2019-06-18 |  |  |  | 100% |  |  |  |
| 23 | 1.2.9 | 功能部署上线 | manual | 1d | 2019-06-14 | 2019-06-14 |  |  |  |  | 杜振兴; 高祥云 | 16h |  | 100% |  |  |  |
| 24 | 1.2.10 | 修改权限问题 | manual | 5d | 2019-07-08 | 2019-07-12 |  |  |  | finish no earlier than 2019-07-10 |  |  |  | 100% |  |  |  |

Notes:
- 6: 在chrome上1080P有较好适应，ie下仍有问题
- 7: 岗位人数，在岗，空岗，总人数
- 11: 周三中午新的ui样式上线
- 12: 需求增加人力资源和现金流部分
- 17: 由于方案尚未彻底敲定，现按照中间版本进行开发
- 19: 业绩漏斗昨天确定
- 20: 回款漏斗换成环形图
- 24: 由于发现部分事业群分管领导所属为管理层，拿不到其相应的所属事业群

| ID | WBS | Task | Type | Duration | Start | Finish | Complete | Remaining | Constraint | Resources | Work | Actual work | 交付物 | 进度 | 交付时间 |
| --- | --- | --- | --- | --- | --- | --- | --- | --- | --- | --- | --- | --- | --- | --- | --- |
| 25 | 1.3 | **损益表** | inactive | 14d | 2019-06-24 | 2019-07-12 |  |  |  |  | 240h |  |  |  |  |
| 26 | 1.3.1 | 用户需求/需求分析 | inactive, manual | 4d | 2019-06-24 | 2019-06-27 |  |  |  | 高祥云; 罗加云 | 64h |  | 需求分析文档，bi详细设计,概要设计文档 | 100% | 2019年6月12日 |
| 27 | 1.3.2 | 方案设计/Demo展示 | inactive, manual | 4d | 2019-06-24 | 2019-06-27 |  |  |  | 高祥云; 罗加云 | 64h |  |  | 100% |  |
| 28 | 1.3.3 | 功能开发 | inactive, manual | 3d | 2019-07-03 | 2019-07-05 |  |  |  | 高祥云; 罗加云 | 48h |  |  |  |  |
| 29 | 1.3.4 | 功能测试 | inactive, manual | 3d | 2019-07-08 | 2019-07-10 |  |  |  | 杜振兴; 高祥云 | 48h |  | 测试用例 |  |  |
| 30 | 1.3.5 | 功能部署上线 | inactive, manual | 1d | 2019-07-11 | 2019-07-12 |  |  |  | 杜振兴; 高祥云 | 16h |  | 概要设计文档 |  |  |
| 31 | 1.4 | **资产负债表** | inactive | 5d | 2019-06-24 | 2019-06-28 |  |  |  |  | 144h |  |  |  |  |
| 32 | 1.4.1 | 用户需求/需求分析 | inactive, manual | 3d | 2019-06-24 | 2019-06-26 |  |  |  | 高祥云; 罗加云 | 48h |  | 需求分析文档，bi详细设计,概要设计文档 |  | 2019年6月20日 |
| 33 | 1.4.2 | 方案设计/Demo展示 | inactive, manual | 3d | 2019-06-24 | 2019-06-26 |  |  |  | 高祥云; 罗加云 | 48h |  |  |  |  |
| 34 | 1.4.3 | 功能开发 | inactive, manual | 1d | 2019-06-26 | 2019-06-26 |  |  |  | 高祥云; 罗加云 | 16h |  |  |  |  |
| 35 | 1.4.4 | 功能测试 | inactive, manual | 1d | 2019-06-27 | 2019-06-27 |  |  |  | 杜振兴; 高祥云 | 16h |  | 测试用例 |  |  |
| 36 | 1.4.5 | 功能部署上线 | inactive, manual | 1d | 2019-06-28 | 2019-06-28 |  |  |  | 杜振兴; 高祥云 | 16h |  |  |  |  |
| 37 | 1.5 | **现金流量表** | inactive | 7d | 2019-06-27 | 2019-07-05 |  |  |  |  | 112h |  |  |  |  |
| 38 | 1.5.1 | 用户需求/需求分析 | inactive, manual | 3d | 2019-06-27 | 2019-07-01 |  |  |  | 高祥云; 罗加云 | 48h |  | 需求分析文档，bi详细设计,概要设计文档 |  | 2019年6月27日 |
| 39 | 1.5.2 | 方案设计/Demo展示 | inactive, manual | 1d | 2019-07-02 | 2019-07-02 |  |  |  | 高祥云; 罗加云 | 16h |  |  |  |  |
| 40 | 1.5.3 | 功能开发 | inactive, manual | 1d | 2019-07-03 | 2019-07-03 |  |  |  | 高祥云; 罗加云 | 16h |  |  |  |  |
| 41 | 1.5.4 | 功能测试 | inactive, manual | 1d | 2019-07-04 | 2019-07-04 |  |  |  | 杜振兴; 高祥云 | 16h |  | 测试用例 |  |  |
| 42 | 1.5.5 | 功能部署上线 | inactive, manual | 1d | 2019-07-05 | 2019-07-05 |  |  |  | 杜振兴; 高祥云 | 16h |  | 概要设计文档 |  |  |
| 43 | 1.6 | **工程项目分析/售后400分析** |  | 19d | 2019-06-18 A | 2019-07-12 | 39% | 11.68d |  |  | 328h | 117.31h |  | 100% |  |
| 44 | 1.6.1 | 用户需求/需求分析 | manual | 2d | 2019-06-18 A | 2019-06-19 A | 100% |  |  | 高祥云; 罗加云 | 32h | 32h | 需求分析文档,详细设计文档,概要设计文档 | 100% | 2019年7月15日 |
| 45 | 1.6.2 | **方案设计/Demo展示** |  | 2d | 2019-06-19 A | 2019-06-21 | 99% | 0d |  | 高祥云; 罗加云 | 72h | 70h |  | 100% |  |
| 46 | 1.6.2.1 | exceldemo原型 | manual | 1d | 2019-06-19 A | 2019-06-20 A | 100% |  |  | 高祥云 | 8h | 8h |  | 100% |  |
| 47 | 1.6.2.2 | 根据需求进行数据建模 | manual | 1d | 2019-06-19 A | 2019-06-20 A | 100% |  | start no earlier than 2019-06-19 | 罗加云 | 8h | 8h |  | 100% |  |
| 48 | 1.6.2.3 | exceldemo原型问题分析及修改 | manual | 1d | 2019-06-19 A | 2019-06-20 A | 100% |  |  | 高祥云 | 8h | 8h |  | 100% |  |
| 49 | 1.6.2.4 | 测试数据插入 | manual | 1d | 2019-06-20 A | 2019-06-20 A | 100% |  | finish no earlier than 2019-06-20 | 杜振兴 | 8h | 8h |  | 100% |  |
| 50 | 1.6.2.5 | bi或report初版页面 | manual | 1d | 2019-06-20 A | 2019-06-20 A | 100% |  |  | 杜振兴 | 8h | 8h |  | 100% |  |

Notes:
- 44: 需要拿到页面数据将从哪里来，用于数据确认阶段及测试阶段，确认维度量级，以便页面展示数据的多少的确认。/ 1.确认指标维度/ 2.确认指标维度是否够用，重要级进行排序
- 46: 方案设计：exceldemo原型

| ID | WBS | Task | Type | Duration | Start | Finish | Complete | Remaining | Constraint | Resources | Work | Actual work | 进度 | 交付物 | 交付时间 |
| --- | --- | --- | --- | --- | --- | --- | --- | --- | --- | --- | --- | --- | --- | --- | --- |
| 51 | 1.6.3 | **功能开发** |  | 3d | 2019-06-20 A | 2019-06-25 | 14% | 2.59d |  | 高祥云; 罗加云 | 128h | 15.31h |  |  |  |
| 52 | 1.6.3.1 | 进行初版页面的问题跟踪 | manual | 1d | 2019-06-21 | 2019-06-24 |  |  | finish no earlier than 2019-06-21 | 杜振兴; 高祥云 | 16h |  | 100% |  |  |
| 53 | 1.6.3.2 | etl数据确认 | manual | 1d | 2019-06-20 A | 2019-06-21 | 66% | 0.34d | start no earlier than 2019-06-20 | 罗加云 | 8h | 5.25h | 100% |  |  |
| 54 | 1.6.3.3 | 如有问题，问题解决方案 | manual | 1d | 2019-06-21 | 2019-06-24 |  |  | finish no earlier than 2019-06-21 | 杜振兴; 高祥云 | 16h |  | 100% |  |  |
| 55 | 1.6.3.4 | 页面原型再版 | manual | 2d | 2019-06-21 | 2019-06-25 |  |  | finish no earlier than 2019-06-24 | 杜振兴 | 16h |  | 100% |  |  |
| 56 | 1.6.3.5 | etl数据抽取转换 | manual | 1d | 2019-06-21 A | 2019-06-21 | 44% | 0.56d | finish no earlier than 2019-06-21 | 罗加云 | 8h | 3.5h | 100% |  |  |
| 57 | 1.6.3.6 | 页面原型在版迭代 | manual | 1d | 2019-06-24 | 2019-06-25 |  |  | finish no earlier than 2019-06-24 | 杜振兴 | 8h |  | 100% |  |  |
| 58 | 1.6.3.7 | etl数据抽取转换迭代 | manual | 1d | 2019-06-24 | 2019-06-25 |  |  | finish no earlier than 2019-06-24 | 罗加云 | 8h |  | 100% |  |  |
| 59 | 1.6.4 | **功能测试** |  | 2d | 2019-06-24 | 2019-06-26 |  |  |  | 杜振兴; 高祥云 | 64h |  |  | 测试用例，测试报告 | 2019年7月15日 |
| 60 | 1.6.4.1 | 数据逻辑确认 | manual | 2d | 2019-06-24 | 2019-06-26 |  |  | start no earlier than 2019-06-24 | 杜振兴; 罗加云 | 32h |  | 100% |  |  |
| 61 | 1.6.5 | 功能部署上线 | manual | 2d | 2019-06-25 | 2019-06-26 |  |  |  | 杜振兴; 高祥云 | 32h |  | 100% |  |  |
| 62 | 1.6.6 | 修改权限问题 | manual | 2d | 2019-07-10 | 2019-07-12 |  |  | start no earlier than 2019-07-10 |  |  |  | 100% |  |  |
| 63 | 1.7 | **人力资源分析** |  | 13d | 2019-06-25 | 2019-07-11 |  |  |  |  | 416h |  |  |  |  |
| 64 | 1.7.1 | 用户需求/需求分析 | manual | 1d | 2019-06-25 | 2019-06-26 |  |  | start no earlier than 2019-06-25 |  |  |  | 100% |  |  |
| 65 | 1.7.2 | **方案设计/Demo展示** |  | 1d | 2019-06-25 | 2019-06-26 |  |  |  |  |  |  |  |  |  |
| 66 | 1.7.2.1 | exceldemo原型 | manual | 1d | 2019-06-25 | 2019-06-26 |  |  |  |  |  |  | 100% |  |  |
| 67 | 1.7.2.2 | 根据需求进行数据建模 | manual | 1d | 2019-06-25 | 2019-06-26 |  |  |  |  |  |  | 100% |  |  |
| 68 | 1.7.2.3 | exceldemo原型问题分析及修改 | manual | 1d | 2019-06-25 | 2019-06-26 |  |  |  |  |  |  | 100% |  |  |
| 69 | 1.7.2.4 | 测试数据插入 | manual | 1d | 2019-06-25 | 2019-06-26 |  |  |  |  |  |  | 100% |  |  |
| 70 | 1.7.2.5 | bi或report初版页面 | manual | 1d | 2019-06-25 | 2019-06-26 |  |  |  |  |  |  | 100% |  |  |
| 71 | 1.7.3 | **功能开发** |  | 5d | 2019-06-25 | 2019-07-01 |  |  |  |  | 32h |  |  |  |  |
| 72 | 1.7.3.1 | 进行初版页面的问题跟踪 | manual | 1d | 2019-06-25 | 2019-06-26 |  |  |  |  |  |  | 100% |  |  |
| 73 | 1.7.3.2 | etl数据确认 | manual | 1d | 2019-06-25 | 2019-06-26 |  |  |  |  |  |  | 100% |  |  |
| 74 | 1.7.3.3 | 如有问题，问题解决方案 | manual | 2d | 2019-06-26 | 2019-06-27 |  |  |  | 高祥云; 罗加云 | 32h |  | 100% | 需求分析文档,详细设计文档,概要设计文档 | 2019年7月15日 |
| 75 | 1.7.3.4 | 页面原型再版 | manual | 1d | 2019-06-27 | 2019-06-27 |  |  | finish no earlier than 2019-06-27 |  |  |  | 100% |  |  |
| 76 | 1.7.3.5 | etl数据抽取转换 | manual | 2d | 2019-06-27 | 2019-06-28 |  |  | finish no earlier than 2019-06-28 |  |  |  | 100% |  |  |
| 77 | 1.7.3.6 | 页面原型在版迭代 | manual | 3d | 2019-06-27 | 2019-07-01 |  |  | finish no earlier than 2019-07-01 |  |  |  | 100% |  |  |
| 78 | 1.7.3.7 | etl数据抽取转换迭代 | manual | 3d | 2019-06-27 | 2019-07-01 |  |  | finish no earlier than 2019-07-01 |  |  |  | 100% |  |  |

| ID | WBS | Task | Type | Duration | Start | Finish | Constraint | Resources | Work | 交付物 | 交付时间 | 进度 |
| --- | --- | --- | --- | --- | --- | --- | --- | --- | --- | --- | --- | --- |
| 79 | 1.7.4 | **功能测试** |  | 8d | 2019-07-02 | 2019-07-11 |  | 高祥云; 罗加云 | 272h | 测试用例，测试报告 | 2019年7月15日 |  |
| 80 | 1.7.4.1 | 页面逻辑确认 | manual | 9d | 2019-07-01 | 2019-07-11 | finish no earlier than 2019-07-03 |  |  |  |  | 100% |
| 81 | 1.7.4.2 | 页面数据确认 | manual | 9d | 2019-07-01 | 2019-07-11 |  | 高祥云; 罗加云 | 144h |  |  | 100% |
| 82 | 1.7.5 | 功能部署上线 | manual | 7d | 2019-07-03 | 2019-07-11 |  | 杜振兴; 高祥云 | 112h |  |  | 100% |
| 83 | 1.8 | **三表相关开发** |  | 40d | 2019-07-01 | 2019-08-23 |  |  | 824h |  |  |  |
| 84 | 1.8.1 | **etl功能** |  | 30d | 2019-07-01 | 2019-08-09 |  |  | 216h |  |  |  |
| 85 | 1.8.1.1 | etl需求整理 | manual | 3d | 2019-07-01 | 2019-07-03 | finish no earlier than 2019-07-03 | 罗加云 | 24h | 需求分析文档 | 2019年7月15日 | 100% |
| 86 | 1.8.1.2 | 配合方案确定 | manual | 5d | 2019-07-04 | 2019-07-10 | finish no earlier than 2019-07-08 | 罗加云 | 40h | 详细设计文档,概要设计文档 | 2019年7月15日 | 100% |
| 87 | 1.8.1.3 | etl数据建模 | inactive, manual | 1d | 2019-07-09 | 2019-07-09 | finish no earlier than 2019-07-09 | 罗加云 | 8h |  |  |  |
| 88 | 1.8.1.4 | etl转换底层数据表 | manual | 1d | 2019-07-09 | 2019-07-09 | finish no earlier than 2019-07-09 | 罗加云 | 8h |  |  | 100% |
| 89 | 1.8.1.5 | etl查漏数据表 | inactive, manual | 1d | 2019-07-11 | 2019-07-11 | finish no earlier than 2019-07-11 | 罗加云 | 8h |  |  |  |
| 90 | 1.8.1.6 | etl进行损益表数据配置，汇总逻辑，权限逻辑，业务实现等内容的相关开发 | manual | 5d | 2019-07-10 | 2019-07-16 | finish no earlier than 2019-07-16 | 罗加云 | 40h |  |  | 100% |
| 91 | 1.8.1.7 | etl检验损益表相关数据逻辑 | manual | 1d | 2019-07-17 | 2019-07-17 | finish no earlier than 2019-07-17 | 罗加云 | 8h |  |  | 100% |
| 92 | 1.8.1.8 | etl进行资产负债表数据配置，汇总逻辑，权限逻辑，业务实现等内容的相关开发 | manual | 5d | 2019-07-18 | 2019-07-24 | finish no earlier than 2019-07-24 | 罗加云 | 40h |  |  | 100% |
| 93 | 1.8.1.9 | etl检验资产负债表相关数据逻辑 | manual | 1d | 2019-07-25 | 2019-07-25 | finish no earlier than 2019-07-25 | 罗加云 | 8h |  |  | 100% |
| 94 | 1.8.1.10 | etl进行现金流量表数据配置，汇总逻辑，权限逻辑，业务实现等内容的相关开发 | manual | 5d | 2019-07-26 | 2019-08-01 | finish no earlier than 2019-08-01 | 罗加云 | 40h |  |  | 100% |
| 95 | 1.8.1.11 | etl检验现金流量表相关数据逻辑 | manual | 1d | 2019-08-02 | 2019-08-02 | finish no earlier than 2019-08-02 | 罗加云 | 8h |  |  | 100% |
| 96 | 1.8.1.12 | 修改现金流量表的错误逻辑 | manual | 1d | 2019-08-06 | 2019-08-06 |  |  |  |  |  | 100% |
| 97 | 1.8.1.13 | 解决未完成的相关问题 | manual | 5d | 2019-08-05 | 2019-08-09 | finish no earlier than 2019-08-09 |  |  |  |  | 100% |
| 98 | 1.8.2 | **中台开发** | inactive | 30d | 2019-07-01 | 2019-08-09 |  |  |  |  |  |  |
| 99 | 1.8.2.1 | 需求整理 | inactive, manual | 3d | 2019-07-01 | 2019-07-03 | finish no earlier than 2019-07-03 |  |  |  |  | 100% |
| 100 | 1.8.2.2 | 配合方案确定 | inactive, manual | 5d | 2019-07-04 | 2019-07-10 | finish no earlier than 2019-07-08 |  |  |  |  | 100% |
| 101 | 1.8.2.3 | 中台相关设计方案的确定 | inactive, manual | 5d | 2019-07-09 | 2019-07-15 | finish no earlier than 2019-07-15 |  |  |  |  | 100% |
| 102 | 1.8.2.4 | 中台搭建 | inactive, manual | 1d | 2019-07-16 | 2019-07-16 | finish no earlier than 2019-07-16 |  |  |  |  |  |
| 103 | 1.8.2.5 | 中台开发任务调度模块底层实现 | inactive, manual | 7d | 2019-07-17 | 2019-07-25 | finish no earlier than 2019-07-25 |  |  |  |  |  |
| 104 | 1.8.2.6 | 中台开发相关页面 | inactive, manual | 3d | 2019-07-26 | 2019-07-30 | finish no earlier than 2019-07-30 |  |  |  |  |  |
| 105 | 1.8.2.7 | 中台进行相关测试 | inactive, manual | 3d | 2019-07-31 | 2019-08-02 | finish no earlier than 2019-08-02 |  |  |  |  |  |
| 106 | 1.8.2.8 | 中台集成测试问题解决 | inactive, manual | 5d | 2019-08-05 | 2019-08-09 | finish no earlier than 2019-08-09 |  |  |  |  |  |

Notes:
- 79: 需家园修改相关问题后核对，由于家园系统中存在部分数据问题，相关报表的数据逻辑已经测试通过，等待客户修改问题后进行集成测试，目前相关问题已反馈，正在进行处理中。持续跟进
- 80: 需家园修改相关问题后核对，由于家园系统中存在部分数据问题，相关报表的数据逻辑已经测试通过，等待客户修改问题后进行集成测试，目前相关问题已反馈，正在进行处理中。持续跟进
- 81: 需家园修改相关问题后核对，由于家园系统中存在部分数据问题，相关报表的数据逻辑已经测试通过，等待客户修改问题后进行集成测试，目前相关问题已反馈，正在进行处理中。持续跟进
- 82: 需家园修改相关问题后核对，由于家园系统中存在部分数据问题，相关报表的数据逻辑已经测试通过，等待客户修改问题后进行集成测试，目前相关问题已反馈，正在进行处理中。持续跟进
- 90: 已核对完成损益表表项及利润中心汇总的相关逻辑
- 96: SAP现金流量表中，期初现金及现金等价物余额数据取数逻辑有误，现将修改该部分逻辑，以保证BI系统中该项及该项的合计项数据正确。

| ID | WBS | Task | Type | Duration | Start | Finish | Predecessors | Constraint | Resources | Work | 进度 | 交付物 | 交付时间 |
| --- | --- | --- | --- | --- | --- | --- | --- | --- | --- | --- | --- | --- | --- |
| 107 | 1.8.3 | **report开发** |  | 40d | 2019-07-01 | 2019-08-23 |  |  |  | 608h |  |  |  |
| 108 | 1.8.3.1 | 需求整理：3天 （7.1 7.2 7.3） | manual | 3d | 2019-07-01 | 2019-07-04 |  | start no earlier than 2019-07-01 | 杜振兴 | 24h | 100% |  |  |
| 109 | 1.8.3.2 | 配合方案确定：3天 （7.4 7.5 7.8） | manual | 5d | 2019-07-04 | 2019-07-10 |  | start no earlier than 2019-07-04 | 杜振兴 | 40h | 100% |  |  |
| 110 | 1.8.3.3 | 整理相关需求：1天 （7.9） | manual | 1d | 2019-07-09 | 2019-07-09 |  | finish no earlier than 2019-07-09 | 杜振兴 | 8h | 100% |  |  |
| 111 | 1.8.3.4 | **损益表开发** |  | 9d | 2019-07-11 | 2019-07-23 |  |  | 杜振兴 | 128h |  |  |  |
| 112 | 1.8.3.4.1 | 损益表开发 2天 （7.10 7.11） | manual | 2d | 2019-07-10 | 2019-07-12 |  | start no earlier than 2019-07-10 | 杜振兴 | 16h | 100% |  |  |
| 113 | 1.8.3.4.2 | 损益表钻取利润中心的开发 1天 （7.12） ->利润中心子表的开发 | manual | 1d | 2019-07-15 | 2019-07-15 |  | start no earlier than 2019-07-15 | 杜振兴 | 8h | 100% |  |  |
| 114 | 1.8.3.4.3 | 损益表及利润中心钻取到会计科目的开发 1天 （7.15） ->会计科目子表的开发 | manual | 1d | 2019-07-16 | 2019-07-16 |  | start no earlier than 2019-07-16 | 杜振兴 | 8h | 100% |  |  |
| 115 | 1.8.3.4.4 | 钻取到明细表的开发 1天 （7.16） ->明细表的开发 | manual | 1d | 2019-07-17 | 2019-07-17 |  | start no earlier than 2019-07-17 | 杜振兴 | 8h | 100% |  |  |
| 116 | 1.8.3.4.5 | 损益表核对页面及逻辑修改 2天 （7.18 7.19） | manual | 2d | 2019-07-18 | 2019-07-19 | 91 | finish no earlier than 2019-07-19 | 杜振兴 | 16h | 100% | 测试用例，测试报告 | 2019年7月19号 |
| 117 | 1.8.3.4.6 | 损益表初步上线（小范围测试试用） | manual | 1d | 2019-07-22 | 2019-07-22 |  | finish no earlier than 2019-07-22 |  |  | 100% |  |  |
| 118 | 1.8.3.4.7 | 损益表正式上线 | manual | 1d | 2019-07-23 | 2019-07-23 |  | finish no earlier than 2019-07-23 |  |  | 100% |  |  |
| 119 | 1.8.3.4.8 | 财务新增横向分析需求的相关实现调研 | manual | 6d | 2019-08-02 | 2019-08-09 |  | finish no earlier than 2019-08-07 |  |  | 100% |  |  |
| 120 | 1.8.3.4.9 | 相关开发任务的具体到确定后进行计划的调整 | manual | 1d | 2019-08-12 | 2019-08-12 |  | finish no earlier than 2019-08-12 |  |  | 100% |  |  |
| 121 | 1.8.3.5 | **资产负债表开发** |  | 14d | 2019-07-17 | 2019-08-05 |  |  | 杜振兴 | 160h |  |  |  |
| 122 | 1.8.3.5.1 | 资产负债表需求核对 （7.17） | manual | 1d | 2019-07-17 | 2019-07-17 |  | finish no earlier than 2019-07-17 | 杜振兴 | 8h | 100% |  |  |
| 123 | 1.8.3.5.2 | 资产负债表开发 2天 （7.22 7.23） | manual | 2d | 2019-07-22 | 2019-07-23 |  | finish no earlier than 2019-07-23 | 杜振兴 | 16h | 100% |  |  |
| 124 | 1.8.3.5.3 | 资产负债表钻取利润中心的开发 1天 （7.24） ->利润中心子表的开发 | inactive, manual | 1d | 2019-07-24 | 2019-07-24 |  | finish no earlier than 2019-07-24 | 杜振兴 | 8h |  |  |  |
| 125 | 1.8.3.5.4 | 资产负债表会计科目的开发 1天 （7.25） | manual | 1d | 2019-07-25 | 2019-07-25 |  | finish no earlier than 2019-07-25 | 杜振兴 | 8h | 100% |  |  |
| 126 | 1.8.3.5.5 | 钻取到明细表的开发 1天 （7.26） ->明细表的开发 | inactive, manual | 1d | 2019-07-26 | 2019-07-26 |  | finish no earlier than 2019-07-26 | 杜振兴 | 8h |  |  |  |
| 127 | 1.8.3.5.6 | 资产负债表核对页面及逻辑修改 2天 （7.29 7.30） | manual | 2d | 2019-07-29 | 2019-07-30 | 93 | finish no earlier than 2019-07-30 | 杜振兴 | 16h | 100% | 测试用例，测试报告 | 2019年7月30日 |
| 128 | 1.8.3.5.7 | 资产负债表上线(小范围测试试用) | manual | 2d | 2019-07-31 | 2019-08-01 |  |  |  |  | 100% |  |  |
| 129 | 1.8.3.5.8 | 资产负债表正式上线 | manual | 2d | 2019-08-02 | 2019-08-05 |  |  |  |  | 100% |  |  |
| 130 | 1.8.3.6 | **现金流量表开发** |  | 13d | 2019-07-29 | 2019-08-14 |  |  | 杜振兴 | 168h |  |  |  |
| 131 | 1.8.3.6.1 | 现金流量表需求核对 （7.29） | manual | 1d | 2019-07-29 | 2019-07-29 |  | finish no earlier than 2019-07-29 | 杜振兴 | 8h | 100% |  |  |
| 132 | 1.8.3.6.2 | 现金流量表开发 2天 （7.30 7.31） | manual | 2d | 2019-07-30 | 2019-07-31 |  | finish no earlier than 2019-07-31 | 杜振兴 | 16h | 100% |  |  |
| 133 | 1.8.3.6.3 | 现金流量表钻取利润中心的开发 1天 （8.5） ->利润中心子表的开发 | manual | 1d | 2019-08-05 | 2019-08-05 |  | finish no earlier than 2019-08-05 | 杜振兴 | 8h | 100% |  |  |
| 134 | 1.8.3.6.4 | 现金流量表及利润中心钻取到会计科目的开发 1天 （8.6，8.7） ->会计科目子表的开发 | manual | 2d | 2019-08-06 | 2019-08-07 |  | start no earlier than 2019-08-06 | 杜振兴 | 16h | 100% |  |  |
| 135 | 1.8.3.6.5 | 现金流量表核对页面及逻辑修改 2天 （8.8 8.9） | manual | 2d | 2019-08-08 | 2019-08-09 | 94 | finish no earlier than 2019-08-09 | 杜振兴 | 16h | 100% | 测试用例，测试报告 | 2019年8月9日 |
| 136 | 1.8.3.6.6 | 现金流量表上线（小范围测试试用） | manual | 2d | 2019-08-12 | 2019-08-13 |  | start no earlier than 2019-08-12 |  |  | 100% |  |  |
| 137 | 1.8.3.6.7 | 现金流量表正式上线 | manual | 1d | 2019-08-14 | 2019-08-14 |  |  |  |  | 100% |  |  |
| 138 | 1.8.3.7 | 集成测试 | manual | 4d | 2019-08-12 | 2019-08-15 |  | finish no earlier than 2019-08-15 | 杜振兴 | 32h | 100% |  |  |
| 139 | 1.8.3.8 | 支持运维 | manual | 6d | 2019-08-16 | 2019-08-23 |  | finish no earlier than 2019-08-23 | 杜振兴 | 48h |  |  |  |

Notes:
- 112: 调整为12日完成
- 117: 将权限开给了财务申请的几个部门小范围测试
- 124: 资产负债表不做钻取操作
- 125: 会计科目表不做钻取，更名为科目详情表
- 126: 资产负债表不做钻取操作
- 129: 由于财务资产负债表尚未调平，应财务要求将上线时间修改为周一
- 136: 目前由于sap8月3日升级导致利润中心等主数据未同步到Oracle，将于8月13日进行完全上线。该功能同财务确认不再进行小范围推广试用，直接进行整体上线

| ID | WBS | Task | Type | Duration | Start | Finish | Constraint | 进度 |
| --- | --- | --- | --- | --- | --- | --- | --- | --- |
| 140 | 1.9 | **员工结构分析修改权限** |  | 19d | 2019-07-23 | 2019-08-16 |  |  |
| 141 | 1.9.1 | 分析模型需求 | manual | 2d | 2019-07-23 | 2019-07-24 | finish no earlier than 2019-07-24 | 100% |
| 142 | 1.9.2 | 数据库模型重构 | manual | 1d | 2019-07-24 | 2019-07-24 | finish no earlier than 2019-07-24 | 100% |
| 143 | 1.9.3 | 页面取数逻辑修改 | manual | 1d | 2019-07-25 | 2019-07-25 | finish no earlier than 2019-07-25 | 100% |
| 144 | 1.9.4 | 测试环境测试 | manual | 1d | 2019-07-26 | 2019-07-26 | finish no earlier than 2019-07-26 | 100% |
| 145 | 1.9.5 | 正式环境验证 | manual | 2d | 2019-07-26 | 2019-07-29 | finish no earlier than 2019-07-29 | 100% |
| 146 | 1.9.6 | 权限模型:程序上线 | manual | 5d | 2019-07-30 | 2019-08-04 | finish no earlier than 2019-07-30 | 100% |
| 147 | 1.9.7 | 用户权限配置 | manual | 2d | 2019-08-02 | 2019-08-04 |  | 100% |
| 148 | 1.9.8 | 试运行 | manual | 10d | 2019-08-05 | 2019-08-16 | finish no earlier than 2019-08-16 |  |
| 149 | 1.10 | **员工流动分析修改权限** |  | 18d | 2019-07-24 | 2019-08-16 |  |  |
| 150 | 1.10.1 | 分析模型需求 | manual | 1d | 2019-07-24 | 2019-07-24 | finish no earlier than 2019-07-24 | 100% |
| 151 | 1.10.2 | 数据库模型重构 | manual | 1d | 2019-07-25 | 2019-07-25 | finish no earlier than 2019-07-25 | 100% |
| 152 | 1.10.3 | 页面取数逻辑修改 | manual | 1d | 2019-07-26 | 2019-07-26 | finish no earlier than 2019-07-26 | 100% |
| 153 | 1.10.4 | 测试环境测试 | manual | 1d | 2019-07-29 | 2019-07-29 | finish no earlier than 2019-07-29 | 100% |
| 154 | 1.10.5 | 正式环境验证 | manual | 2d | 2019-07-29 | 2019-07-30 | finish no earlier than 2019-07-30 | 100% |
| 155 | 1.10.6 | 权限模型:程序上线 | manual | 5d | 2019-07-30 | 2019-08-04 | finish no earlier than 2019-07-30 | 100% |
| 156 | 1.10.7 | 用户权限配置 | manual | 2d | 2019-08-02 | 2019-08-04 |  | 100% |
| 157 | 1.10.8 | 试运行 | manual | 10d | 2019-08-05 | 2019-08-16 | finish no earlier than 2019-08-16 |  |
| 158 | 1.11 | **业绩回款修改权限** |  | 14d | 2019-07-30 | 2019-08-16 |  |  |
| 159 | 1.11.1 | 确认数据权限关联问题 | manual | 1d | 2019-07-30 | 2019-07-30 | finish no earlier than 2019-07-30 | 100% |
| 160 | 1.11.2 | 分析模型需求 | manual | 1d | 2019-07-31 | 2019-07-31 | finish no earlier than 2019-07-31 | 100% |
| 161 | 1.11.3 | 数据库模型重构 | manual | 1d | 2019-08-01 | 2019-08-01 | finish no earlier than 2019-08-01 | 100% |
| 162 | 1.11.4 | 页面取数逻辑修改 | manual | 1d | 2019-08-02 | 2019-08-02 | finish no earlier than 2019-08-02 | 100% |
| 163 | 1.11.5 | 测试环境测试 | manual | 1d | 2019-08-05 | 2019-08-05 | finish no earlier than 2019-08-05 | 100% |
| 164 | 1.11.6 | 正式环境验证 | manual | 2d | 2019-08-05 | 2019-08-07 | start no earlier than 2019-08-05 | 100% |
| 165 | 1.11.7 | 上线 | manual | 1d | 2019-08-04 | 2019-08-04 | start no earlier than 2019-08-04 | 100% |
| 166 | 1.11.8 | 权限模型:程序上线 | manual | 5d | 2019-07-30 | 2019-08-04 | finish no earlier than 2019-07-30 | 100% |
| 167 | 1.11.9 | 用户权限配置 | manual | 2d | 2019-08-02 | 2019-08-04 |  | 100% |
| 168 | 1.11.10 | 试运行 | manual | 10d | 2019-08-05 | 2019-08-16 | finish no earlier than 2019-08-16 |  |

Notes:
- 146: 已上生产，待配权限
- 155: 已上生产，待配权限
- 165: 将计划提前到周日上线
- 166: 已上生产，待配权限

| ID | WBS | Task | Type | Duration | Start | Finish | Constraint | 进度 |
| --- | --- | --- | --- | --- | --- | --- | --- | --- |
| 169 | 1.12 | **合同总额修改权限** |  | 12d | 2019-08-01 | 2019-08-16 |  |  |
| 170 | 1.12.1 | 分析模型需求 | manual | 2d | 2019-07-31 | 2019-08-01 | finish no earlier than 2019-08-01 | 100% |
| 171 | 1.12.2 | 数据库模型重构 | manual | 1d | 2019-08-02 | 2019-08-02 | finish no earlier than 2019-08-02 | 100% |
| 172 | 1.12.3 | 页面取数逻辑修改 | manual | 1d | 2019-08-05 | 2019-08-05 | finish no earlier than 2019-08-05 | 100% |
| 173 | 1.12.4 | 测试环境测试 | manual | 1d | 2019-08-06 | 2019-08-06 | finish no earlier than 2019-08-06 | 100% |
| 174 | 1.12.5 | 正式环境验证 | manual | 2d | 2019-08-06 | 2019-08-07 | finish no earlier than 2019-08-07 | 100% |
| 175 | 1.12.6 | 上线 | manual | 1d | 2019-08-04 | 2019-08-04 | start no earlier than 2019-08-04 | 100% |
| 176 | 1.12.7 | 权限模型:程序上线 | manual | 5d | 2019-07-30 | 2019-08-04 | finish no earlier than 2019-07-30 | 100% |
| 177 | 1.12.8 | 用户权限配置 | manual | 2d | 2019-08-02 | 2019-08-04 |  | 100% |
| 178 | 1.12.9 | 试运行 | manual | 10d | 2019-08-05 | 2019-08-16 | finish no earlier than 2019-08-16 |  |
| 179 | 1.13 | **数据核对相关工作** |  | 8d | 2019-08-05 | 2019-08-14 |  |  |
| 180 | 1.13.1 | 合同总额数据相关核对任务及发现问题汇总 | manual | 1d | 2019-08-06 | 2019-08-06 | finish no earlier than 2019-08-06 | 100% |
| 181 | 1.13.2 | 业绩数据核对及相关问题汇总 | manual | 2d | 2019-08-07 | 2019-08-09 | start no earlier than 2019-08-07 | 100% |
| 182 | 1.13.3 | 回款数据核对及相关问题汇总 | manual | 2d | 2019-08-07 | 2019-08-09 | start no earlier than 2019-08-07 | 100% |
| 183 | 1.13.4 | 人力资源分析数据核对及相关问题汇总 | manual | 1d | 2019-08-12 | 2019-08-12 |  | 100% |
| 184 | 1.13.5 | 工程售后数据核对及相关问题汇总 | manual | 1d | 2019-08-13 | 2019-08-14 | finish no earlier than 2019-08-13 | 100% |
| 185 | 1.14 | **损益表新增跳转家园项目详情页面** |  | 10d | 2019-08-12 | 2019-08-23 |  |  |
| 186 | 1.14.1 | 需求调研 | manual | 3d | 2019-08-07 | 2019-08-09 |  | 100% |
| 187 | 1.14.2 | 项目原型_设计 | manual | 2d | 2019-08-12 | 2019-08-13 |  | 100% |
| 188 | 1.14.3 | 案例测试 | manual | 2d | 2019-08-13 | 2019-08-14 |  | 100% |
| 189 | 1.14.4 | 开发相关功能 | manual | 1d | 2019-08-15 | 2019-08-15 |  | 100% |
| 190 | 1.14.5 | 部署修改内容 | manual | 1d | 2019-08-16 | 2019-08-16 |  | 100% |
| 191 | 1.14.6 | 内部测试 | manual | 1d | 2019-08-16 | 2019-08-16 |  | 100% |
| 192 | 1.14.7 | 程序上线小规模用户验证 | inactive, manual | 1d | 2019-08-19 | 2019-08-19 |  |  |
| 193 | 1.14.8 | 公司推广&试运行 | inactive, manual | 4d | 2019-08-20 | 2019-08-23 |  |  |

Notes:
- 175: 将计划提前至周日上线
- 176: 已上生产，待配权限
- 185: 该需求属于损益表上线后新增需求

| ID | WBS | Task | Type | Duration | Start | Finish | Resources | Work | 交付物 | 进度 | 交付时间 |
| --- | --- | --- | --- | --- | --- | --- | --- | --- | --- | --- | --- |
| 194 | 1.15 | **确认收入+行业业绩统计** |  | 25d | 2019-07-29 | 2019-08-30 |  | 80h |  |  |  |
| 195 | 1.15.1 | 用户需求/需求分析 | manual | 5d | 2019-07-29 | 2019-08-02 | 高祥云; 罗加云 | 80h | 需求分析文档 | 100% | 2019年8月21日 |
| 196 | 1.15.2 | 项目原型_设计 | manual | 2d | 2019-08-19 | 2019-08-20 |  |  |  | 100% |  |
| 197 | 1.15.3 | 案例测试 | manual | 2d | 2019-08-20 | 2019-08-21 |  |  | 详细设计文档,概要设计文档 | 100% |  |
| 198 | 1.15.4 | 开发相关功能 | manual | 2d | 2019-08-21 | 2019-08-22 |  |  |  | 100% |  |
| 199 | 1.15.5 | 部署修改内容 | manual | 1d | 2019-08-23 | 2019-08-23 |  |  |  | 100% |  |
| 200 | 1.15.6 | 内部测试 | manual | 1d | 2019-08-26 | 2019-08-26 |  |  | 测试用例，测试报告 | 100% |  |
| 201 | 1.15.7 | 程序上线小规模用户验证 | manual | 1d | 2019-08-27 | 2019-08-27 |  |  |  | 100% |  |
| 202 | 1.15.8 | 公司推广&试运行 | manual | 4d | 2019-08-27 | 2019-08-30 |  |  |  |  |  |
| 203 | 1.15.9 | 方案设计/Demo展示 | inactive, manual | 1d | 2019-08-22 | 2019-08-22 | 高祥云; 罗加云 | 16h |  |  |  |
| 204 | 1.15.10 | 功能开发 | inactive, manual | 1d | 2019-08-23 | 2019-08-23 | 高祥云; 罗加云 | 16h |  |  |  |
| 205 | 1.15.11 | 功能测试 | inactive, manual | 1d | 2019-08-26 | 2019-08-26 | 杜振兴; 高祥云 | 16h | 测试用例，测试报告 |  | 2019年8月26日 |
| 206 | 1.15.12 | 功能部署上线 | inactive, manual | 1d | 2019-08-27 | 2019-08-27 | 杜振兴; 高祥云 | 16h |  |  | 2019年8月27日 |
| 207 | 1.16 | **损益表新增横向分析需求** |  | 22d | 2019-08-08 | 2019-09-06 |  | 32h |  |  |  |
| 208 | 1.16.1 | 用户需求/需求分析 | manual | 2d | 2019-08-08 | 2019-08-09 | 高祥云; 罗加云 | 32h |  | 100% | 2019年8月21日 |
| 209 | 1.16.2 | 项目原型_设计 | manual | 2d | 2019-08-26 | 2019-08-27 |  |  |  | 100% |  |
| 210 | 1.16.3 | 案例测试 | manual | 2d | 2019-08-27 | 2019-08-28 |  |  |  | 100% |  |
| 211 | 1.16.4 | 开发相关功能 | manual | 1d | 2019-08-29 | 2019-08-29 |  |  |  | 100% |  |
| 212 | 1.16.5 | 部署修改内容 | manual | 1d | 2019-08-30 | 2019-08-30 |  |  |  | 100% |  |
| 213 | 1.16.6 | 内部测试 | manual | 1d | 2019-08-30 | 2019-08-30 |  |  |  | 100% |  |
| 214 | 1.16.7 | 程序上线小规模用户验证 | manual | 2d | 2019-09-02 | 2019-09-03 |  |  |  | 100% |  |
| 215 | 1.16.8 | 公司推广&试运行 | manual | 3d | 2019-09-04 | 2019-09-06 |  |  |  |  |  |
| 216 | 1.17 | **过程资产提交率统计/研发部门工作量统计/过程规范性得分统计** |  | 25d | 2019-08-12 | 2019-09-13 |  | 96h |  |  |  |
| 217 | 1.17.1 | 用户需求/需求分析 | manual | 6d | 2019-08-12 | 2019-08-18 | 高祥云; 罗加云 | 96h | 需求分析文档 | 100% | 2019年8月21日 |
| 218 | 1.17.2 | 项目原型_设计 | manual | 2d | 2019-09-02 | 2019-09-04 |  |  |  | 100% |  |
| 219 | 1.17.3 | 案例测试 | manual | 6d | 2019-09-03 | 2019-09-10 |  |  | 详细设计文档,概要设计文档 | 100% |  |
| 220 | 1.17.4 | 开发相关功能 | manual | 5d | 2019-09-04 | 2019-09-10 |  |  |  | 100% |  |
| 221 | 1.17.5 | 部署修改内容 | manual | 3d | 2019-09-06 | 2019-09-10 |  |  |  | 100% |  |
| 222 | 1.17.6 | 内部测试 | manual | 6d | 2019-09-06 | 2019-09-13 |  |  | 测试用例，测试报告 | 100% |  |
| 223 | 1.17.7 | 程序上线小规模用户验证 | manual | 5d | 2019-09-06 | 2019-09-13 |  |  |  | 100% |  |
| 224 | 1.17.8 | 用户需求/需求分析 | inactive, manual | 3d | 2019-08-12 | 2019-08-15 | 高祥云; 罗加云 | 48h | 需求分析文档,详细设计文档,概要设计文档 |  | 2019年8月28日 |
| 225 | 1.17.9 | 方案设计/Demo展示 | inactive, manual | 1d | 2019-08-29 | 2019-08-29 | 高祥云; 罗加云 | 16h |  |  |  |
| 226 | 1.17.10 | 功能开发 | inactive, manual | 1d | 2019-08-30 | 2019-08-30 | 高祥云; 罗加云 | 16h |  |  |  |
| 227 | 1.17.11 | 功能测试 | inactive, manual | 1d | 2019-09-02 | 2019-09-02 | 杜振兴; 高祥云 | 16h | 测试用例，测试报告 |  | 2019年9月2日 |
| 228 | 1.17.12 | 功能部署上线 | inactive, manual | 1d | 2019-09-03 | 2019-09-03 | 杜振兴; 高祥云 | 16h |  |  |  |

Notes:
- 207: 该需求属于损益表上线后新增需求

| ID | WBS | Task | Type | Duration | Start | Finish | Resources | Work | 交付物 | 进度 | 交付时间 |
| --- | --- | --- | --- | --- | --- | --- | --- | --- | --- | --- | --- |
| 229 | 1.18 | **项目类采购分析** |  | 25d | 2019-08-12 | 2019-09-13 |  | 208h |  |  |  |
| 230 | 1.18.1 | 用户需求/需求分析 | manual | 13d | 2019-08-12 | 2019-08-28 | 高祥云; 罗加云 | 208h | 需求分析文档 | 100% | 2019年8月21日 |
| 231 | 1.18.2 | 项目原型_设计 | manual | 3d | 2019-09-02 | 2019-09-04 |  |  |  | 100% |  |
| 232 | 1.18.3 | 案例测试 | manual | 3d | 2019-09-03 | 2019-09-05 |  |  | 详细设计文档,概要设计文档 | 100% |  |
| 233 | 1.18.4 | 开发相关功能 | manual | 2d | 2019-09-04 | 2019-09-05 |  |  |  | 100% |  |
| 234 | 1.18.5 | 部署修改内容 | manual | 1d | 2019-09-06 | 2019-09-06 |  |  |  | 100% |  |
| 235 | 1.18.6 | 内部测试 | manual | 1d | 2019-09-06 | 2019-09-06 |  |  | 测试用例，测试报告 | 100% |  |
| 236 | 1.18.7 | 程序上线小规模用户验证 | manual | 1d | 2019-09-06 | 2019-09-06 |  |  |  | 100% |  |
| 237 | 1.18.8 | 用户需求/需求分析 | inactive, manual | 3d | 2019-08-19 | 2019-08-22 | 高祥云; 罗加云 | 48h | 需求分析文档,详细设计文档,概要设计文档 |  | 2019年8月5日 |
| 238 | 1.18.9 | 方案设计/Demo展示 | inactive, manual | 1d | 2019-09-05 | 2019-09-05 | 高祥云; 罗加云 | 16h |  |  |  |
| 239 | 1.18.10 | 功能开发 | inactive, manual | 1d | 2019-09-06 | 2019-09-06 | 高祥云; 罗加云 | 16h |  |  |  |
| 240 | 1.18.11 | 功能测试 | inactive, manual | 2d | 2019-09-09 | 2019-09-10 | 杜振兴; 高祥云 | 32h | 测试用例，测试报告 |  | 2019年9月10日 |
| 241 | 1.18.12 | 功能部署上线 | inactive, manual | 1d | 2019-09-11 | 2019-09-11 | 杜振兴; 高祥云 | 16h |  |  |  |
| 242 | 1.19 | **报表性能/页面交互调优** | inactive | 6d | 2019-09-11 | 2019-09-19 |  | 144h |  |  |  |
| 243 | 1.19.1 | 报表性能/页面交互调优 | inactive, manual | 6d | 2019-08-12 | 2019-08-19 | 杜振兴; 高祥云; 罗加云 | 144h |  |  |  |
| 244 | 1.20 | 财务确认收入行业业绩财务报表开发 | manual | 1d | 2019-09-02 | 2019-09-02 |  |  |  | 100% |  |
| 245 | 1.21 | **大屏重新设计** |  | 26d | 2019-08-12 | 2019-09-15 |  | 792h |  |  |  |
| 246 | 1.21.1 | 用户需求/需求分析 | manual | 6d | 2019-08-26 | 2019-09-02 | 高祥云; 罗加云 | 96h | 需求分析文档 | 100% | 2019年8月21日 |
| 247 | 1.21.2 | 项目原型_设计 | manual | 3d | 2019-09-02 | 2019-09-04 |  |  |  | 100% |  |
| 248 | 1.21.3 | 案例测试 | manual | 2d | 2019-09-05 | 2019-09-06 |  |  | 详细设计文档,概要设计文档 | 100% |  |
| 249 | 1.21.4 | 开发相关功能 | manual | 2d | 2019-09-09 | 2019-09-11 |  |  |  | 100% |  |
| 250 | 1.21.5 | 部署修改内容 | manual | 1d | 2019-09-11 | 2019-09-12 |  |  |  | 100% |  |
| 251 | 1.21.6 | 内部测试 | manual | 1d | 2019-09-12 | 2019-09-13 |  |  | 测试用例，测试报告 | 100% |  |
| 252 | 1.21.7 | 程序上线小规模用户验证 | manual | 2d | 2019-09-13 | 2019-09-15 |  |  |  | 100% |  |

| ID | WBS | Task | Type | Duration | Start | Finish | Constraint | Resources | Work | 进度 | 交付物 | 交付时间 |
| --- | --- | --- | --- | --- | --- | --- | --- | --- | --- | --- | --- | --- |
| 253 | 1.21.8 | **甲方验收（第一轮）** |  | 3d | 2019-09-20 | 2019-09-24 |  |  | 72h |  |  |  |
| 254 | 1.21.8.1 | 甲方验收（第一轮） | manual | 3d | 2019-09-20 | 2019-09-24 |  | 杜振兴; 高祥云; 罗加云 | 72h |  |  |  |
| 255 | 1.21.9 | **甲方验收（第二轮）** |  | 4d | 2019-09-25 | 2019-09-30 |  |  | 96h |  |  |  |
| 256 | 1.21.9.1 | 甲方验收（第二轮） | manual | 4d | 2019-09-25 | 2019-09-30 |  | 杜振兴; 高祥云; 罗加云 | 96h |  |  |  |
| 257 | 1.21.10 | **远程支持客户需求** |  | 22d | 2019-10-01 | 2019-10-30 |  |  | 528h |  |  |  |
| 258 | 1.21.10.1 | 远程支持客户需求 | manual | 22d | 2019-10-01 | 2019-10-30 |  | 杜振兴; 高祥云; 罗加云 | 528h |  |  |  |
| 260 | 2 | **YJTXT_APP_V2.0R** |  | 217d | 2019-06-03 | 2020-03-30 |  |  | 368h |  |  |  |
| 261 | 2.1 | **客户接待** |  | 17d | 2019-06-03 | 2019-06-24 |  |  | 120h | 100% |  |  |
| 262 | 2.1.1 | 用户需求/需求分析 | manual | 2d | 2019-06-03 | 2019-06-04 |  | 陈子瑶 | 16h | 100% | 需求分析文档 | 2019年6月5日 |
| 263 | 2.1.2 | 方案设计 | manual | 1d | 2019-06-05 | 2019-06-05 |  | 陈子瑶 | 8h | 100% | 详细设计文档/概要设计文档/接口设计文档 | 2019年7月15日 |
| 264 | 2.1.3 | 功能开发 | manual | 9d | 2019-06-06 | 2019-06-18 |  | 陈子瑶 | 72h | 100% | 测试用例 | 2019年7月15日 |
| 265 | 2.1.4 | 单元测试 | manual | 1d | 2019-06-19 | 2019-06-19 |  | 陈子瑶 | 8h | 100% | 测试报告 | 2019年7月15日 |
| 266 | 2.1.5 | **集成测试** |  | 1d | 2019-06-21 | 2019-06-24 |  | 陈子瑶 | 8h | 100% |  |  |
| 267 | 2.1.5.1 | bug调试 | manual | 1d | 2019-06-21 | 2019-06-21 | finish no earlier than 2019-06-23 |  |  | 100% |  |  |
| 268 | 2.1.5.2 | 页面调整美化 | manual | 1d | 2019-06-21 | 2019-06-21 | finish no earlier than 2019-06-21 |  |  | 100% |  |  |
| 269 | 2.1.6 | 功能部署上线 | manual | 1d | 2019-06-24 | 2019-06-24 |  | 陈子瑶 | 8h | 100% |  |  |
| 270 | 2.2 | **考勤打卡** |  | 17d | 2019-06-03 | 2019-06-24 |  |  | 136h | 100% |  |  |
| 271 | 2.2.1 | 用户需求/需求分析 | manual | 2d | 2019-06-03 | 2019-06-04 |  | JAVA团队 | 16h | 100% | 需求分析文档 | 2019年6月5日 |
| 272 | 2.2.2 | 方案设计 | manual | 1d | 2019-06-05 | 2019-06-05 |  | JAVA团队 | 8h | 100% | 详细设计文档/概要设计文档/接口设计文档 | 2019年7月15日 |
| 273 | 2.2.3 | 功能开发 | manual | 9d | 2019-06-06 | 2019-06-18 |  | JAVA团队 | 72h | 100% | 测试用例 | 2019年7月15日 |
| 274 | 2.2.4 | 单元测试 | manual | 1d | 2019-06-19 | 2019-06-19 |  | JAVA团队 | 8h | 100% | 测试报告 | 2019年7月15日 |
| 275 | 2.2.5 | **集成测试** |  | 3d | 2019-06-20 | 2019-06-24 |  | JAVA团队 | 24h |  |  |  |
| 276 | 2.2.5.1 | 用户测试 | manual | 1d | 2019-06-24 | 2019-06-24 | finish no earlier than 2019-06-24 |  |  | 100% |  |  |
| 277 | 2.2.5.2 | bug调整 | manual | 1d | 2019-06-21 | 2019-06-21 | finish no earlier than 2019-06-23 |  |  | 100% |  |  |
| 278 | 2.2.6 | 功能部署上线 | manual | 1d | 2019-06-24 | 2019-06-24 |  | JAVA团队 | 8h | 100% |  |  |

| ID | WBS | Task | Type | Duration | Start | Finish | Predecessors | Constraint | Resources | Work | 交付物 | 进度 | 交付时间 |
| --- | --- | --- | --- | --- | --- | --- | --- | --- | --- | --- | --- | --- | --- |
| 279 | 2.3 | **出差公出报备** |  | 217d | 2019-06-03 | 2020-03-30 |  |  |  | 112h |  |  |  |
| 280 | 2.3.1 | 用户需求/需求分析 | manual | 2d | 2019-06-03 | 2019-06-04 |  |  | 王晓旭 | 16h | 需求分析文档 | 100% | 2019年8月15日 |
| 281 | 2.3.2 | 方案设计 | manual | 1d | 2019-06-05 | 2019-06-05 |  |  | 王晓旭 | 8h | 详细设计文档/概要设计文档/接口设计文档 | 100% | 2019年8月15日 |
| 282 | 2.3.3 | 功能开发 | manual | 5d | 2020-03-09 | 2020-03-16 |  |  | 王晓旭 | 40h | 测试用例 | 65% | 2019年8月15日 |
| 283 | 2.3.4 | 单元测试 | manual | 3d | 2020-03-14 | 2020-03-17 |  |  | 王晓旭 | 24h | 测试报告 |  | 2019年8月15日 |
| 284 | 2.3.5 | 集成测试 | manual | 2d | 2020-03-14 | 2020-03-17 |  |  | 王晓旭 | 16h |  |  |  |
| 285 | 2.3.6 | 功能部署上线 | manual | 1d | 2020-03-16 | 2020-03-17 |  |  | 王晓旭 | 8h |  |  |  |
| 286 | 2.3.7 | 试运行 | manual | 10d | 2020-03-16 | 2020-03-30 |  | start no earlier than 2020-03-16 |  |  |  |  |  |
| 287 | 2.4 | **日报管理** |  | 24d | 2019-06-28 | 2019-07-31 |  |  |  |  |  |  |  |
| 288 | 2.4.1 | 用户需求/需求分析 | manual | 3d | 2019-06-28 | 2019-07-02 |  |  |  |  | 需求分析文档 | 100% | 2019年7月15日 |
| 289 | 2.4.2 | 方案设计 | manual | 3d | 2019-07-02 | 2019-07-04 |  |  |  |  | 详细设计文档/概要设计文档/接口设计文档 | 100% | 2019年7月15日 |
| 290 | 2.4.3 | **功能开发** |  | 20d | 2019-07-04 | 2019-07-31 |  |  |  |  | 测试用例 |  | 2019年7月15日 |
| 291 | 2.4.3.1 | 报工列表查询 | manual | 1d | 2019-07-04 | 2019-07-04 |  | finish no earlier than 2019-07-04 |  |  |  | 100% |  |
| 292 | 2.4.3.2 | 导出报工列表 | inactive, manual | 1d | 2019-07-05 | 2019-07-05 |  | finish no earlier than 2019-07-05 |  |  |  |  |  |
| 293 | 2.4.3.3 | 获取日报相关的员工信息 | manual | 1d | 2019-07-05 | 2019-07-05 |  | finish no earlier than 2019-07-05 |  |  |  | 100% |  |
| 294 | 2.4.3.4 | 获取员工打卡信息 | manual | 1d | 2019-07-08 | 2019-07-08 |  | finish no earlier than 2019-07-08 |  |  |  | 100% |  |
| 295 | 2.4.3.5 | 需求细化分析及细节接口需求分析 | manual | 3d | 2019-07-10 | 2019-07-12 |  | finish no earlier than 2019-07-12 |  |  | 需求分析文档 | 100% |  |
| 296 | 2.4.3.6 | 接口整理细化分析工作 | manual | 2d | 2019-07-12 | 2019-07-14 |  | start no earlier than 2019-07-12 |  |  |  | 100% |  |
| 297 | 2.4.3.7 | **开发相关功能** |  | 7d | 2019-07-14 | 2019-07-21 |  |  |  |  |  |  |  |
| 298 | 2.4.3.7.1 | 报工列表 | manual | 2d | 2019-07-14 | 2019-07-15 |  |  |  |  |  | 100% |  |
| 299 | 2.4.3.7.2 | 查看日报详情 | manual | 2d | 2019-07-15 | 2019-07-16 |  |  |  |  |  | 100% |  |
| 300 | 2.4.3.7.3 | 日报删除 | manual | 1d | 2019-07-17 | 2019-07-17 |  |  |  |  |  | 100% |  |
| 301 | 2.4.3.7.4 | 日报撤回 | manual | 1d | 2019-07-17 | 2019-07-17 |  |  |  |  |  | 100% |  |
| 302 | 2.4.3.7.5 | **新增日报** |  | 5d | 2019-07-16 | 2019-07-20 |  |  |  |  |  |  |  |
| 303 | 2.4.3.7.5.1 | 日报基础信息 | manual | 1d | 2019-07-16 | 2019-07-16 |  |  |  |  |  | 100% |  |
| 304 | 2.4.3.7.5.2 | 今日/明日计划 | manual | 1d | 2019-07-16 | 2019-07-16 |  |  |  |  |  | 100% |  |
| 305 | 2.4.3.7.5.3 | 具体任务信息 | manual | 2d | 2019-07-17 | 2019-07-18 |  |  |  |  |  | 100% |  |
| 306 | 2.4.3.7.5.4 | 费用报销 | manual | 2d | 2019-07-17 | 2019-07-18 |  |  |  |  |  | 100% |  |
| 307 | 2.4.3.7.5.5 | 客户咨讯关联 | manual | 2d | 2019-07-18 | 2019-07-19 |  |  |  |  |  |  |  |
| 308 | 2.4.3.7.5.6 | 报销票据 | manual | 2d | 2019-07-18 | 2019-07-19 |  |  |  |  |  | 100% |  |
| 309 | 2.4.3.7.5.7 | 发票池功能 | manual | 2d | 2019-07-19 | 2019-07-20 |  |  |  |  |  | 100% |  |
| 310 | 2.4.3.7.6 | 日报更新 | manual | 1d | 2019-07-21 | 2019-07-21 | 302 |  |  |  |  | 100% |  |
| 311 | 2.4.4 | 测试相关功能 | manual | 3d | 2019-07-22 | 2019-07-24 |  |  |  |  |  | 100% |  |
| 312 | 2.4.5 | 功能部署上线 | manual | 1d | 2019-07-25 | 2019-07-25 |  |  |  |  |  | 100% |  |
| 313 | 2.4.6 | 报工详情 | inactive, manual | 4d | 2019-07-09 | 2019-07-12 |  | finish no earlier than 2019-07-10 |  |  |  | 20% |  |
| 314 | 2.4.7 | 费用报销 | inactive, manual | 1d | 2019-07-12 | 2019-07-15 |  | start no earlier than 2019-07-12 |  |  |  |  |  |
| 315 | 2.4.8 | 票据填写 | inactive, manual | 1d | 2019-07-15 | 2019-07-16 |  | start no earlier than 2019-07-15 |  |  |  |  |  |
| 316 | 2.4.9 | 发票池功能 | inactive, manual | 1d | 2019-07-17 | 2019-07-18 |  | start no earlier than 2019-07-17 |  |  |  |  |  |
| 317 | 2.4.10 | 单元测试 | inactive, manual | 1d | 2019-07-25 | 2019-07-25 |  |  |  |  | 测试报告 |  | 2019年7月16日 |
| 318 | 2.4.11 | 集成测试 | inactive, manual | 1d | 2019-07-26 | 2019-07-26 |  |  |  |  |  |  |  |
| 319 | 2.4.12 | 功能部署上线 | inactive, manual | 1d | 2019-07-19 | 2019-07-22 |  |  |  |  |  |  |  |

Notes:
- 279: 计划将排至待办之后
- 293: 由于理解调试PC端日报现有功能代码花费较长时间，并且未达到应有的效果，现整理日报功能所需接口文档与问题列表，请求相关资源予以协助.
- 294: 由于理解调试PC端日报现有功能代码花费较长时间，并且未达到应有的效果，现整理日报功能所需接口文档与问题列表，请求相关资源予以协助.
- 305: 需要根据滴滴机票住宿自动生成任务，需要客户协助提供相应的api
- 306: 需要客户协助提供里程碑以及花销分类相关信息的api
- 307: 暂无法提供客户资讯相关的api，暂放。
- 308: 需要获取操作类型相关的api
- 309: 需要客户协助提供发票池相关功能的api
- 310: 日报更新依赖于新增日报功能。
- 311: 因调整技术实现方案，测试上线时间延期4天
- 312: 因调整技术实现方案，测试上线时间延期4天

| ID | WBS | Task | Type | Duration | Start | Finish | Constraint | 进度 | 交付物 | 交付时间 |
| --- | --- | --- | --- | --- | --- | --- | --- | --- | --- | --- |
| 320 | 3 | **待办列表** |  | 16d | 2019-07-22 | 2019-08-11 |  |  |  |  |
| 321 | 3.1 | 技术可行性分析 | manual | 4d | 2019-07-15 | 2019-07-18 |  | 100% |  |  |
| 322 | 3.2 | 用户需求/需求分析 | manual | 1d | 2019-07-22 | 2019-07-22 |  | 100% | 需求分析文档 | 2019年7月23日 |
| 323 | 3.3 | 方案设计 | manual | 2d | 2019-07-22 | 2019-07-23 |  | 100% | 详细设计文档/概要设计文档/接口设计文档 | 2019年7月24日 |
| 324 | 3.4 | 待办整体api分析及具体计划确定 | manual | 3d | 2019-07-27 | 2019-07-30 |  | 100% |  |  |
| 325 | 3.5 | **功能开发** |  | 17d | 2019-07-26 | 2019-08-18 |  |  | 测试用例 | 2019年7月30日 |
| 326 | 3.5.1 | **日报功能待办** |  | 16d | 2019-07-26 | 2019-08-16 |  |  |  |  |
| 327 | 3.5.1.1 | 开发相关功能 | manual | 5d | 2019-07-26 | 2019-08-01 | start no earlier than 2019-07-26 | 100% |  |  |
| 328 | 3.5.1.2 | 测试 | manual | 2d | 2019-08-02 | 2019-08-04 |  | 100% |  |  |
| 329 | 3.5.1.3 | 上线 | manual | 1d | 2019-08-04 | 2019-08-04 |  | 100% |  |  |
| 330 | 3.5.1.4 | 试运行 | manual | 10d | 2019-08-05 | 2019-08-16 | finish no earlier than 2019-08-16 |  |  |  |
| 331 | 3.5.2 | **考勤功能待办（补登）** |  | 16d | 2019-07-26 | 2019-08-16 |  |  |  |  |
| 332 | 3.5.2.1 | 开发相关功能 | manual | 5d | 2019-07-26 | 2019-08-01 | start no earlier than 2019-07-26 | 100% |  |  |
| 333 | 3.5.2.2 | 测试 | manual | 2d | 2019-08-02 | 2019-08-04 |  | 100% |  |  |
| 334 | 3.5.2.3 | 上线 | manual | 1d | 2019-08-04 | 2019-08-04 |  | 100% |  |  |
| 335 | 3.5.2.4 | 试运行 | manual | 10d | 2019-08-05 | 2019-08-16 | finish no earlier than 2019-08-16 |  |  |  |
| 336 | 3.5.3 | **假期功能待办** |  | 19d | 2019-08-05 | 2019-08-29 |  |  |  |  |
| 337 | 3.5.3.1 | 开发相关功能 | manual | 5d | 2019-08-05 | 2019-08-12 | start no earlier than 2019-08-05 | 100% |  |  |
| 338 | 3.5.3.2 | 测试 | manual | 2d | 2019-08-13 | 2019-08-14 |  | 100% |  |  |
| 339 | 3.5.3.3 | 上线 | manual | 1d | 2019-08-14 | 2019-08-14 |  | 100% |  |  |
| 340 | 3.5.3.4 | 试运行 | manual | 10d | 2019-08-15 | 2019-08-29 | start no earlier than 2019-08-15 |  |  |  |
| 341 | 3.5.4 | **加班申请待办** |  | 16d | 2019-08-05 | 2019-08-26 |  |  |  |  |
| 342 | 3.5.4.1 | 开发相关功能 | manual | 5d | 2019-08-05 | 2019-08-09 | start no earlier than 2019-08-05 | 100% |  |  |
| 343 | 3.5.4.2 | 测试 | manual | 2d | 2019-08-10 | 2019-08-11 |  | 100% |  |  |
| 344 | 3.5.4.3 | 上线 | manual | 1d | 2019-08-11 | 2019-08-11 |  | 100% |  |  |
| 345 | 3.5.4.4 | 试运行 | manual | 10d | 2019-08-12 | 2019-08-26 | start no earlier than 2019-08-12 |  |  |  |

Notes:
- 321: 待办列表的详细计划会根据技术可行性分析和需求分析的结果进行调整
- 322: 目前分析了日报，考勤，补登，假期的相关需求，并整理其相关需求，形成api文档并已发送
- 324: 目前拿到了日报，考勤，补登，假期，公出报备四个模块的相关api，将分析api并进行开发任务细化。
- 336: 由于假期的相关类型较多，而各个类型需要不同的页面，开发工作量较大，计划延期3天，如考勤异常及补登相关开发任务开发顺利的话，尽力将该功能在周末上线。
- 341: 由于假期的相关类型较多，而各个类型需要不同的页面，开发工作量较大，计划延期3天，如考勤异常及补登相关开发任务开发顺利的话，尽力将该功能在周末上线。

| ID | WBS | Task | Type | Duration | Start | Finish | Constraint | 进度 |
| --- | --- | --- | --- | --- | --- | --- | --- | --- |
| 346 | 3.5.5 | **考勤异常待办** |  | 16d | 2019-08-05 | 2019-08-26 |  |  |
| 347 | 3.5.5.1 | 开发相关功能 | manual | 5d | 2019-08-05 | 2019-08-09 | start no earlier than 2019-08-05 | 100% |
| 348 | 3.5.5.2 | 测试 | manual | 2d | 2019-08-10 | 2019-08-11 |  | 100% |
| 349 | 3.5.5.3 | 上线 | manual | 1d | 2019-08-11 | 2019-08-11 |  | 100% |
| 350 | 3.5.5.4 | 试运行 | manual | 11d | 2019-08-12 | 2019-08-26 | start no earlier than 2019-08-12 |  |
| 351 | 3.5.6 | **员工招待费调整待办** |  | 16d | 2019-08-12 | 2019-09-03 |  |  |
| 352 | 3.5.6.1 | 开发相关功能 | manual | 5d | 2019-08-12 | 2019-08-16 | start no earlier than 2019-08-12 | 100% |
| 353 | 3.5.6.2 | 测试 | manual | 1d | 2019-08-17 | 2019-08-17 |  | 100% |
| 354 | 3.5.6.3 | 上线 | manual | 1d | 2019-08-18 | 2019-08-18 |  | 100% |
| 355 | 3.5.6.4 | 试运行 | manual | 12d | 2019-08-19 | 2019-09-03 | start no earlier than 2019-08-19 |  |
| 356 | 3.5.7 | **请假撤销流程待办** |  | 21d | 2019-08-12 | 2019-09-09 |  |  |
| 357 | 3.5.7.1 | 需求调研 | manual | 2d | 2019-08-12 | 2019-08-13 |  | 100% |
| 358 | 3.5.7.2 | 开发相关功能 | manual | 6d | 2019-08-12 | 2019-08-18 | start no earlier than 2019-08-12 | 100% |
| 359 | 3.5.7.3 | 测试 | manual | 2d | 2019-08-19 | 2019-08-20 |  | 100% |
| 360 | 3.5.7.4 | 上线 | manual | 1d | 2019-08-21 | 2019-08-21 |  | 100% |
| 361 | 3.5.7.5 | 试运行 | manual | 12d | 2019-08-22 | 2019-09-09 | start no earlier than 2019-08-22 |  |
| 362 | 3.5.8 | **年度预算变更流程待办** |  | 23d | 2019-08-11 | 2019-09-11 |  |  |
| 363 | 3.5.8.1 | 开发相关功能 | manual | 5d | 2019-08-19 | 2019-08-23 | start no earlier than 2019-08-19 | 100% |
| 364 | 3.5.8.2 | 测试 | manual | 1d | 2019-08-24 | 2019-08-24 |  | 100% |
| 365 | 3.5.8.3 | 上线 | manual | 1d | 2019-08-26 | 2019-08-26 |  | 100% |
| 366 | 3.5.8.4 | 试运行 | manual | 12d | 2019-08-26 | 2019-09-11 | start no earlier than 2019-08-26 |  |
| 367 | 3.5.9 | **日报费用流程审批2.0** |  | 23d | 2019-08-11 | 2019-09-11 |  |  |
| 368 | 3.5.9.1 | 开发相关功能 | manual | 5d | 2019-08-19 | 2019-08-23 | start no earlier than 2019-08-19 | 100% |
| 369 | 3.5.9.2 | 测试 | manual | 1d | 2019-08-24 | 2019-08-24 |  | 100% |
| 370 | 3.5.9.3 | 上线 | manual | 1d | 2019-08-26 | 2019-08-26 |  | 100% |
| 371 | 3.5.9.4 | 试运行 | manual | 12d | 2019-08-26 | 2019-09-11 | start no earlier than 2019-08-26 |  |

Notes:
- 346: 由于假期的相关类型较多，而各个类型需要不同的页面，开发工作量较大，计划延期3天，如考勤异常及补登相关开发任务开发顺利的话，尽力将该功能在周末上线。
- 351: 由于假期的相关类型较多，而各个类型需要不同的页面，开发工作量较大，计划延期3天，如考勤异常及补登相关开发任务开发顺利的话，尽力将该功能在周末上线。
- 356: 由于假期的相关类型较多，而各个类型需要不同的页面，开发工作量较大，计划延期3天，如考勤异常及补登相关开发任务开发顺利的话，尽力将该功能在周末上线。

| ID | WBS | Task | Type | Duration | Start | Finish | Constraint | 进度 |
| --- | --- | --- | --- | --- | --- | --- | --- | --- |
| 372 | 3.5.10 | **合作协议管理** |  | 20d | 2019-08-26 | 2019-09-23 |  |  |
| 373 | 3.5.10.1 | **年度采购供货协议v3.0** |  | 11d | 2019-08-26 | 2019-09-09 |  |  |
| 374 | 3.5.10.1.1 | 办公网YJT_APP端API封装 | manual | 2d | 2019-08-26 | 2019-08-27 |  | 100% |
| 375 | 3.5.10.1.2 | 移动端action开发+页面开发 | manual | 3d | 2019-08-27 | 2019-08-29 |  | 100% |
| 376 | 3.5.10.1.3 | 单元测试及相关问题修改 | manual | 2d | 2019-08-30 | 2019-09-01 |  | 100% |
| 377 | 3.5.10.1.4 | 上线 | milestone, manual | 0d | 2019-09-02 | 2019-09-02 | start no earlier than 2019-09-02 | 100% |
| 378 | 3.5.10.1.5 | 试运行 | manual | 5d | 2019-09-03 | 2019-09-09 | finish no earlier than 2019-09-09 |  |
| 379 | 3.5.10.2 | **年度采购供货协议作废V3.0** |  | 11d | 2019-08-26 | 2019-09-09 |  |  |
| 380 | 3.5.10.2.1 | 办公网YJT_APP端API封装 | manual | 2d | 2019-08-26 | 2019-08-27 |  | 100% |
| 381 | 3.5.10.2.2 | 移动端action开发+页面开发 | manual | 3d | 2019-08-27 | 2019-08-29 |  | 100% |
| 382 | 3.5.10.2.3 | 单元测试及相关问题修改 | manual | 2d | 2019-08-30 | 2019-09-01 |  | 100% |
| 383 | 3.5.10.2.4 | 上线 | milestone, manual | 0d | 2019-09-02 | 2019-09-02 | start no earlier than 2019-09-02 | 100% |
| 384 | 3.5.10.2.5 | 试运行 | manual | 5d | 2019-09-03 | 2019-09-09 | finish no earlier than 2019-09-09 |  |
| 385 | 3.5.10.3 | **生态伙伴合作框架协议3.0** |  | 11d | 2019-08-26 | 2019-09-09 |  |  |
| 386 | 3.5.10.3.1 | 办公网YJT_APP端API封装 | manual | 2d | 2019-08-26 | 2019-08-27 |  | 100% |
| 387 | 3.5.10.3.2 | 移动端action开发+页面开发 | manual | 3d | 2019-08-27 | 2019-08-29 |  | 100% |
| 388 | 3.5.10.3.3 | 单元测试及相关问题修改 | manual | 2d | 2019-08-30 | 2019-09-01 |  | 100% |
| 389 | 3.5.10.3.4 | 上线 | milestone, manual | 0d | 2019-09-02 | 2019-09-02 | start no earlier than 2019-09-02 | 100% |
| 390 | 3.5.10.3.5 | 试运行 | manual | 5d | 2019-09-03 | 2019-09-09 | finish no earlier than 2019-09-09 |  |
| 391 | 3.5.10.4 | **生态伙伴合作框架协议作废** |  | 11d | 2019-08-26 | 2019-09-09 |  |  |
| 392 | 3.5.10.4.1 | 办公网YJT_APP端API封装 | manual | 2d | 2019-08-26 | 2019-08-27 |  | 100% |
| 393 | 3.5.10.4.2 | 移动端action开发+页面开发 | manual | 3d | 2019-08-27 | 2019-08-29 |  | 100% |
| 394 | 3.5.10.4.3 | 单元测试及相关问题修改 | manual | 2d | 2019-08-30 | 2019-09-01 |  | 100% |
| 395 | 3.5.10.4.4 | 上线 | milestone, manual | 0d | 2019-09-02 | 2019-09-02 | start no earlier than 2019-09-02 | 100% |
| 396 | 3.5.10.4.5 | 试运行 | manual | 5d | 2019-09-03 | 2019-09-09 | finish no earlier than 2019-09-09 |  |

| ID | WBS | Task | Type | Duration | Start | Finish | Constraint | 进度 |
| --- | --- | --- | --- | --- | --- | --- | --- | --- |
| 397 | 3.5.10.5 | **课题联合申报协议2** |  | 11d | 2019-09-02 | 2019-09-16 |  |  |
| 398 | 3.5.10.5.1 | 办公网YJT_APP端API封装 | manual | 2d | 2019-09-02 | 2019-09-04 |  | 100% |
| 399 | 3.5.10.5.2 | 移动端action开发+页面开发 | manual | 3d | 2019-09-03 | 2019-09-06 |  | 100% |
| 400 | 3.5.10.5.3 | 单元测试及相关问题修改 | manual | 1d | 2019-09-06 | 2019-09-06 |  | 100% |
| 401 | 3.5.10.5.4 | 上线 | manual | 2d | 2019-09-09 | 2019-09-10 | start no earlier than 2019-09-09 | 100% |
| 402 | 3.5.10.5.5 | 试运行 | manual | 5d | 2019-09-10 | 2019-09-16 | finish no earlier than 2019-09-16 |  |
| 403 | 3.5.10.6 | **课题联合申报协议作废2** |  | 11d | 2019-09-02 | 2019-09-16 |  |  |
| 404 | 3.5.10.6.1 | 办公网YJT_APP端API封装 | manual | 2d | 2019-09-02 | 2019-09-04 |  | 100% |
| 405 | 3.5.10.6.2 | 移动端action开发+页面开发 | manual | 3d | 2019-09-03 | 2019-09-06 |  | 100% |
| 406 | 3.5.10.6.3 | 单元测试及相关问题修改 | manual | 1d | 2019-09-06 | 2019-09-06 |  | 100% |
| 407 | 3.5.10.6.4 | 上线 | manual | 2d | 2019-09-09 | 2019-09-10 | start no earlier than 2019-09-09 | 100% |
| 408 | 3.5.10.6.5 | 试运行 | manual | 5d | 2019-09-10 | 2019-09-16 | finish no earlier than 2019-09-16 |  |
| 409 | 3.5.10.7 | **产品、服务代理协议** |  | 11d | 2019-09-02 | 2019-09-16 |  |  |
| 410 | 3.5.10.7.1 | 办公网YJT_APP端API封装 | manual | 2d | 2019-09-02 | 2019-09-04 |  | 100% |
| 411 | 3.5.10.7.2 | 移动端action开发+页面开发 | manual | 3d | 2019-09-03 | 2019-09-06 |  | 100% |
| 412 | 3.5.10.7.3 | 单元测试及相关问题修改 | manual | 1d | 2019-09-06 | 2019-09-06 |  | 100% |
| 413 | 3.5.10.7.4 | 上线 | manual | 2d | 2019-09-09 | 2019-09-10 | start no earlier than 2019-09-09 | 100% |
| 414 | 3.5.10.7.5 | 试运行 | manual | 5d | 2019-09-10 | 2019-09-16 | finish no earlier than 2019-09-16 |  |
| 415 | 3.5.10.8 | **产品、服务代理协议作废** |  | 11d | 2019-09-02 | 2019-09-16 |  |  |
| 416 | 3.5.10.8.1 | 办公网YJT_APP端API封装 | manual | 2d | 2019-09-02 | 2019-09-04 |  | 100% |
| 417 | 3.5.10.8.2 | 移动端action开发+页面开发 | manual | 3d | 2019-09-03 | 2019-09-06 |  | 100% |
| 418 | 3.5.10.8.3 | 单元测试及相关问题修改 | manual | 1d | 2019-09-06 | 2019-09-06 |  | 100% |
| 419 | 3.5.10.8.4 | 上线 | manual | 2d | 2019-09-09 | 2019-09-10 | start no earlier than 2019-09-09 | 100% |
| 420 | 3.5.10.8.5 | 试运行 | manual | 5d | 2019-09-10 | 2019-09-16 | finish no earlier than 2019-09-16 |  |

| ID | WBS | Task | Type | Duration | Start | Finish | Constraint | 进度 |
| --- | --- | --- | --- | --- | --- | --- | --- | --- |
| 421 | 3.5.10.9 | **产品研发战略合作协议3.0** |  | 6d | 2019-09-09 | 2019-09-16 |  |  |
| 422 | 3.5.10.9.1 | 办公网YJT_APP端API封装 | manual | 2d | 2019-09-02 | 2019-09-04 |  | 100% |
| 423 | 3.5.10.9.2 | 移动端action开发+页面开发 | manual | 3d | 2019-09-03 | 2019-09-06 |  | 100% |
| 424 | 3.5.10.9.3 | 单元测试及相关问题修改 | manual | 1d | 2019-09-06 | 2019-09-06 |  | 100% |
| 425 | 3.5.10.9.4 | 上线 | manual | 2d | 2019-09-09 | 2019-09-10 | start no earlier than 2019-09-09 | 100% |
| 426 | 3.5.10.9.5 | 试运行 | manual | 5d | 2019-09-10 | 2019-09-16 | finish no earlier than 2019-09-16 |  |
| 427 | 3.5.10.10 | **产品研发战略合作协议作废** |  | 6d | 2019-09-09 | 2019-09-16 |  |  |
| 428 | 3.5.10.10.1 | 办公网YJT_APP端API封装 | manual | 2d | 2019-09-02 | 2019-09-04 |  | 100% |
| 429 | 3.5.10.10.2 | 移动端action开发+页面开发 | manual | 3d | 2019-09-03 | 2019-09-06 |  | 100% |
| 430 | 3.5.10.10.3 | 单元测试及相关问题修改 | manual | 1d | 2019-09-06 | 2019-09-06 |  | 100% |
| 431 | 3.5.10.10.4 | 上线 | manual | 2d | 2019-09-09 | 2019-09-10 | start no earlier than 2019-09-09 | 100% |
| 432 | 3.5.10.10.5 | 试运行 | manual | 5d | 2019-09-10 | 2019-09-16 | finish no earlier than 2019-09-16 |  |
| 433 | 3.5.10.11 | **销售项目合作协议审批v5.0** |  | 1d | 2019-09-16 | 2019-09-16 |  |  |
| 434 | 3.5.10.11.1 | 办公网YJT_APP端API封装 | manual | 2d | 2019-09-02 | 2019-09-04 |  | 100% |
| 435 | 3.5.10.11.2 | 移动端action开发+页面开发 | manual | 3d | 2019-09-03 | 2019-09-06 |  | 100% |
| 436 | 3.5.10.11.3 | 单元测试及相关问题修改 | manual | 1d | 2019-09-06 | 2019-09-06 |  | 100% |
| 437 | 3.5.10.11.4 | 上线 | manual | 2d | 2019-09-09 | 2019-09-10 | start no earlier than 2019-09-09 | 100% |
| 438 | 3.5.10.11.5 | 试运行 | manual | 5d | 2019-09-10 | 2019-09-16 | finish no earlier than 2019-09-16 |  |
| 439 | 3.5.10.12 | **销售项目合作协议作废v3.0** |  | 1d | 2019-09-16 | 2019-09-16 |  |  |
| 440 | 3.5.10.12.1 | 办公网YJT_APP端API封装 | manual | 2d | 2019-09-02 | 2019-09-04 |  | 100% |
| 441 | 3.5.10.12.2 | 移动端action开发+页面开发 | manual | 3d | 2019-09-03 | 2019-09-06 |  | 100% |
| 442 | 3.5.10.12.3 | 单元测试及相关问题修改 | manual | 1d | 2019-09-06 | 2019-09-06 |  | 100% |
| 443 | 3.5.10.12.4 | 上线 | manual | 2d | 2019-09-09 | 2019-09-10 | start no earlier than 2019-09-09 | 100% |
| 444 | 3.5.10.12.5 | 试运行 | manual | 5d | 2019-09-10 | 2019-09-16 | finish no earlier than 2019-09-16 |  |

| ID | WBS | Task | Type | Duration | Start | Finish | Constraint | 进度 |
| --- | --- | --- | --- | --- | --- | --- | --- | --- |
| 445 | 3.5.11 | **费用类资金使用管理** |  | 11d | 2019-09-09 | 2019-09-23 |  |  |
| 446 | 3.5.11.1 | **费用类资金使用申请_作废** |  | 11d | 2019-09-09 | 2019-09-23 |  |  |
| 447 | 3.5.11.1.1 | 办公网YJT_APP端API封装 | manual | 2d | 2019-09-09 | 2019-09-11 |  | 100% |
| 448 | 3.5.11.1.2 | 移动端action开发+页面开发 | manual | 4d | 2019-09-10 | 2019-09-13 |  | 100% |
| 449 | 3.5.11.1.3 | 单元测试及相关问题修改 | milestone, manual | 0d | 2019-09-13 | 2019-09-13 |  | 100% |
| 450 | 3.5.11.1.4 | 上线 | milestone, manual | 0d | 2019-09-16 | 2019-09-16 | start no earlier than 2019-09-16 | 100% |
| 451 | 3.5.11.1.5 | 试运行 | manual | 5d | 2019-09-17 | 2019-09-23 | finish no earlier than 2019-09-23 |  |
| 452 | 3.5.11.2 | **费用类资金使用申请V2.0** |  | 11d | 2019-09-09 | 2019-09-23 |  |  |
| 453 | 3.5.11.2.1 | 办公网YJT_APP端API封装 | manual | 2d | 2019-09-09 | 2019-09-11 |  | 100% |
| 454 | 3.5.11.2.2 | 移动端action开发+页面开发 | manual | 4d | 2019-09-10 | 2019-09-13 |  | 100% |
| 455 | 3.5.11.2.3 | 单元测试及相关问题修改 | milestone, manual | 0d | 2019-09-13 | 2019-09-13 |  | 100% |
| 456 | 3.5.11.2.4 | 上线 | milestone, manual | 0d | 2019-09-16 | 2019-09-16 | start no earlier than 2019-09-16 | 100% |
| 457 | 3.5.11.2.5 | 试运行 | manual | 5d | 2019-09-17 | 2019-09-23 | finish no earlier than 2019-09-23 |  |
| 458 | 3.5.11.3 | **费用类资金支付申请** |  | 11d | 2019-09-09 | 2019-09-23 |  |  |
| 459 | 3.5.11.3.1 | 办公网YJT_APP端API封装 | manual | 2d | 2019-09-09 | 2019-09-11 |  | 100% |
| 460 | 3.5.11.3.2 | 移动端action开发+页面开发 | manual | 4d | 2019-09-10 | 2019-09-13 |  | 100% |
| 461 | 3.5.11.3.3 | 单元测试及相关问题修改 | milestone, manual | 0d | 2019-09-13 | 2019-09-13 |  | 100% |
| 462 | 3.5.11.3.4 | 上线 | milestone, manual | 0d | 2019-09-16 | 2019-09-16 | start no earlier than 2019-09-16 | 100% |
| 463 | 3.5.11.3.5 | 试运行 | manual | 5d | 2019-09-17 | 2019-09-23 | finish no earlier than 2019-09-23 |  |
| 464 | 3.5.12 | **销售项目** |  | 11d | 2019-09-16 | 2019-09-30 |  |  |
| 465 | 3.5.12.1 | **销售立项里程碑变更** |  | 11d | 2019-09-16 | 2019-09-30 |  |  |
| 466 | 3.5.12.1.1 | 办公网YJT_APP端API封装 | manual | 2d | 2019-09-16 | 2019-09-18 |  | 100% |
| 467 | 3.5.12.1.2 | 移动端action开发+页面开发 | manual | 4d | 2019-09-17 | 2019-09-23 |  | 80% |
| 468 | 3.5.12.1.3 | 单元测试及相关问题修改 | manual | 1d | 2019-09-20 | 2019-09-20 |  |  |
| 469 | 3.5.12.1.4 | 上线 | milestone, manual | 0d | 2019-09-23 | 2019-09-23 | start no earlier than 2019-09-23 |  |
| 470 | 3.5.12.1.5 | 试运行 | manual | 5d | 2019-09-24 | 2019-09-30 | finish no earlier than 2019-09-30 |  |

| ID | WBS | Task | Type | Duration | Start | Finish | Total slack | Constraint | 进度 |
| --- | --- | --- | --- | --- | --- | --- | --- | --- | --- |
| 471 | 3.5.12.2 | **销售立项审批流程V2.0** |  | 11d | 2019-09-16 | 2019-09-30 |  |  |  |
| 472 | 3.5.12.2.1 | 办公网YJT_APP端API封装 | manual | 2d | 2019-09-16 | 2019-09-18 |  |  | 100% |
| 473 | 3.5.12.2.2 | 移动端action开发+页面开发 | manual | 4d | 2019-09-17 | 2019-09-23 |  |  | 80% |
| 474 | 3.5.12.2.3 | 单元测试及相关问题修改 | manual | 1d | 2019-09-20 | 2019-09-20 |  |  |  |
| 475 | 3.5.12.2.4 | 上线 | milestone, manual | 0d | 2019-09-23 | 2019-09-23 |  | start no earlier than 2019-09-23 |  |
| 476 | 3.5.12.2.5 | 试运行 | manual | 5d | 2019-09-24 | 2019-09-30 |  | finish no earlier than 2019-09-30 |  |
| 477 | 3.5.12.3 | **销售项目-变更基本信息审批** |  | 11d | 2019-09-16 | 2019-09-30 |  |  |  |
| 478 | 3.5.12.3.1 | 办公网YJT_APP端API封装 | manual | 2d | 2019-09-16 | 2019-09-18 |  |  | 100% |
| 479 | 3.5.12.3.2 | 移动端action开发+页面开发 | manual | 4d | 2019-09-17 | 2019-09-23 |  |  | 80% |
| 480 | 3.5.12.3.3 | 单元测试及相关问题修改 | manual | 1d | 2019-09-20 | 2019-09-20 |  |  |  |
| 481 | 3.5.12.3.4 | 上线 | milestone, manual | 0d | 2019-09-23 | 2019-09-23 |  | start no earlier than 2019-09-23 |  |
| 482 | 3.5.12.3.5 | 试运行 | manual | 5d | 2019-09-24 | 2019-09-30 |  | finish no earlier than 2019-09-30 |  |
| 483 | 3.5.12.4 | **销售项目-成员变更流程** |  | 11d | 2019-09-16 | 2019-09-30 |  |  |  |
| 484 | 3.5.12.4.1 | 办公网YJT_APP端API封装 | manual | 2d | 2019-09-16 | 2019-09-18 |  |  | 100% |
| 485 | 3.5.12.4.2 | 移动端action开发+页面开发 | manual | 4d | 2019-09-17 | 2019-09-23 |  |  | 80% |
| 486 | 3.5.12.4.3 | 单元测试及相关问题修改 | manual | 1d | 2019-09-20 | 2019-09-20 |  |  |  |
| 487 | 3.5.12.4.4 | 上线 | milestone, manual | 0d | 2019-09-23 | 2019-09-23 |  | start no earlier than 2019-09-23 |  |
| 488 | 3.5.12.4.5 | 试运行 | manual | 5d | 2019-09-24 | 2019-09-30 |  | finish no earlier than 2019-09-30 |  |
| 489 | 3.5.12.5 | **销售项目-费用增补流程V1.1** |  | 11d | 2019-09-16 | 2019-09-30 |  |  |  |
| 490 | 3.5.12.5.1 | 办公网YJT_APP端API封装 | manual | 2d | 2019-09-16 | 2019-09-18 |  |  | 100% |
| 491 | 3.5.12.5.2 | 移动端action开发+页面开发 | manual | 4d | 2019-09-17 | 2019-09-23 |  |  | 80% |
| 492 | 3.5.12.5.3 | 单元测试及相关问题修改 | manual | 1d | 2019-09-20 | 2019-09-20 |  |  |  |
| 493 | 3.5.12.5.4 | 上线 | milestone, manual | 0d | 2019-09-23 | 2019-09-23 |  | start no earlier than 2019-09-23 |  |
| 494 | 3.5.12.5.5 | 试运行 |  | 5d | 2019-09-24 | 2019-09-30 | 130d | finish no earlier than 2019-09-30 |  |

| ID | WBS | Task | Type | Duration | Start | Finish | Constraint | 进度 |
| --- | --- | --- | --- | --- | --- | --- | --- | --- |
| 495 | 3.5.12.6 | **销售项目结项流程** |  | 6d | 2019-09-23 | 2019-09-30 |  |  |
| 496 | 3.5.12.6.1 | 办公网YJT_APP端API封装 | manual | 3d | 2019-09-23 | 2019-09-25 |  | 100% |
| 497 | 3.5.12.6.2 | 移动端action开发+页面开发 | manual | 5d | 2019-09-24 | 2019-09-30 |  |  |
| 498 | 3.5.12.6.3 | 单元测试及相关问题修改 | manual | 2d | 2019-09-27 | 2019-09-30 |  |  |
| 499 | 3.5.12.6.4 | 上线 | manual | 1d | 2019-09-30 | 2019-09-30 | start no earlier than 2019-09-30 |  |
| 500 | 3.5.12.7 | **销售项目-经理变更审批流程** |  | 6d | 2019-09-23 | 2019-09-30 |  |  |
| 501 | 3.5.12.7.1 | 办公网YJT_APP端API封装 | manual | 3d | 2019-09-23 | 2019-09-25 |  | 100% |
| 502 | 3.5.12.7.2 | 移动端action开发+页面开发 | manual | 5d | 2019-09-24 | 2019-09-30 |  |  |
| 503 | 3.5.12.7.3 | 单元测试及相关问题修改 | manual | 2d | 2019-09-27 | 2019-09-30 |  |  |
| 504 | 3.5.12.7.4 | 上线 | manual | 1d | 2019-09-30 | 2019-09-30 | start no earlier than 2019-09-30 |  |
| 505 | 3.5.12.8 | **销售项目-里程碑关闭流程** |  | 6d | 2019-09-23 | 2019-09-30 |  |  |
| 506 | 3.5.12.8.1 | 办公网YJT_APP端API封装 | manual | 3d | 2019-09-23 | 2019-09-25 |  | 100% |
| 507 | 3.5.12.8.2 | 移动端action开发+页面开发 | manual | 5d | 2019-09-24 | 2019-09-30 |  |  |
| 508 | 3.5.12.8.3 | 单元测试及相关问题修改 | manual | 2d | 2019-09-27 | 2019-09-30 |  |  |
| 509 | 3.5.12.8.4 | 上线 | manual | 1d | 2019-09-30 | 2019-09-30 | start no earlier than 2019-09-30 |  |
| 510 | 3.5.13 | **保证金管理** |  | 6d | 2019-09-23 | 2019-09-30 |  |  |
| 511 | 3.5.13.1 | **保证金押金变更申请** |  | 6d | 2019-09-23 | 2019-09-30 |  |  |
| 512 | 3.5.13.1.1 | 办公网YJT_APP端API封装 | manual | 3d | 2019-09-23 | 2019-09-25 |  |  |
| 513 | 3.5.13.1.2 | 移动端action开发+页面开发 | manual | 5d | 2019-09-24 | 2019-09-30 |  |  |
| 514 | 3.5.13.1.3 | 单元测试及相关问题修改 | manual | 2d | 2019-09-27 | 2019-09-30 |  |  |
| 515 | 3.5.13.1.4 | 上线 | manual | 1d | 2019-09-30 | 2019-09-30 | start no earlier than 2019-09-30 |  |
| 516 | 3.5.13.2 | **保证金押金申请3.0** |  | 6d | 2019-09-23 | 2019-09-30 |  |  |
| 517 | 3.5.13.2.1 | 办公网YJT_APP端API封装 | manual | 3d | 2019-09-23 | 2019-09-25 |  |  |
| 518 | 3.5.13.2.2 | 移动端action开发+页面开发 | manual | 5d | 2019-09-24 | 2019-09-30 |  |  |
| 519 | 3.5.13.2.3 | 单元测试及相关问题修改 | manual | 2d | 2019-09-27 | 2019-09-30 |  |  |
| 520 | 3.5.13.2.4 | 上线 | manual | 1d | 2019-09-30 | 2019-09-30 | start no earlier than 2019-09-30 |  |

| ID | WBS | Task | Type | Duration | Start | Finish | Constraint | 进度 | 交付物 | 交付时间 |
| --- | --- | --- | --- | --- | --- | --- | --- | --- | --- | --- |
| 521 | 3.5.14 | **物资类采购** |  | 6d | 2019-09-23 | 2019-09-30 |  |  |  |  |
| 522 | 3.5.14.1 | **物资类采购审批** |  | 6d | 2019-09-23 | 2019-09-30 |  |  |  |  |
| 523 | 3.5.14.1.1 | 办公网YJT_APP端API封装 | manual | 3d | 2019-09-23 | 2019-09-25 |  |  |  |  |
| 524 | 3.5.14.1.2 | 移动端action开发+页面开发 | manual | 5d | 2019-09-24 | 2019-09-30 |  |  |  |  |
| 525 | 3.5.14.1.3 | 单元测试及相关问题修改 | manual | 2d | 2019-09-27 | 2019-09-30 |  |  |  |  |
| 526 | 3.5.14.1.4 | 上线 | manual | 1d | 2019-09-30 | 2019-09-30 | start no earlier than 2019-09-30 |  |  |  |
| 527 | 3.5.14.2 | **物资类采购付款申请审批** |  | 6d | 2019-09-23 | 2019-09-30 |  |  |  |  |
| 528 | 3.5.14.2.1 | 办公网YJT_APP端API封装 | manual | 3d | 2019-09-23 | 2019-09-25 |  |  |  |  |
| 529 | 3.5.14.2.2 | 移动端action开发+页面开发 | manual | 5d | 2019-09-24 | 2019-09-30 |  |  |  |  |
| 530 | 3.5.14.2.3 | 单元测试及相关问题修改 | manual | 2d | 2019-09-27 | 2019-09-30 |  |  |  |  |
| 531 | 3.5.14.2.4 | 上线 | manual | 1d | 2019-09-30 | 2019-09-30 | start no earlier than 2019-09-30 |  |  |  |
| 532 | 3.6 | **考勤明细** |  | 19d | 2019-07-29 | 2019-08-22 |  |  |  |  |
| 533 | 3.6.1 | 技术可行性分析 | manual | 3d | 2019-07-29 | 2019-07-31 | finish no earlier than 2019-07-31 | 100% |  |  |
| 534 | 3.6.2 | 用户需求/需求分析 | manual | 1d | 2019-07-29 | 2019-07-29 |  | 100% | 需求分析文档 | 2019年8月5日 |
| 535 | 3.6.3 | 方案设计 | manual | 1d | 2019-08-05 | 2019-08-06 |  | 100% | 详细设计文档/概要设计文档/接口设计文档 | 2019年8月5日 |
| 536 | 3.6.4 | 功能开发 | manual | 6d | 2019-07-29 | 2019-08-04 |  | 100% | 测试用例 | 2019年8月7日 |
| 537 | 3.6.5 | 单元测试 | manual | 2d | 2019-08-05 | 2019-08-06 |  | 100% | 测试报告 | 2019年8月8日 |
| 538 | 3.6.6 | 集成测试 | manual | 2d | 2019-08-05 | 2019-08-06 |  | 100% |  |  |
| 539 | 3.6.7 | 功能部署上线 | manual | 1d | 2019-08-07 | 2019-08-07 |  | 100% |  |  |
| 540 | 3.6.8 | 试运行 | manual | 11d | 2019-08-08 | 2019-08-22 | start no earlier than 2019-08-08 |  |  |  |
| 541 | 3.7 | **假期管理** |  | 14d | 2019-08-12 | 2019-08-29 |  |  |  |  |
| 542 | 3.7.1 | 技术可行性分析 | manual | 3d | 2019-07-29 | 2019-07-31 |  | 100% |  |  |
| 543 | 3.7.2 | 用户需求/需求分析 | manual | 1d | 2019-07-31 | 2019-07-31 |  | 100% | 需求分析文档 | 2019年8月12日 |
| 544 | 3.7.3 | 方案设计 | manual | 1d | 2019-07-31 | 2019-07-31 |  | 100% | 详细设计文档/概要设计文档/接口设计文档 | 2019年8月12日 |
| 545 | 3.7.4 | 功能开发 | manual | 11d | 2019-08-01 | 2019-08-15 |  | 100% | 测试用例 | 2019年8月14日 |
| 546 | 3.7.5 | 单元测试 | manual | 1d | 2019-08-16 | 2019-08-16 |  | 100% | 测试报告 | 2019年8月15日 |
| 547 | 3.7.6 | 集成测试 | manual | 1d | 2019-08-17 | 2019-08-17 |  | 100% |  |  |
| 548 | 3.7.7 | 功能部署上线 | manual | 1d | 2019-08-18 | 2019-08-18 |  | 100% |  |  |
| 549 | 3.7.8 | 试运行 | manual | 10d | 2019-08-15 | 2019-08-29 | start no earlier than 2019-08-15 |  |  |  |
| 550 | 3.8 | 代码优化 | manual | 5d | 2019-08-19 | 2019-08-23 |  |  |  |  |

Notes:
- 533: 考勤明细的详细计划会根据技术可行性分析和需求分析的结果进行调整
- 542: 假期管理的详细计划会根据技术可行性分析和需求分析的结果进行调整

| ID | WBS | Task | Type | Duration | Start | Finish |
| --- | --- | --- | --- | --- | --- | --- |
| 551 | 3.9 | **置换功能** |  | 2d | 2019-08-27 | 2019-08-29 |
| 552 | 3.9.1 | 用户需求/需求分析 | manual | 1d | 2019-08-27 | 2019-08-28 |
| 553 | 3.9.2 | 方案设计 | manual | 1d | 2019-08-27 | 2019-08-28 |
| 554 | 3.9.3 | 功能开发 | manual | 1d | 2019-08-27 | 2019-08-28 |
| 555 | 3.9.4 | 单元测试 | manual | 1d | 2019-08-27 | 2019-08-28 |
| 556 | 3.9.5 | 集成测试 | manual | 1d | 2019-08-27 | 2019-08-28 |
| 557 | 3.9.6 | 功能部署上线 | manual | 1d | 2019-08-27 | 2019-08-28 |
| 558 | 3.10 | **甲方验收（第一轮）** |  | 1d | 2019-08-29 | 2019-08-29 |
| 559 | 3.10.1 | 甲方验收（第一轮） | manual | 1d | 2019-08-29 | 2019-08-30 |
| 560 | 3.11 | **甲方验收（第二轮）** |  | 1d | 2019-08-30 | 2019-08-30 |
| 561 | 3.11.1 | 甲方验收（第二轮） | manual | 1d | 2019-08-30 | 2019-09-02 |
